# پروژه کارتن سازی ذوقی

Schedule from MS Project, 2026-01-06 to 2026-07-28, status date 2026-02-23, 9.5 hours a day, costs in $, A marks actual dates.
Zoghi Packing

## Calendars

- Standard: Mon-Wed 06:30-16:00; Thu-Fri off; Sat-Sun 06:30-16:00.

## Resources

| Resource | Group | Unit | Rate |
| --- | --- | --- | --- |
| کارگر قرمز | HR |  | 800000 |
| مهندس | HR |  | 1300000 |
| سر پرست کارگاه | HR |  | 840000 |
| نقاش | HR |  | 830000 |
| راننده کامیون | HR |  | 1200000 |
| کامیون | HR |  | 400000 |
| بتن | MT | KG | 20000000 |
| کاشی | MT | KG | 1000000 |
| اسکلت | MT | Ton | 20000000 |
| رنگ | MT | KG | 340000 |

## Schedule

| ID | WBS | Task | Type | Duration | Start | Finish | Predecessors | Complete | Remaining | Baseline start | Baseline finish | Baseline duration | Total slack | Constraint | Resources | Work | Actual work | Cost | Baseline cost | Actual cost |
| --- | --- | --- | --- | --- | --- | --- | --- | --- | --- | --- | --- | --- | --- | --- | --- | --- | --- | --- | --- | --- |
| 1 | 1 | **احداث کارخانه** |  | 17d | 2026-01-06 A | 2026-01-28 A |  | 100% |  | 2026-01-04 | 2026-01-24 | 15d |  |  |  | 807.5h | 807.5h | 826,880,000 | 729,600,000 | 826,880,000 |
| 2 | 1.1 | شروع پروژه | milestone | 0d | 2026-01-06 A | 2026-01-06 A |  | 100% |  | 2026-01-04 | 2026-01-04 | 0d |  |  |  |  |  |  |  |  |
| 3 | 1.2 | الزامات و کلاس‌‌های آموزشی مقررات مهندسی |  | 17d | 2026-01-06 A | 2026-01-28 A | 2 | 100% |  | 2026-01-04 | 2026-01-24 | 15d |  |  | مهندس [200%]; سر پرست کارگاه [300%] | 807.5h | 807.5h | 826,880,000 | 729,600,000 | 826,880,000 |
| 4 | 2 | **احداث ساختمان** |  | 71d | 2026-01-31 A | 2026-05-09 |  | 37% | 45.06d | 2026-01-25 | 2026-04-12 | 56d | 0d |  |  | 2945h | 1624.5h | 3,378,885,000 | 3,810,745,000 | 2,190,790,000 |
| 5 | 2.1 | دیوار کشی |  | 19d | 2026-01-31 A | 2026-02-24 A | 3 | 100% |  | 2026-01-25 | 2026-02-14 | 15d |  |  | کاشی [6 KG]; مهندس [300%]; سر پرست کارگاه [200%]; بتن [30 KG]; کارگر قرمز [400%] | 1624.5h | 1624.5h | 2,190,790,000 | 1,857,150,000 | 2,190,790,000 |
| 6 | 2.2 | سقف زنی | milestone | 0d | 2026-02-15 A | 2026-02-15 A | 5 | 100% |  | 2026-02-15 | 2026-02-28 | 10d |  |  | بتن; کاشی; مهندس [400%] |  |  |  | 765,500,000 |  |
| 7 | 2.3 | آستر |  | 9d | 2026-03-28 | 2026-04-07 | 6 |  |  | 2026-03-01 | 2026-03-11 | 9d | 0d | start no earlier than 2026-03-26 | نقاش [300%]; رنگ [21.5 KG] | 256.5h |  | 220,205,000 | 220,205,000 |  |
| 8 | 2.4 | رنگ کاری |  | 10d | 2026-04-13 | 2026-04-26 | 7FS+3d |  |  | 2026-03-17 | 2026-03-30 | 10d | 0d | start no earlier than 2026-03-26 | سر پرست کارگاه [200%]; نقاش [200%]; رنگ [32.5 KG] | 380h |  | 328,350,000 | 328,350,000 |  |
| 9 | 2.5 | تجهیز ساختمان اداری |  | 14d | 2026-04-20 | 2026-05-09 | 8SS+5% |  |  | 2026-03-24 | 2026-04-12 | 14d | 0d | start no earlier than 2026-03-26 | سر پرست کارگاه [200%]; مهندس [200%]; کارگر قرمز [400%] | 684h |  | 639,540,000 | 639,540,000 |  |
| 10 | 3 | **احداث کارگاه** |  | 37d | 2026-05-10 | 2026-06-29 |  |  |  | 2026-04-13 | 2026-06-02 | 37d | 0d |  |  | 2726.5h |  | 2,866,900,000 | 2,866,900,000 |  |
| 11 | 3.1 | اسکلت زنی سوله |  | 17d | 2026-05-10 | 2026-06-01 | 9 |  |  | 2026-04-13 | 2026-05-05 | 17d | 0d |  | کارگر قرمز [500%]; اسکلت [12.5 Ton]; کامیون; راننده کامیون | 1130.5h |  | 1,154,400,000 | 1,154,400,000 |  |
| 12 | 3.2 | دیوار چینی سوله |  | 12d | 2026-06-02 | 2026-06-17 | 11 |  |  | 2026-05-06 | 2026-05-23 | 12d | 0d |  | سر پرست کارگاه [200%]; مهندس [200%]; کارگر قرمز [400%]; بتن [11 KG]; کاشی [10.5 KG] | 912h |  | 1,083,220,000 | 1,083,220,000 |  |
| 13 | 3.3 | تجهیز سوله |  | 8d | 2026-06-20 | 2026-06-29 | 12 |  |  | 2026-05-24 | 2026-06-02 | 8d | 0d |  | سر پرست کارگاه [200%]; کارگر قرمز [500%]; مهندس [200%] | 684h |  | 629,280,000 | 629,280,000 |  |
| 14 | 4 | **انبارش** |  | 21d | 2026-06-30 | 2026-07-28 |  |  |  | 2026-06-03 | 2026-07-01 | 21d | 0d |  |  | 1681.5h |  | 1,920,760,000 | 1,920,760,000 |  |
| 15 | 4.1 | اسکلت انبار |  | 15d | 2026-06-30 | 2026-07-20 | 13 |  |  | 2026-06-03 | 2026-06-23 | 15d | 0d |  | اسکلت [10 Ton]; راننده کامیون; کامیون; مهندس [200%]; کارگر قرمز [500%] | 1282.5h |  | 1,368,500,000 | 1,368,500,000 |  |
| 16 | 4.2 | دیوار چینی انبار |  | 6d | 2026-07-21 | 2026-07-28 | 15 |  |  | 2026-06-24 | 2026-07-01 | 6d | 0d |  | بتن [10 KG]; کارگر قرمز [400%]; سر پرست کارگاه [200%]; مهندس | 399h |  | 552,260,000 | 552,260,000 |  |
| 17 | 4.3 | پایان پروژه | milestone | 0d | 2026-07-28 | 2026-07-28 | 16 |  |  | 2026-07-01 | 2026-07-01 | 0d | 0d |  |  |  |  |  |  |  |
