# Juniper Nursing Home

Schedule from Primavera P6, 2010-11-01 to 2014-01-08, data date 2011-05-01, costs in USD, A marks actual dates.

## Calendars

- Trades - 5 Day Workweek: Mon-Fri 08:00-12:00, 13:00-17:00; Sat-Sun off. Exceptions (off unless hours are given): 2010-11-25, 2010-12-24, 2010-12-31, 2011-05-30, 2011-07-04, 2011-09-05, 2011-11-24, 2011-12-26, 2012-01-02, 2012-05-28, 2012-07-04, 2012-09-03, 2012-11-22, 2012-12-25, 2013-01-01, 2013-05-27, 2013-07-04, 2013-09-02, 2013-11-28, 2013-12-25.

## Resources

| Resource | Group | Rate |
| --- | --- | --- |
| Thermal Protection Subcontractor | labor | 120 |
| Painter | labor | 70 |
| Finishes & Fit-out Subcontractor | labor | 55 |
| Floor and Carpet Layer | labor | 45 |
| Plumber | labor | 55 |
| Electrician | labor | 95 |
| HVAC | labor | 44 |
| FF&E Specialties | labor | 54 |
| Drywall Subcontractor | labor | 45 |
| Conveying Subcontractor | labor | 80 |
| Rough Carpenter | labor | 45 |
| Finish Carpenter | labor | 67 |
| Millwork Subcontractor | labor | 70 |
| Pool Installation Subcontractor | labor | 105 |
| Concrete Foundation Subcontractor | labor | 100 |
| Laborer-Construction | labor | 35 |
| Roofing Subcontractor | labor | 75 |
| Specialty Metal Fabricator Subcontractor | labor | 110 |
| Project Managers | labor | 50 |
| Fire Suppression Subcontractor | labor | 85 |
| Glass & Glazing Subcontractor | labor | 87 |
| Landscaping Subcontractor | labor | 40 |
| Paving & Roadways Subcontractor | labor | 130 |
| Utilities Subcontractor | labor | 105 |

## Schedule

| ID | WBS | Activity | Type | Duration | Start | Finish | Predecessors | Complete | Remaining | Planned start | Planned finish | Total float | Free float | Resources | Cost | Actual cost | Key Milestones | Department | Responsibility | Phase |
| --- | --- | --- | --- | --- | --- | --- | --- | --- | --- | --- | --- | --- | --- | --- | --- | --- | --- | --- | --- | --- |
| EC1010 |  | Building Pad Delivered by Owner | milestone | 0d | 2010-11-01 A | 2010-11-01 A |  | 100% |  |  |  |  |  |  |  |  | Key MS | CON | NOLAN | FOUND |
| EC1080 |  | Curbing | milestone | 0d | 2010-11-02 A | 2010-11-02 A | EC1010 FS+1d | 100% |  |  |  |  |  |  |  |  | Key MS | ENG | FOLEY | DESGN |
| EC2430 |  | Substantial Completion - All TCO | milestone | 0d | 2014-01-08 | 2014-01-08 | EC2440, EC1600, EC1200, EC1130, EC2390, EC1270, EC2180, EC2420 |  |  |  |  | 0d |  |  |  |  | Key MS | CON | MILLS | FINSH |
|  | 1 | **Building 1** |  |  | 2010-11-02 | 2014-01-08 |  |  |  |  |  |  |  |  |  |  |  |  |  |  |
| EC2440 |  | Complete Building 1 | milestone | 0d | 2014-01-08 | 2014-01-08 | EC1630, EC1990, EC2370, EC1670, EC1790, EC2250 FF, EC2360, EC2240, EC1850, EC2270, EC1550, EC1700, EC2290, EC2400, EC1950, EC1780, EC2140, EC1910, EC2080, EC2260 |  |  |  |  | 0d |  |  |  |  | Key MS | CON | MILLS | FINSH |
|  | 1 | **Structure** |  |  | 2010-11-02 | 2011-08-24 |  |  |  |  |  |  |  |  |  |  |  |  |  |  |
| EC1090 |  | Building Pad Including UG Utils |  | 48.12d | 2010-11-02 A | 2011-01-07 A | EC1080, EC1110 FF | 100% |  | 2010-11-02 | 2011-01-12 |  |  | Concrete Foundation Subcontractor [384 h] | 38,400 | 40,000 |  | CON | NOLAN | FOUND |
| EC1140 |  | First Floor Masonry Structure |  | 12d | 2011-01-06 A | 2011-01-26 A | EC1090 | 100% |  | 2011-01-07 | 2011-01-25 |  |  | Laborer-Construction [96 h] | 3,360 | 3,150 |  | CON | FOLEY | FOUND |
| EC1170 |  | Second Floor Slab & Collar Beam |  | 24d | 2011-01-25 A | 2011-02-25 A | EC1140 | 100% |  | 2011-01-25 | 2011-02-28 |  |  | Laborer-Construction [192 h] | 6,720 | 7,035 |  | CON | NOLAN | FOUND |
| EC1190 |  | Second Floor Masonry Structure |  | 12d | 2011-03-02 A | 2011-03-18 A | EC1170 | 100% |  | 2011-03-01 | 2011-03-16 |  |  | Laborer-Construction [96 h] | 3,360 | 2,940 |  | ENG | FOLEY | FOUND |
| EC1210 |  | Third Floor Slab & Collar Beam |  | 24.12d | 2011-03-15 A | 2011-04-21 A | EC1190 | 100% |  | 2011-03-17 | 2011-04-20 |  |  | Laborer-Construction [192 h] | 6,720 | 6,580 |  | ENG | FOLEY | FOUND |
| EC1240 |  | Third Floor Masonry Structure |  | 12.12d | 2011-04-20 A | 2011-05-05 | EC1210 | 70% | 4.12d | 2011-04-20 | 2011-05-06 | 0d |  | Laborer-Construction [96 h] | 3,360 | 2,240 |  | ENG | FOLEY | FOUND |
| EC1250 |  | Fourth Floor Slab & Collar Beam |  | 24.12d | 2011-05-06 | 2011-06-09 | EC1240 |  |  | 2011-05-06 | 2011-06-10 | 0d |  | Laborer-Construction [192 h] | 13,440 |  |  | ENG | FOLEY | FOUND |
| EC1300 |  | Fourth Floor Masonry Structure |  | 12.12d | 2011-06-10 | 2011-06-27 | EC1250 |  |  | 2011-06-10 | 2011-06-28 | 0d |  | Laborer-Construction [96 h] | 6,720 |  |  | CON | FOLEY | FOUND |
| EC1310 |  | Roof Slab |  | 24.12d | 2011-06-28 | 2011-08-01 | EC1300 |  |  | 2011-06-28 | 2011-08-02 | 0d |  | Laborer-Construction [192 h] | 13,440 |  |  | CON | FOLEY | FOUND |
| EC1340 |  | Stair and Elevator Masonry Structure |  | 4.92d | 2011-08-02 | 2011-08-08 | EC1310 |  |  |  |  | 0d |  | Laborer-Construction [38.4 h] | 2,688 |  |  | CON | EVANS | FOUND |
| EC1350 |  | Roof Slab/Collar Beam |  | 12.12d | 2011-08-08 | 2011-08-24 | EC1340 |  |  |  |  | 0d |  | Laborer-Construction [96 h] | 6,720 |  |  | CON | EVANS | FOUND |
|  | 2 | **Roof** |  |  | 2011-08-24 | 2011-12-02 |  |  |  |  |  |  |  |  |  |  |  |  |  |  |
| EC1390 |  | Place Roof Trusses and Sheathing |  | 24.12d | 2011-08-24 | 2011-09-28 | EC1350 |  |  |  |  | 81.2d | 0d | Roofing Subcontractor [192 h]; Specialty Metal Fabricator Subcontractor [192 h] | 71,040 |  |  | CON | EVANS | STRUC |
| EC1400 |  | Place Mechanical Equipment Supports |  | 24.12d | 2011-08-24 | 2011-09-28 | EC1350 |  |  |  |  | 259.4d | 0d | Roofing Subcontractor [192 h] | 28,800 |  |  | CON | EVANS | STRUC |
| EC1530 |  | Built-Up Asphalt Roofing |  | 33.73d | 2011-09-28 | 2011-11-15 | EC1400 |  |  |  |  | 259.4d | 0d | Roofing Subcontractor [268.8 h] | 40,320 |  |  | ENG | EVANS | STRUC |
| EC1540 |  | Felt and Tile Roofing |  | 45.73d | 2011-09-28 | 2011-12-02 | EC1390 |  |  |  |  | 81.2d | 0d | Roofing Subcontractor [364.8 h] | 54,720 |  |  | CON | EVANS | STRUC |
| EC1780 |  | Roof Complete | milestone | 0d | 2011-12-02 | 2011-12-02 | EC1530, EC1010, EC1540 |  |  |  |  | 374.6d | 0d |  |  |  | Key MS | CON | EVANS | STRUC |
|  | 3 | **Envelope** |  |  | 2011-08-08 | 2012-04-27 |  |  |  |  |  |  |  |  |  |  |  |  |  |  |
| EC1360 |  | Mobilize Scaffolding |  | 12.12d | 2011-08-08 | 2011-08-24 | EC1350 SS |  |  |  |  | 31.4d | 15.2d | Thermal Protection Subcontractor [96 h] | 11,520 |  |  | CON | EVANS | CLOSE |
| EC1410 |  | Install Exterior Windows and Sliding Glass Doors Floor 1 |  | 19.32d | 2011-08-24 | 2011-09-21 | EC1350 |  |  | 2011-08-24 | 2011-09-22 | 0d |  | Thermal Protection Subcontractor [153.6 h] | 18,432 |  |  | CON | EVANS | CLOSE |
| EC1470 |  | Install Exterior Windows and Sliding Glass Doors Floor 2 |  | 19.32d | 2011-09-15 | 2011-10-12 | EC1410 FS-5d |  |  |  |  | 0d |  | Thermal Protection Subcontractor [153.6 h] | 18,432 |  |  | ENG | EVANS | CLOSE |
| EC1490 |  | Install Backing & Cauld Windows Floor1 |  | 9.72d | 2011-09-16 | 2011-09-29 | EC1410 FS-4d, EC1360 |  |  |  |  | 16.2d | 4.6d | Thermal Protection Subcontractor [76.8 h] | 9,216 |  |  | CON | EVANS | CLOSE |
| EC1500 |  | Install Exterior Windows and Sliding Glass Doors Floor 3 |  | 16.93d | 2011-10-05 | 2011-10-27 | EC1470 FS-5d |  |  | 2011-10-05 | 2011-10-28 | 0d |  | Thermal Protection Subcontractor [134.4 h] | 16,128 |  |  | ENG | EVANS | CLOSE |
| EC1510 |  | Install Backing & Cauld Windows Floor 2 |  | 9.72d | 2011-10-06 | 2011-10-19 | EC1470 FS-4d, EC1490 |  |  |  |  | 11.6d | 2.2d | Thermal Protection Subcontractor [76.8 h] | 9,216 |  |  | CON | EVANS | CLOSE |
| EC1520 |  | Install Exterior Windows and Sliding Glass Doors Floor 4 |  | 21.73d | 2011-10-21 | 2011-11-21 | EC1500 FS-5d |  |  |  |  | 0d |  | Thermal Protection Subcontractor [172.8 h] | 20,736 |  |  | ENG | EVANS | CLOSE |
| EC1570 |  | Install Backing & Cauld Windows Floor 3 |  | 7.33d | 2011-10-24 | 2011-11-02 | EC1500 FS-4d, EC1510 |  |  |  |  | 9.4d |  | Thermal Protection Subcontractor [57.6 h] | 6,912 |  |  | CON | EVANS | CLOSE |
| EC1580 |  | Stucco Bands |  | 9.6d | 2011-11-15 | 2011-11-29 | EC1650 FS-10d, EC1510 |  |  |  |  | 0d |  | Thermal Protection Subcontractor [76.8 h] | 9,216 |  |  | ENG | EVANS | CLOSE |
| EC1650 |  | Install Backing & Cauld Windows Floor 4 |  | 9.6d | 2011-11-15 | 2011-11-30 | EC1520 FS-4d, EC1570 |  |  |  |  | 0d |  | Thermal Protection Subcontractor [76.8 h] | 9,216 |  |  | CON | EVANS | CLOSE |
| EC1660 |  | Stucco Grey |  | 19.2d | 2011-11-29 | 2011-12-27 | EC1580 |  |  |  |  | 0d |  | Thermal Protection Subcontractor [153.6 h] | 18,432 |  |  | CON | EVANS | CLOSE |
| EC1690 |  | Stucco Finish Coat |  | 24d | 2011-12-28 | 2012-01-31 | EC1660 |  |  |  |  | 0d |  | Thermal Protection Subcontractor [192 h] | 23,040 |  |  | CON | EVANS | CLOSE |
| EC1840 |  | Caulk |  | 9.6d | 2012-02-01 | 2012-02-14 | EC1690 |  |  |  |  | 0d |  | Thermal Protection Subcontractor [76.8 h] | 9,216 |  |  | CON | HARIS | CLOSE |
| EC1900 |  | Stucco Band Trim |  | 12d | 2012-02-14 | 2012-03-01 | EC1840 |  |  |  |  | 0d |  | Thermal Protection Subcontractor [96 h] | 11,520 |  |  | CON | HARIS | CLOSE |
| EC1980 |  | Paint Exterior |  | 12d | 2012-03-08 | 2012-03-26 | EC1900 FS+5d |  |  |  |  | 0d |  | Painter [96 h] | 6,720 |  |  | CON | HARIS | CLOSE |
| EC1990 |  | Install Railings |  | 36d | 2012-03-08 | 2012-04-27 | EC1980 SS |  |  |  |  | 144d | 0d | Thermal Protection Subcontractor [288 h] | 34,560 |  |  | CON | MILLS | CLOSE |
| EC2110 |  | Demobilize Scaffolding |  | 12.12d | 2012-03-26 | 2012-04-11 | EC1980 |  |  |  |  | 0d |  | Thermal Protection Subcontractor [96 h] | 11,520 |  |  | CON | HARIS | CLOSE |
| EC2140 |  | Shell Complete | milestone | 0d | 2012-04-27 | 2012-04-27 | EC2110, EC1990 |  |  |  |  | 144d | 24.02d |  |  |  | Key MS | CON | MILLS | CLOSE |

| ID | WBS | Activity | Type | Duration | Start | Finish | Predecessors | Complete | Remaining | Planned start | Planned finish | Total float | Free float | Resources | Cost | Actual cost | Department | Responsibility | Phase | Key Milestones |
| --- | --- | --- | --- | --- | --- | --- | --- | --- | --- | --- | --- | --- | --- | --- | --- | --- | --- | --- | --- | --- |
|  | 4 | **Interior Finishes** |  |  | 2011-09-28 | 2013-01-03 |  |  |  |  |  |  |  |  |  |  |  |  |  |  |
| EC1550 |  | Unit Finishes Building North - Floor 1 |  | 196.93d | 2011-09-28 | 2012-07-06 | EC1540 SS, EC1530 SS |  |  |  |  | 259.4d | 0d | Finishes & Fit-out Subcontractor [87.27 h]; Rough Carpenter [87.27 h]; Finish Carpenter [87.27 h]; Millwork Subcontractor [87.27 h]; Floor and Carpet Layer [87.27 h]; Plumber [87.27 h]; Electrician [87.27 h]; HVAC [87.27 h]; FF&E Specialties [87.27 h]; Painter [28.8 h]; Drywall Subcontractor [87.27 h] | 52,197.82 |  | ENG | EVANS | FINSH |  |
| EC1630 |  | Unit Finishes Building South - Floor 1 |  | 199.32d | 2011-10-05 | 2012-07-17 | EC1550 SS+5d |  |  | 2011-10-05 | 2012-07-18 | 259.4d | 0d | Finishes & Fit-out Subcontractor [87.27 h]; Rough Carpenter [87.27 h]; Finish Carpenter [87.27 h]; Millwork Subcontractor [87.27 h]; Floor and Carpet Layer [87.27 h]; Plumber [87.27 h]; Electrician [87.27 h]; HVAC [87.27 h]; FF&E Specialties [87.27 h]; Painter [28.8 h]; Drywall Subcontractor [87.27 h] | 52,197.82 |  | CON | EVANS | FINSH |  |
| EC1670 |  | Unit Finishes Building North - Floor 2 |  | 199.32d | 2011-10-12 | 2012-07-24 | EC1630 SS+5d |  |  | 2011-10-12 | 2012-07-25 | 310.6d | 0d | FF&E Specialties [87.27 h]; Painter [28.8 h]; Drywall Subcontractor [87.27 h]; Finishes & Fit-out Subcontractor [87.27 h]; Rough Carpenter [87.27 h]; Finish Carpenter [87.27 h]; Millwork Subcontractor [87.27 h]; Floor and Carpet Layer [87.27 h]; Plumber [87.27 h]; Electrician [87.27 h]; HVAC [87.27 h] | 52,197.82 |  | CON | EVANS | FINSH |  |
| EC1700 |  | Unit Finishes Building South - Floor 2 |  | 199.32d | 2011-10-19 | 2012-07-31 | EC1670 SS+5d |  |  | 2011-10-19 | 2012-08-01 | 310.6d | 0d | Finish Carpenter [87.27 h]; Millwork Subcontractor [87.27 h]; Floor and Carpet Layer [87.27 h]; Plumber [87.27 h]; Electrician [87.27 h]; HVAC [87.27 h]; FF&E Specialties [87.27 h]; Painter [28.8 h]; Drywall Subcontractor [87.27 h]; Finishes & Fit-out Subcontractor [87.27 h]; Rough Carpenter [87.27 h] | 52,197.82 |  | CON | EVANS | FINSH |  |
| EC1790 |  | Unit Finishes Building North - Floor 3 |  | 199.32d | 2011-10-26 | 2012-08-07 | EC1820 FF+40d, EC1700 SS+5d |  |  | 2011-10-26 | 2012-08-08 | 310.6d | 0d | Finishes & Fit-out Subcontractor [87.27 h]; Rough Carpenter [87.27 h]; Finish Carpenter [87.27 h]; Millwork Subcontractor [87.27 h]; Floor and Carpet Layer [87.27 h]; Plumber [87.27 h]; Electrician [87.27 h]; HVAC [87.27 h]; FF&E Specialties [87.27 h]; Painter [28.8 h]; Drywall Subcontractor [87.27 h] | 52,197.82 |  | CON | EVANS | FINSH |  |
| EC1850 |  | Unit Finishes Building South - Floor 3 |  | 199.32d | 2011-11-02 | 2012-08-14 | EC1790 SS+5d |  |  | 2011-11-02 | 2012-08-15 | 310.6d | 0d | Finishes & Fit-out Subcontractor [87.27 h]; Rough Carpenter [87.27 h]; Finish Carpenter [87.27 h]; Millwork Subcontractor [87.27 h]; Floor and Carpet Layer [87.27 h]; Plumber [87.27 h]; Electrician [87.27 h]; HVAC [87.27 h]; FF&E Specialties [87.27 h]; Painter [28.8 h]; Drywall Subcontractor [87.27 h] | 104,395.63 |  | CON | HARIS | FINSH |  |
| EC1910 |  | Unit Finishes Building North - Floor 4 |  | 201.6d | 2011-11-09 | 2012-08-24 | EC1850 SS+5d |  |  |  |  | 310.6d | 0d | Finishes & Fit-out Subcontractor [87.27 h]; Rough Carpenter [87.27 h]; Finish Carpenter [87.27 h]; Millwork Subcontractor [87.27 h]; Floor and Carpet Layer [87.27 h]; Plumber [87.27 h]; Electrician [87.27 h]; HVAC [87.27 h]; FF&E Specialties [87.27 h]; Painter [28.8 h]; Drywall Subcontractor [87.27 h] | 52,197.82 |  | CON | HARIS | FINSH |  |
| EC1950 |  | Unit Finishes Building South - Floor 4 |  | 201.6d | 2011-11-16 | 2012-08-31 | EC1910 SS+5d |  |  |  |  | 310.6d | 51.2d | Floor and Carpet Layer [87.27 h]; Plumber [87.27 h]; Electrician [87.27 h]; HVAC [87.27 h]; FF&E Specialties [87.27 h]; Painter [28.8 h]; Drywall Subcontractor [87.27 h]; Finishes & Fit-out Subcontractor [87.27 h]; Rough Carpenter [87.27 h]; Finish Carpenter [87.27 h]; Millwork Subcontractor [87.27 h] | 52,197.82 |  | CON | HARIS | FINSH |  |
| EC1820 |  | Building 2 Elevators Complete |  | 69.6d | 2011-12-02 | 2012-03-12 | EC1440 FF+15d, EC1550 SS, EC1780 |  |  |  |  | 374.6d | 64d | Conveying Subcontractor [384 h]; Electrician [384 h] | 67,200 |  | CON | HARIS | FINSH |  |
| EC2240 |  | Tenant Finishes for Clubhouse Areas |  | 127.33d | 2012-07-03 | 2013-01-03 | EC1630 FS-10d |  |  |  |  | 259.4d | 0d | Finishes & Fit-out Subcontractor [240 h]; Floor and Carpet Layer [240 h]; Plumber [240 h]; Electrician [240 h]; HVAC [240 h]; FF&E Specialties [240 h]; Painter [80 h]; Drywall Subcontractor [240 h] | 99,920 |  | CON | MILLS | FINSH |  |
| EC2370 |  | Final Inspections and Punchlist |  | 33.6d | 2012-11-13 | 2013-01-03 | EC2240 FF, EC1700, EC1630, EC1910, EC1670, EC1790, EC1550, EC1850, EC1950 |  |  |  |  | 259.4d |  | Finishes & Fit-out Subcontractor [72 h]; Floor and Carpet Layer [72 h]; Plumber [72 h]; Electrician [72 h]; HVAC [72 h]; FF&E Specialties [72 h]; Painter [24 h]; Drywall Subcontractor [72 h] | 29,976 |  | CON | MILLS | FINSH |  |
|  | 5 | **Pool & Courtyard** |  |  | 2012-03-28 | 2012-11-29 |  |  |  |  |  |  |  |  |  |  |  |  |  |  |
| EC2080 |  | Pool & Deck |  | 141.72d | 2012-03-28 | 2012-10-17 | EC2110 FS-10d, EC1540 |  |  |  |  | 0d |  | Pool Installation Subcontractor [672 h] | 141,120 |  | CON | HARIS | FINSH |  |
| EC2270 |  | Pergola and Amenities |  | 50.52d | 2012-09-19 | 2012-11-29 | EC2080 FS-20d |  |  |  |  | 0d |  | Pool Installation Subcontractor [403.2 h] | 84,672 |  | ENG | MILLS | FINSH |  |
|  | 2 | **Building 2** |  |  | 2010-11-30 | 2013-03-11 |  |  |  |  |  |  |  |  |  |  |  |  |  |  |
| EC2420 |  | Complete Building 2 | milestone | 0d | 2013-03-11 | 2013-03-11 | EC2170, EC2210, EC2410, EC2120, EC2340, EC2150, EC2070, EC2030, EC2200, EC2330 |  |  |  |  | 212.57d |  |  |  |  | CON | MILLS | DESGN | Key MS |
|  | 1 | **Structure** |  |  | 2010-11-30 | 2011-10-03 |  |  |  |  |  |  |  |  |  |  |  |  |  |  |
| EC1150 |  | Building Slab Incl. UG Utils |  | 48d | 2010-11-30 A | 2011-02-09 A | EC1080, EC1090 SS+20d | 100% |  | 2010-11-30 | 2011-02-07 |  |  | Concrete Foundation Subcontractor [384 h]; Project Managers [384 h] | 57,600 | 55,500 | CON | FOLEY | FOUND |  |
| EC1220 |  | First Floor Masonry Structure |  | 12d | 2011-02-07 A | 2011-02-25 A | EC1150 | 100% |  | 2011-03-01 | 2011-03-16 |  |  | Laborer-Construction [96 h] | 3,360 | 3,150 | ENG | FOLEY | FOUND |  |
| EC1230 |  | Second Floor Slab & Collar Beam |  | 24.12d | 2011-03-24 A | 2011-04-29 A | EC1220 | 100% |  | 2011-03-24 | 2011-04-27 |  |  | Laborer-Construction [192 h] | 6,720 | 7,175 | ENG | NOLAN | FOUND |  |
| EC1260 |  | Second Floor Masonry Structure |  | 12.12d | 2011-03-28 A | 2011-04-11 A | EC1230 | 100% |  | 2011-03-28 | 2011-04-13 |  |  | Laborer-Construction [96 h] | 3,360 | 3,675 | ENG | NOLAN | FOUND |  |
| EC1290 |  | Third Floor Slab & Collar Beam |  | 24.12d | 2011-04-08 A | 2011-05-12 | EC1260 | 60% | 8.75d |  |  | 119.97d | 0d | Laborer-Construction [192 h] | 6,720 | 4,305 | ENG | NOLAN | FOUND |  |
| EC1320 |  | Third Floor Masonry Structure |  | 12.12d | 2011-05-12 | 2011-05-31 | EC1290 |  |  |  |  | 119.97d | 0d | Laborer-Construction [96 h] | 6,720 |  | CON | FOLEY | FOUND |  |
| EC1330 |  | Fourth Floor Slab & Collar Beam |  | 24.12d | 2011-05-31 | 2011-07-05 | EC1320 |  |  |  |  | 119.97d | 0d | Laborer-Construction [192 h] | 13,440 |  | CON | FOLEY | FOUND |  |
| EC1380 |  | Fourth Floor Masonry Structure |  | 12.12d | 2011-07-05 | 2011-07-21 | EC1330 |  |  |  |  | 119.97d | 0d | Laborer-Construction [96 h] | 6,720 |  | CON | EVANS | FOUND |  |
| EC1480 |  | Roof Slab |  | 21.73d | 2011-07-21 | 2011-08-22 | EC1380 |  |  |  |  | 119.97d | 0d | Laborer-Construction [172.8 h] | 12,096 |  | ENG | EVANS | FOUND |  |
| EC1620 |  | Stair and Elevator Masonry Structure |  | 4.92d | 2011-08-22 | 2011-08-29 | EC1480 |  |  |  |  | 119.97d | 0d | Laborer-Construction [38.4 h] | 2,688 |  | CON | EVANS | FOUND |  |
| EC1640 |  | Roof Slab/Collar Beam |  | 24.12d | 2011-08-29 | 2011-10-03 | EC1620 |  |  |  |  | 119.97d | 0d | Laborer-Construction [192 h] | 13,440 |  | CON | EVANS | FOUND |  |

Notes:
- EC1670: Steps: Install Plumbing Risers; Sprinkler Rough In; Layout and Top Rack; Electrical Rough In; Interior Rough and Finishes; HVAC Duct Rough In; HVAC Rough Inspection; Frame Walls & Soffits & Prehang; Install Plumbing In Walls; Electrical Wiring; Plumbing Rough Inspection; Electrical Rough Inspection; Framing Inspection; Install Insulation & Drywall One Side; Install Drywall 2nd Side; Finish Drywall (Bead, Tape, Knockdown Texture); Cut Plugs & Switches; Install Interior Door Frames; Interior Trim & Millwork; Paint; Install Cabinet Carcasss; Tile Kitchen, Foyer & Baths; Install Kit Plumbing Fixtures; Install Bath Mirrors & Enclosures; Install Bath Harware & Accessories; Finish Kitchen & Bath Plumbing; Paint 2nd Coat; Finish Plumbing Inspection; Install HVAC Unit & Startup; Carpet Units; Install Interior Doors; Install Security Finishes; Touch Up Drywall; Install Appliances; Touch Up Paint; Punchlist

| ID | WBS | Activity | Type | Duration | Start | Finish | Predecessors | Total float | Free float | Resources | Cost | Department | Responsibility | Phase | Key Milestones |
| --- | --- | --- | --- | --- | --- | --- | --- | --- | --- | --- | --- | --- | --- | --- | --- |
|  | 2 | **Roof** |  |  | 2011-10-03 | 2012-01-11 |  |  |  |  |  |  |  |  |  |
| EC1710 |  | Place Roof Trusses and Sheathing |  | 24.12d | 2011-10-03 | 2011-11-04 | EC1640 | 119.97d | 0d | Roofing Subcontractor [192 h]; Specialty Metal Fabricator Subcontractor [192 h] | 71,040 | CON | EVANS | ROUGH |  |
| EC1720 |  | Place Mechanical Equipment Supports |  | 24.12d | 2011-10-03 | 2011-11-04 | EC1640 | 131.97d | 0d | Roofing Subcontractor [192 h] | 28,800 | CON | EVANS | ROUGH |  |
| EC1860 |  | Built-Up Asphalt Roofing |  | 33.73d | 2011-11-04 | 2011-12-22 | EC1720 | 131.97d | 7d | Roofing Subcontractor [268.8 h] | 40,320 | CON | HARIS | ROUGH |  |
| EC1870 |  | Felt and Tile Roofing |  | 45.73d | 2011-11-04 | 2012-01-11 | EC1710 | 119.97d | 0d | Roofing Subcontractor [364.8 h] | 54,720 | CON | HARIS | ROUGH |  |
| EC2020 |  | Roof Complete | milestone | 0d | 2012-01-11 | 2012-01-11 | EC1860, EC1150 SF, EC1870 | 119.97d | 0d |  |  | CON | HARIS | ROUGH | Key MS |
|  | 3 | **Envelope** |  |  | 2011-10-03 | 2012-09-04 |  |  |  |  |  |  |  |  |  |
| EC1730 |  | Install Exterior Windows and Sliding Glass Doors Floor 1 |  | 24.12d | 2011-10-03 | 2011-11-04 | EC1640 | 252.18d | 0d | Thermal Protection Subcontractor [192 h]; Glass & Glazing Subcontractor [192 h] | 79,488 | CON | EVANS | CLOSE |  |
| EC1740 |  | Mobilize Scaffolding |  | 12.12d | 2011-10-03 | 2011-10-19 | EC1640 | 278.77d | 8d | Thermal Protection Subcontractor [96 h] | 23,040 | CON | MILLS | CLOSE |  |
| EC1800 |  | Install Exterior Windows and Sliding Glass Doors Floor 2 |  | 21.73d | 2011-10-28 | 2011-11-29 | EC1730 FS-5d | 252.18d | 0d | Thermal Protection Subcontractor [172.8 h]; Glass & Glazing Subcontractor [172.8 h] | 71,539.2 | CON | EVANS | CLOSE |  |
| EC1830 |  | Install Backing & Cauld Windows Floor1 |  | 12.12d | 2011-10-31 | 2011-11-16 | EC1730 FS-4d, EC1740 | 270.77d | 4.6d | Thermal Protection Subcontractor [96 h] | 23,040 | CON | MILLS | CLOSE |  |
| EC1880 |  | Install Exterior Windows and Sliding Glass Doors Floor 3 |  | 21.6d | 2011-11-21 | 2011-12-22 | EC1800 FS-5d | 252.18d | 0d | Thermal Protection Subcontractor [172.8 h]; Glass & Glazing Subcontractor [172.8 h] | 35,769.6 | CON | HARIS | CLOSE |  |
| EC1890 |  | Install Backing & Cauld Windows Floor 2 |  | 9.6d | 2011-11-22 | 2011-12-07 | EC1830, EC1800 FS-4d | 266.18d | 7d | Thermal Protection Subcontractor [76.8 h] | 9,216 | CON | HARIS | CLOSE |  |
| EC1920 |  | Install Exterior Windows and Sliding Glass Doors Floor 4 |  | 24d | 2011-12-15 | 2012-01-20 | EC1880 FS-5d | 252.18d | 0d | Thermal Protection Subcontractor [192 h]; Glass & Glazing Subcontractor [192 h] | 39,744 | CON | HARIS | CLOSE |  |
| EC1930 |  | Install Backing & Cauld Windows Floor 3 |  | 12d | 2011-12-16 | 2012-01-05 | EC1880 FS-4d, EC1890 | 259.18d | 7d | Thermal Protection Subcontractor [96 h] | 11,520 | CON | HARIS | CLOSE |  |
| EC1960 |  | Install Backing & Cauld Windows Floor 4 |  | 12d | 2012-01-16 | 2012-02-01 | EC1930, EC1920 FS-4d | 252.18d | 0d | Thermal Protection Subcontractor [96 h] | 11,520 | CON | HARIS | CLOSE |  |
| EC1940 |  | Stucco Bands |  | 12d | 2012-01-18 | 2012-02-03 | EC1890, EC1960 FS-10d | 252.18d | 0d | Thermal Protection Subcontractor [96 h] | 11,520 | CON | HARIS | CLOSE |  |
| EC1970 |  | Stucco Grey |  | 24d | 2012-02-03 | 2012-03-08 | EC1940 | 252.18d | 0d | Thermal Protection Subcontractor [192 h] | 23,040 | CON | HARIS | CLOSE |  |
| EC2050 |  | Stucco Finish Coat |  | 24d | 2012-03-08 | 2012-04-11 | EC1970 | 252.18d | 0d | Thermal Protection Subcontractor [192 h] | 23,040 | CON | HARIS | CLOSE |  |
| EC2130 |  | Caulk |  | 12.12d | 2012-04-11 | 2012-04-27 | EC2050 | 252.18d | 0d | Thermal Protection Subcontractor [96 h] | 23,040 | CON | HARIS | CLOSE |  |
| EC2160 |  | Stucco Band Trim |  | 24.12d | 2012-04-27 | 2012-06-01 | EC2130 | 252.18d | 0d | Thermal Protection Subcontractor [192 h] | 46,080 | CON | HARIS | CLOSE |  |
| EC2220 |  | Paint Exterior |  | 48.12d | 2012-06-08 | 2012-08-16 | EC2160 FS+5d | 252.18d | 0d | Thermal Protection Subcontractor [384 h] | 92,160 | CON | MILLS | CLOSE |  |
| EC2230 |  | Install Railings |  | 36.12d | 2012-06-08 | 2012-07-31 | EC2220 SS | 288.18d | 24d | Thermal Protection Subcontractor [288 h] | 69,120 | CON | MILLS | CLOSE |  |
| EC2300 |  | Demobilize Scaffolding |  | 12.12d | 2012-08-16 | 2012-09-04 | EC2220 | 252.18d | 0d | Thermal Protection Subcontractor [96 h] | 23,040 | CON | MILLS | CLOSE |  |
| EC2320 |  | Shell Complete | milestone | 0d | 2012-09-04 | 2012-09-04 | EC2300, EC2230 | 264.18d | 0d |  |  | CON | MILLS | CLOSE | Key MS |

| ID | WBS | Activity | Type | Duration | Start | Finish | Predecessors | Complete | Remaining | Planned start | Planned finish | Total float | Free float | Constraint | Resources | Cost | Actual cost | Department | Responsibility | Phase | Key Milestones |
| --- | --- | --- | --- | --- | --- | --- | --- | --- | --- | --- | --- | --- | --- | --- | --- | --- | --- | --- | --- | --- | --- |
|  | 4 | **Interior Finishes** |  |  | 2012-01-04 | 2013-03-11 |  |  |  |  |  |  |  |  |  |  |  |  |  |  |  |
| EC2000 |  | Unit Finishes Building North - Floor 1 |  | 201.6d | 2012-01-04 | 2012-10-17 | EC1860, EC1870 FS-5d |  |  |  |  | 212.57d | 0d |  | Finishes & Fit-out Subcontractor [96 h]; Rough Carpenter [96 h]; Finish Carpenter [96 h]; Millwork Subcontractor [96 h]; Drywall Subcontractor [96 h]; Floor and Carpet Layer [96 h]; Painter [32 h]; Plumber [96 h]; HVAC [96 h]; Electrician [96 h] | 52,256 |  | CON | HARIS | FINSH |  |
| EC2030 |  | Unit Finishes Building South - Floor 1 |  | 201.6d | 2012-01-11 | 2012-10-24 | EC2000 SS+5d |  |  |  |  | 212.57d | 0d |  | Finishes & Fit-out Subcontractor [96 h]; Rough Carpenter [96 h]; Finish Carpenter [96 h]; Millwork Subcontractor [96 h]; Drywall Subcontractor [96 h]; Floor and Carpet Layer [96 h]; Painter [32 h]; Plumber [96 h]; HVAC [96 h]; Electrician [96 h] | 52,256 |  | CON | HARIS | FINSH |  |
| EC2040 |  | Building 1 Elevators Complete |  | 69.6d | 2012-01-11 | 2012-04-18 | EC2000 SS, EC1750 FF+15d, EC2020 |  |  |  |  | 314.77d | 102.2d |  | Conveying Subcontractor [384 h]; Electrician [384 h] | 67,200 |  | CON | HARIS | FINSH |  |
| EC2070 |  | Unit Finishes Building North - Floor 2 |  | 196.8d | 2012-01-18 | 2012-10-24 | EC2030 SS+5d |  |  |  |  | 212.57d | 0d |  | HVAC [96 h]; Electrician [96 h]; Finishes & Fit-out Subcontractor [96 h]; Rough Carpenter [96 h]; Finish Carpenter [96 h]; Millwork Subcontractor [96 h]; Drywall Subcontractor [96 h]; Floor and Carpet Layer [96 h]; Painter [32 h]; Plumber [96 h] | 52,256 |  | CON | HARIS | FINSH |  |
| EC2120 |  | Unit Finishes Building South - Floor 2 |  | 196.8d | 2012-01-25 | 2012-10-31 | EC2070 SS+5d |  |  |  |  | 212.57d | 0d |  | Finishes & Fit-out Subcontractor [96 h]; Rough Carpenter [96 h]; Finish Carpenter [96 h]; Millwork Subcontractor [96 h]; Drywall Subcontractor [96 h]; Floor and Carpet Layer [96 h]; Painter [32 h]; Plumber [96 h]; HVAC [96 h]; Electrician [96 h] | 52,256 |  | CON | HARIS | FINSH |  |
| EC2150 |  | Unit Finishes Building North - Floor 3 |  | 196.8d | 2012-02-01 | 2012-11-07 | EC2120 SS+5d, EC2040 FF+40d |  |  |  |  | 212.57d | 0d |  | Finishes & Fit-out Subcontractor [96 h]; Rough Carpenter [96 h]; Finish Carpenter [96 h]; Millwork Subcontractor [96 h]; Drywall Subcontractor [96 h]; Floor and Carpet Layer [96 h]; Painter [32 h]; Plumber [96 h]; HVAC [96 h]; Electrician [96 h] | 52,256 |  | CON | HARIS | FINSH |  |
| EC2170 |  | Unit Finishes Building South - Floor 3 |  | 196.8d | 2012-02-08 | 2012-11-14 | EC2150 SS+5d |  |  |  |  | 212.57d | 0d |  | Finishes & Fit-out Subcontractor [96 h]; Rough Carpenter [96 h]; Finish Carpenter [96 h]; Millwork Subcontractor [96 h]; Drywall Subcontractor [96 h]; Floor and Carpet Layer [96 h]; Painter [32 h]; Plumber [96 h]; HVAC [96 h]; Electrician [96 h] | 52,256 |  | CON | HARIS | FINSH |  |
| EC2200 |  | Unit Finishes Building North - Floor 4 |  | 194.4d | 2012-02-15 | 2012-11-19 | EC2170 SS+5d |  |  |  |  | 212.57d | 0d |  | Finishes & Fit-out Subcontractor [96 h]; Rough Carpenter [96 h]; Finish Carpenter [96 h]; Millwork Subcontractor [96 h]; Drywall Subcontractor [96 h]; Floor and Carpet Layer [96 h]; Painter [32 h]; Plumber [96 h]; HVAC [96 h]; Electrician [96 h] | 52,256 |  | CON | MILLS | FINSH |  |
| EC2210 |  | Unit Finishes Building South - Floor 4 |  | 194.4d | 2012-02-22 | 2012-11-27 | EC2200 SS+5d |  |  |  |  | 212.57d | 0d |  | Finishes & Fit-out Subcontractor [96 h]; Rough Carpenter [96 h]; Finish Carpenter [96 h]; Millwork Subcontractor [96 h]; Drywall Subcontractor [96 h]; Floor and Carpet Layer [96 h]; Painter [32 h]; Plumber [96 h]; HVAC [96 h]; Electrician [96 h] | 52,256 |  | CON | MILLS | FINSH |  |
| EC2410 |  | Final Inspections and Punchlist |  | 72d | 2012-11-27 | 2013-03-11 | EC2150, EC2170, EC2000, EC2200, EC2210, EC2070, EC2120, EC2030 |  |  |  |  | 212.57d | 0d |  | Finishes & Fit-out Subcontractor [72 h]; Drywall Subcontractor [72 h]; Floor and Carpet Layer [72 h]; Painter [24 h]; Plumber [72 h]; HVAC [72 h]; Electrician [72 h] | 26,088 |  | CON | MILLS | FINSH |  |
|  | 5 | **Courtyard** |  |  | 2012-09-04 | 2013-01-14 |  |  |  |  |  |  |  |  |  |  |  |  |  |  |  |
| EC2330 |  | Courtyard Walks and Amenities |  | 91.33d | 2012-09-04 | 2013-01-14 | EC2300 |  |  |  |  | 252.18d | 39.6d |  | Landscaping Subcontractor [720 h] | 57,600 |  | CON | MILLS | DESGN |  |
|  | 5 | **Garage 1** |  |  | 2011-06-23 | 2012-12-18 |  |  |  |  |  |  |  |  |  |  |  |  |  |  |  |
| EC1420 |  | Start Garage | milestone | 0d | 2011-06-23 | 2011-06-23 |  |  |  |  |  | 119.97d | 0d | as late as possible |  |  |  | CON | EVANS | STRUC | Key MS |
| EC1430 |  | Shop Drawings, Review & Approval |  | 72.12d | 2011-06-23 | 2011-10-05 | EC1420 |  |  |  |  | 119.97d | 0d | as late as possible | Concrete Foundation Subcontractor [301.99 h]; Project Managers [312.41 h] | 91,639.32 |  | ENG | EVANS | DESGN |  |
| EC1810 |  | Fab & Delivery |  | 72.12d | 2011-10-05 | 2012-01-18 | EC1430 |  |  |  |  | 119.97d | 0d | as late as possible | Concrete Foundation Subcontractor [226.49 h]; Project Managers [234.31 h] | 68,729.49 |  | ENG | HARIS | PROCR |  |
| EC2090 |  | Erect Precast Structure |  | 96d | 2012-01-18 | 2012-06-01 | EC1810, EC2020 FS+5d |  |  |  |  | 119.97d | 0d |  | Concrete Foundation Subcontractor [352.38 h]; Project Managers [223.62 h] | 46,418.82 |  | CON | HARIS | STRUC |  |
| EC2280 |  | Fire Protection and Lighting |  | 72.12d | 2012-06-01 | 2012-09-13 | EC2090 |  |  |  |  | 269.57d | 0d |  | Concrete Foundation Subcontractor [120 h]; Fire Suppression Subcontractor [120 h]; Electrician [120 h]; Project Managers [120 h] | 79,200 |  | ENG | MILLS | DESGN |  |
| EC2310 |  | Finishes, Barrier Cables & Striping |  | 72.12d | 2012-08-15 | 2012-11-27 | EC2280 FS-20d |  |  |  |  | 269.57d | 0d |  | Concrete Foundation Subcontractor [384 h]; Project Managers [384 h] | 115,200 |  | CON | MILLS | DESGN |  |
| EC2380 |  | Punchlist Garage |  | 14.4d | 2012-11-27 | 2012-12-18 | EC2310 |  |  |  |  | 269.57d | 0d |  | Concrete Foundation Subcontractor [76.8 h]; Project Managers [115.2 h] | 13,440 |  | CON | MILLS | FINSH |  |
| EC2390 |  | Complete Garage 1 | milestone | 0d | 2012-12-18 | 2012-12-18 | EC2400 |  |  |  |  | 269.57d |  |  |  |  |  | CON | MILLS | FINSH | Key MS |
| EC2400 |  | Complete Garage | milestone | 0d | 2012-12-18 | 2012-12-18 | EC2310, EC2380 |  |  |  |  | 269.57d | 0d |  |  |  |  | CON | MILLS | FINSH | Key MS |
|  | 6 | **Garage 2** |  |  | 2010-11-01 | 2012-07-05 |  |  |  |  |  |  |  |  |  |  |  |  |  |  |  |
| EC1020 |  | Design Building Addition | milestone | 0d | 2010-11-01 A | 2010-11-01 A |  | 100% |  |  |  |  |  | as late as possible |  |  |  | CON | MILLS | ROUGH | Key MS |
| EC1030 |  | Shop Drawings, Review and Approval |  | 72.12d | 2010-11-01 A | 2011-02-10 A | EC1020 | 100% |  | 2010-11-01 | 2011-02-14 |  |  | as late as possible | Concrete Foundation Subcontractor [301.99 h]; Project Managers [312.41 h] | 45,819.66 | 49,220.34 | ENG | FOLEY | DESGN |  |
| EC1180 |  | Fab & Delivery |  | 72d | 2011-02-22 A | 2011-05-31 | EC1030 | 76% | 20.44d | 2011-02-22 | 2011-06-02 | 385.29d | 0d | as late as possible | Concrete Foundation Subcontractor [230.4 h]; Project Managers [230.4 h] | 34,560 | 23,520 | ENG | FOLEY | PROCR |  |
| EC1280 |  | Erect Precast Structure |  | 96.12d | 2011-05-31 | 2011-10-14 | EC1180 |  |  |  |  | 385.29d | 0d |  | Concrete Foundation Subcontractor [276.78 h]; Project Managers [299.22 h] | 85,277.92 |  | ENG | FOLEY | STRUC |  |
| EC1590 |  | Fire Protection and Lighting |  | 72.12d | 2011-10-14 | 2012-01-27 | EC1280 |  |  |  |  | 385.29d | 0d |  | Concrete Foundation Subcontractor [118.97 h]; Fire Suppression Subcontractor [118.97 h]; Electrician [118.97 h]; Project Managers [123.08 h] | 78,933.33 |  | ENG | EVANS | DESGN |  |
| EC1680 |  | Finishes and Striping |  | 84d | 2011-12-29 | 2012-04-26 | EC1590 FS-20d |  |  |  |  | 385.29d | 0d |  | Concrete Foundation Subcontractor [384 h]; Project Managers [384 h] | 57,600 |  | CON | EVANS | FINSH |  |
| EC2060 |  | Punch List Garage |  | 48.12d | 2012-04-26 | 2012-07-05 | EC1680 |  |  |  |  | 385.29d | 0d |  | Concrete Foundation Subcontractor [96 h]; Project Managers [96 h] | 28,800 |  | CON | HARIS | FINSH |  |
| EC2180 |  | Complete Garage 2 | milestone | 0d | 2012-07-05 | 2012-07-05 | EC2190 |  |  |  |  | 385.29d |  |  |  |  |  | CON | HARIS | FINSH | Key MS |
| EC2190 |  | Complete Garage | milestone | 0d | 2012-07-05 | 2012-07-05 | EC1680, EC2060 |  |  |  |  | 385.29d | 0d |  |  |  |  | CON | HARIS | FINSH | Key MS |

Notes:
- EC2090: Anticipated Problems: jdfpje dkdl;sm / Steps: Masonry; Colar Beam; Roof Trusses; Widows & Doors; Wall Finishes; Roof Membrane & Tiles; Plumbing; Electrical; HVAC; Lockup; FF&E; Tile Flooring

| ID | WBS | Activity | Duration | Start | Finish | Predecessors | Complete | Remaining | Planned start | Planned finish | Total float | Free float | Resources | Cost | Actual cost | Department | Responsibility | Phase |
| --- | --- | --- | --- | --- | --- | --- | --- | --- | --- | --- | --- | --- | --- | --- | --- | --- | --- | --- |
|  | 7 | **Roads, Utilities & Pavers** |  | 2010-11-01 | 2012-12-26 |  |  |  |  |  |  |  |  |  |  |  |  |  |
| EC1000 |  | Curbing | 72.12d | 2010-11-01 A | 2011-02-15 A |  | 100% |  | 2010-11-01 | 2011-02-14 |  |  | Paving & Roadways Subcontractor [576 h] | 74,880 | 78,650 | CON | FOLEY | FOUND |
| EC1040 |  | Electric to Building 4 Power Vault | 72.12d | 2010-11-01 A | 2011-02-11 A |  | 100% |  | 2010-11-01 | 2011-02-14 |  |  | Electrician [576 h] | 54,720 | 64,600 | ENG | EVANS | DESGN |
| EC1050 |  | Electric to Building 3 Power Vault | 24.12d | 2010-11-01 A | 2010-12-06 A |  | 100% |  |  |  |  |  | Electrician [192 h] | 18,240 | 18,240 | ENG | FOLEY | DESGN |
| EC1100 |  | Storm Drainage Site Work | 72.12d | 2010-11-02 A | 2011-02-15 A | EC1080 | 100% |  |  |  |  |  | Utilities Subcontractor [576 h] | 60,480 | 67,725 | CON | EVANS | ROUGH |
| EC1110 |  | Site Electrical Work & Temp Power | 12.12d | 2010-11-02 A | 2010-11-17 A | EC1100 SS | 100% |  | 2010-11-02 | 2010-11-18 |  |  | Electrician [96 h] | 9,120 | 9,500 | ENG | NOLAN | ROUGH |
| EC1130 |  | Walkways | 67.2d | 2010-11-15 A | 2011-02-16 A | EC1000 SS+10d | 100% |  | 2010-11-15 | 2011-02-21 |  |  | Landscaping Subcontractor [537.6 h] | 21,504 | 23,040 | ENG | NOLAN | ROUGH |
| EC1200 |  | Roadway Pavers | 67.2d | 2011-02-23 A | 2011-06-02 | EC1130 | 65% | 22.4d | 2011-02-21 | 2011-05-25 | 615.33d | 0d | Landscaping Subcontractor [422.4 h] | 16,896 | 12,000 | ENG | NOLAN | DESGN |
| EC1270 |  | Finish Paving, Striping and Signs | 48.12d | 2011-06-02 | 2011-08-10 | EC1000, EC1130, EC1200 |  |  |  |  | 615.33d |  | Paving & Roadways Subcontractor [384 h] | 99,840 |  | ENG | FOLEY | FINSH |
| EC1440 |  | Electric to Building 2 Power Vault | 91.33d | 2011-08-24 | 2012-01-04 | EC1100, EC1350 |  |  | 2011-08-24 | 2012-01-05 | 407.6d | 33d | Electrician [729.6 h] | 138,624 |  | ENG | EVANS | DESGN |
| EC1750 |  | Electric to Building 1 Power Vault | 69.72d | 2011-10-03 | 2012-01-11 | EC1640 |  |  |  |  | 369.38d | 54.6d | Electrician [556.8 h] | 105,792 |  | CON | EVANS | ROUGH |
| EC1610 |  | Curbs & Paving | 57.73d | 2011-10-14 | 2012-01-06 | EC1280 |  |  | 2011-10-14 | 2012-01-09 | 511.69d |  | Paving & Roadways Subcontractor [460.8 h] | 119,808 |  | ENG | EVANS | DESGN |
| EC2250 |  | Fountain/Water Feature | 115.33d | 2012-05-25 | 2012-11-07 | EC2090 FS-4d |  |  |  |  | 296.77d |  | Pool Installation Subcontractor [921.6 h] | 193,536 |  | ENG | MILLS | DESGN |
| EC2260 |  | Entry Feature/Sign Wall | 103.33d | 2012-06-01 | 2012-10-26 | EC2140, EC2090 |  |  |  |  | 304.77d |  | FF&E Specialties [825.6 h] | 89,164.8 |  | ENG | MASON | DESGN |
| EC2290 |  | Curbs & Paving | 72.12d | 2012-06-01 | 2012-09-13 | EC2140, EC2090 |  |  |  |  | 320.98d |  | Paving & Roadways Subcontractor [576 h] | 149,760 |  | CON | MILLS | DESGN |
| EC2340 |  | Curbs & Paving | 79.33d | 2012-09-04 | 2012-12-26 | EC2320 |  |  |  |  | 264.18d | 51.6d | Paving & Roadways Subcontractor [633.6 h] | 164,736 |  | CON | MILLS | DESGN |
|  | 8 | **Landscape & Irrigation** |  | 2011-05-24 | 2014-01-08 |  |  |  |  |  |  |  |  |  |  |  |  |  |
| EC1600 |  | Site Cleanup | 48.12d | 2011-05-24 | 2011-08-01 | EC1000 FS+70d, EC1000 SS+40d, EC1130 FS+5d |  |  | 2011-05-24 | 2011-08-02 | 621.6d |  | Landscaping Subcontractor [384 h] | 30,720 |  | ENG | EVANS | FINSH |
| EC2360 |  | Landscape & Irrigation | 288d | 2012-11-20 | 2014-01-08 | EC2270 FS-6d, EC2290 FF+15d, EC2090, EC2140 |  |  |  |  | 0d |  | Landscaping Subcontractor [181.62 h]; Project Managers [778.38 h] | 46,183.78 |  | ENG | MILLS | ROUGH |

## Activity codes

| Code | Value | Meaning |
| --- | --- | --- |
| Department | CON | Construction Department |
| Department | ENG | Engineering Department |
| Key Milestones | Key MS | Key Milestones |
| Phase | CLOSE | Close-In Phase |
| Phase | DESGN | Design and Engineering Phase |
| Phase | FINSH | Finishes and Closeout Phase |
| Phase | FOUND | Foundation Construction Phase |
| Phase | PROCR | Procurement Phase |
| Phase | ROUGH | Rough-In Phase |
| Phase | STRUC | Structural Phase |
| Responsibility | EVANS | Tim Evans |
| Responsibility | FOLEY | Meg Foley |
| Responsibility | HARIS | Linda Haris |
| Responsibility | MASON | Andy Mason |
| Responsibility | MILLS | Tom Mills |
| Responsibility | NOLAN | Joe Nolan |

## Issues

| Issue | Status | Raised | Activity | Notes |
| --- | --- | --- | --- | --- |
| Unit Finishes Experiencing Productivity Delays | IS_Open | 2005-01-17 | EC1550 |  |
| Forecast Overrun | IS_Open | 2005-01-19 | EC1550 | Jeff: / I noticed that the forecast for Autumn Breezes shows a $512,000 cost overrun. I dug into it a little bit and found the problem area is in Building 1 Interior Finishes . I remember you telling me that we were having some problems with that subcontractor's productivity. Is this still the case? We are only 6 months into this project and I don't want this problem to grow. Can you fill me in on what is happening and you and I can work together to resolve it. / Thanks for your help and hard work! / Bruce / V.P. of Construction |
| Finish Date Variance (days) is -6d on WBS: Harbour Pointe.1.2 | IS_Open | 2007-07-01 |  |  |
| Finish Date Variance (days) is -36d on WBS: Harbour Pointe.5 | IS_Open | 2007-07-01 |  |  |
| Finish Date Variance (days) is -21d on WBS: Harbour Pointe.2.3 | IS_Open | 2007-07-01 |  |  |
| Building 2 Subject To Delay | IS_Open | 2007-04-09 |  | This is an issue connected with productivity delays on Unit / Finishes in Building 1. Building 2 first floor finishes are to be completed by / the same subcontractor that is experience delays now. Recommend official / correspondence to Finshes Subcontractor and consider augmenting crews in / Building 2 to pick-up delay. |
| Finish Date Variance (days) is -21d on WBS: Harbour Pointe.2.4 | IS_Open | 2007-07-01 |  |  |
| Finish Date Variance (days) is -21d on WBS: Harbour Pointe.2.5 | IS_Open | 2007-07-01 |  |  |
| Finish Date Variance (days) is -26d on WBS: Harbour Pointe.8 | IS_Open | 2007-07-01 |  |  |

# Saratoga Senior Community

Schedule from Primavera P6, 2011-06-01 to 2015-01-05, data date 2011-06-01, costs in USD.

## Calendars

- Trades - 5 Day Workweek: Mon-Fri 08:00-12:00, 13:00-17:00; Sat-Sun off. Exceptions (off unless hours are given): 2011-07-04, 2011-09-05, 2011-11-24, 2011-12-26, 2012-01-02, 2012-05-28, 2012-07-04, 2012-09-03, 2012-11-22, 2012-12-25, 2013-01-01, 2013-05-27, 2013-07-04, 2013-09-02, 2013-11-28, 2013-12-25.

## Resources

| Resource | Group | Rate |
| --- | --- | --- |
| Thermal Protection Subcontractor | labor | 120 |
| Painter | labor | 70 |
| Finishes & Fit-out Subcontractor | labor | 55 |
| Floor and Carpet Layer | labor | 45 |
| Plumber | labor | 55 |
| Electrician | labor | 95 |
| HVAC | labor | 44 |
| FF&E Specialties | labor | 54 |
| Drywall Subcontractor | labor | 45 |
| Conveying Subcontractor | labor | 80 |
| Rough Carpenter | labor | 45 |
| Finish Carpenter | labor | 67 |
| Millwork Subcontractor | labor | 70 |
| Pool Installation Subcontractor | labor | 105 |
| Concrete Foundation Subcontractor | labor | 100 |
| Laborer-Construction | labor | 35 |
| Roofing Subcontractor | labor | 75 |
| Specialty Metal Fabricator Subcontractor | labor | 110 |
| Project Managers | labor | 50 |
| Fire Suppression Subcontractor | labor | 85 |
| Landscaping Subcontractor | labor | 40 |
| Glass & Glazing Subcontractor | labor | 87 |
| Utilities Subcontractor | labor | 105 |
| Paving & Roadways Subcontractor | labor | 130 |

## Schedule

| ID | WBS | Activity | Type | Duration | Start | Finish | Predecessors | Planned start | Planned finish | Total float | Free float | Resources | Cost | Key Milestones | Department | Responsibility | Phase |
| --- | --- | --- | --- | --- | --- | --- | --- | --- | --- | --- | --- | --- | --- | --- | --- | --- | --- |
| EC1010 |  | Curbs & Paving | milestone | 0d | 2011-06-01 | 2011-06-01 |  |  |  | 749d | 313.2d |  |  | Key MS | CON | EVANS | FINSH |
| EC1080 |  | Curbing | WBS summary | 922.8d | 2011-06-01 | 2015-01-05 | EC1010 FS+1d |  |  | 0d |  |  |  | Key MS | ENG | FOLEY | ROUGH |
| EC2430 |  | Substantial Completion - All TCO | milestone | 0d | 2015-01-05 | 2015-01-05 | EC1600, EC1200, EC2440, EC1130, EC2180, EC1270, EC2390, EC2420 |  |  | 0d |  |  |  | Key MS | CON | MILLS | FINSH |
|  | 1 | **Building 1** |  |  | 2011-06-01 | 2015-01-05 |  |  |  |  |  |  |  |  |  |  |  |
| EC2440 |  | Complete Building 1 | milestone | 0d | 2015-01-05 | 2015-01-05 | EC2240, EC1790, EC1850, EC2360, EC1630, EC1780, EC2290, EC1670, EC1700, EC2270, EC2400, EC2140, EC1910, EC2080, EC2250 FF, EC1990, EC2370, EC1550, EC1950, EC2260 |  |  | 0d |  |  |  | Key MS | CON | MILLS | FINSH |
|  | 1 | **Structure** |  |  | 2011-06-01 | 2012-05-01 |  |  |  |  |  |  |  |  |  |  |  |
| EC1090 |  | Building Pad Including UG Utils |  | 54.12d | 2011-06-01 | 2011-08-16 | EC1110 FF, EC1080 | 2011-06-01 | 2011-08-17 | 0d |  | Concrete Foundation Subcontractor [432 h] | 43,200 |  | CON | NOLAN | FOUND |
| EC1140 |  | First Floor Masonry Structure |  | 13.62d | 2011-08-17 | 2011-09-06 | EC1090 |  |  | 0d |  | Laborer-Construction [108 h] | 3,780 |  | CON | NOLAN | FOUND |
| EC1170 |  | Second Floor Slab & Collar Beam |  | 27.12d | 2011-09-06 | 2011-10-13 | EC1140 |  |  | 0d |  | Laborer-Construction [216 h] | 7,560 |  | CON | NOLAN | FOUND |
| EC1190 |  | Second Floor Masonry Structure |  | 13.62d | 2011-10-13 | 2011-11-01 | EC1170 | 2011-10-13 | 2011-11-02 | 0d |  | Laborer-Construction [108 h] | 3,780 |  | CON | NOLAN | FOUND |
| EC1210 |  | Third Floor Slab & Collar Beam |  | 27.12d | 2011-11-02 | 2011-12-09 | EC1190 | 2011-11-02 | 2011-12-12 | 0d |  | Laborer-Construction [216 h] | 7,560 |  | CON | NOLAN | FOUND |
| EC1240 |  | Third Floor Masonry Structure |  | 13.5d | 2011-12-12 | 2011-12-30 | EC1210 |  |  | 0d |  | Laborer-Construction [108 h] | 3,780 |  | CON | FOLEY | FOUND |
| EC1250 |  | Fourth Floor Slab & Collar Beam |  | 27d | 2011-12-30 | 2012-02-08 | EC1240 |  |  | 0d |  | Laborer-Construction [216 h] | 7,560 |  | CON | FOLEY | FOUND |
| EC1300 |  | Fourth Floor Masonry Structure |  | 13.5d | 2012-02-08 | 2012-02-27 | EC1250 |  |  | 0d |  | Laborer-Construction [108 h] | 3,780 |  | CON | FOLEY | FOUND |
| EC1310 |  | Roof Slab |  | 27d | 2012-02-28 | 2012-04-04 | EC1300 |  |  | 0d |  | Laborer-Construction [216 h] | 7,560 |  | CON | FOLEY | FOUND |
| EC1340 |  | Stair and Elevator Masonry Structure |  | 5.53d | 2012-04-05 | 2012-04-12 | EC1310 |  |  | 0d |  | Laborer-Construction [43.2 h] | 1,512 |  | CON | EVANS | FOUND |
| EC1350 |  | Roof Slab/Collar Beam |  | 13.6d | 2012-04-12 | 2012-05-01 | EC1340 |  |  | 0d |  | Laborer-Construction [108 h] | 3,780 |  | CON | EVANS | FOUND |
|  | 2 | **Roof** |  |  | 2012-05-01 | 2012-08-22 |  |  |  |  |  |  |  |  |  |  |  |
| EC1390 |  | Place Roof Trusses and Sheathing |  | 27.1d | 2012-05-01 | 2012-06-08 | EC1350 |  |  | 95.6d | 0d | Roofing Subcontractor [216 h]; Specialty Metal Fabricator Subcontractor [216 h] | 39,960 |  | CON | EVANS | STRUC |
| EC1400 |  | Place Mechanical Equipment Supports |  | 27.1d | 2012-05-01 | 2012-06-08 | EC1350 |  |  | 361.3d | 0d | Roofing Subcontractor [216 h] | 16,200 |  | ENG | MASON | STRUC |
| EC1530 |  | Built-Up Asphalt Roofing |  | 37.9d | 2012-06-08 | 2012-08-02 | EC1400 |  |  | 361.3d | 0d | Roofing Subcontractor [302.4 h] | 22,680 |  | CON | MASON | STRUC |
| EC1540 |  | Felt and Tile Roofing |  | 51.4d | 2012-06-08 | 2012-08-22 | EC1390 |  |  | 95.6d | 0d | Roofing Subcontractor [410.4 h] | 30,780 |  | CON | EVANS | STRUC |
| EC1780 |  | Roof Complete | milestone | 0d | 2012-08-22 | 2012-08-22 | EC1530, EC1010, EC1540 |  |  | 435.8d | 0d |  |  | Key MS | ENG | MASON | STRUC |
|  | 3 | **Envelope** |  |  | 2012-04-12 | 2013-02-11 |  |  |  |  |  |  |  |  |  |  |  |
| EC1360 |  | Mobilize Scaffolding |  | 13.6d | 2012-04-12 | 2012-05-01 | EC1350 SS |  |  | 37.7d | 17.6d | Thermal Protection Subcontractor [108 h] | 12,960 |  | CON | EVANS | CLOSE |
| EC1410 |  | Install Exterior Windows and Sliding Glass Doors Floor 1 |  | 21.7d | 2012-05-01 | 2012-06-01 | EC1350 |  |  | 0d |  | Thermal Protection Subcontractor [172.8 h] | 20,736 |  | CON | EVANS | CLOSE |
| EC1470 |  | Install Exterior Windows and Sliding Glass Doors Floor 2 |  | 21.73d | 2012-05-24 | 2012-06-26 | EC1410 FS-5d |  |  | 0d |  | Thermal Protection Subcontractor [172.8 h] | 20,736 |  | ENG | EVANS | CLOSE |
| EC1490 |  | Install Backing & Cauld Windows Floor1 |  | 10.93d | 2012-05-25 | 2012-06-12 | EC1410 FS-4d, EC1360 |  |  | 20.1d | 5.8d | Thermal Protection Subcontractor [86.4 h] | 10,368 |  | CON | EVANS | CLOSE |
| EC1500 |  | Install Exterior Windows and Sliding Glass Doors Floor 3 |  | 19.02d | 2012-06-19 | 2012-07-16 | EC1470 FS-5d | 2012-06-19 | 2012-07-17 | 0d |  | Thermal Protection Subcontractor [151.2 h] | 18,144 |  | ENG | EVANS | CLOSE |
| EC1510 |  | Install Backing & Cauld Windows Floor 2 |  | 10.93d | 2012-06-20 | 2012-07-05 | EC1470 FS-4d, EC1490 | 2012-06-20 | 2012-07-06 | 14.3d | 3.1d | Thermal Protection Subcontractor [86.4 h] | 10,368 |  | CON | EVANS | CLOSE |
| EC1520 |  | Install Exterior Windows and Sliding Glass Doors Floor 4 |  | 24.43d | 2012-07-10 | 2012-08-13 | EC1500 FS-5d |  |  | 0d |  | Thermal Protection Subcontractor [194.4 h] | 23,328 |  | ENG | EVANS | CLOSE |
| EC1570 |  | Install Backing & Cauld Windows Floor 3 |  | 8.22d | 2012-07-11 | 2012-07-23 | EC1500 FS-4d, EC1510 |  |  | 11.2d |  | Thermal Protection Subcontractor [64.8 h] | 7,776 |  | CON | EVANS | CLOSE |
| EC1650 |  | Install Backing & Cauld Windows Floor 4 |  | 10.93d | 2012-08-07 | 2012-08-22 | EC1520 FS-4d, EC1570 |  |  | 0d |  | Thermal Protection Subcontractor [86.4 h] | 10,368 |  | CON | EVANS | CLOSE |
| EC1580 |  | Stucco Bands |  | 10.93d | 2012-08-08 | 2012-08-22 | EC1650 FS-10d, EC1510 | 2012-08-08 | 2012-08-23 | 0d |  | Thermal Protection Subcontractor [86.4 h] | 10,368 |  | ENG | EVANS | CLOSE |
| EC1660 |  | Stucco Grey |  | 21.7d | 2012-08-22 | 2012-09-24 | EC1580 |  |  | 0d |  | Thermal Protection Subcontractor [172.8 h] | 20,736 |  | CON | EVANS | CLOSE |
| EC1690 |  | Stucco Finish Coat |  | 27.12d | 2012-09-24 | 2012-10-31 | EC1660 |  |  | 0d |  | Thermal Protection Subcontractor [216 h] | 25,920 |  | CON | EVANS | CLOSE |
| EC1840 |  | Caulk |  | 10.93d | 2012-10-31 | 2012-11-15 | EC1690 |  |  | 0d |  | Thermal Protection Subcontractor [86.4 h] | 10,368 |  | CON | HARIS | CLOSE |
| EC1900 |  | Stucco Band Trim |  | 13.5d | 2012-11-15 | 2012-12-05 | EC1840 |  |  | 0d |  | Thermal Protection Subcontractor [108 h] | 12,960 |  | CON | HARIS | CLOSE |
| EC1980 |  | Paint Exterior |  | 13.5d | 2012-12-12 | 2013-01-03 | EC1900 FS+5d |  |  | 0d |  | Painter [108 h] | 7,560 |  | CON | HARIS | CLOSE |
| EC1990 |  | Install Railings |  | 40.5d | 2012-12-12 | 2013-02-11 | EC1980 SS |  |  | 166.5d | 0d | Thermal Protection Subcontractor [324 h] | 38,880 |  | CON | MILLS | CLOSE |
| EC2110 |  | Demobilize Scaffolding |  | 13.5d | 2013-01-03 | 2013-01-22 | EC1980 |  |  | 0d |  | Thermal Protection Subcontractor [108 h] | 12,960 |  | CON | HARIS | CLOSE |
| EC2140 |  | Shell Complete | milestone | 0d | 2013-02-11 | 2013-02-11 | EC2110, EC1990 |  |  | 166.5d | 24.7d |  |  | Key MS | CON | MILLS | CLOSE |

| ID | WBS | Activity | Type | Duration | Start | Finish | Predecessors | Planned start | Planned finish | Total float | Free float | Resources | Cost | Department | Responsibility | Phase | Key Milestones |
| --- | --- | --- | --- | --- | --- | --- | --- | --- | --- | --- | --- | --- | --- | --- | --- | --- | --- |
|  | 4 | **Interior Finishes** |  |  | 2012-06-08 | 2013-08-13 |  |  |  |  |  |  |  |  |  |  |  |
| EC1550 |  | Unit Finishes Building North - Floor 1 |  | 221.5d | 2012-06-08 | 2013-04-23 | EC1530 SS, EC1540 SS |  |  | 361.3d | 0d | Plumber [98.18 h]; Electrician [98.18 h]; HVAC [98.18 h]; FF&E Specialties [98.18 h]; Painter [32.4 h]; Drywall Subcontractor [98.18 h]; Finishes & Fit-out Subcontractor [98.18 h]; Rough Carpenter [98.18 h]; Finish Carpenter [98.18 h]; Millwork Subcontractor [98.18 h]; Floor and Carpet Layer [98.18 h] | 58,722.54 | CON | MASON | FINSH |  |
| EC1630 |  | Unit Finishes Building South - Floor 1 |  | 224.2d | 2012-06-15 | 2013-05-02 | EC1550 SS+5d | 2012-06-15 | 2013-05-03 | 361.3d | 0d | Finishes & Fit-out Subcontractor [98.18 h]; Rough Carpenter [98.18 h]; Finish Carpenter [98.18 h]; Millwork Subcontractor [98.18 h]; Floor and Carpet Layer [98.18 h]; Plumber [98.18 h]; Electrician [98.18 h]; HVAC [98.18 h]; FF&E Specialties [98.18 h]; Painter [32.4 h]; Drywall Subcontractor [98.18 h] | 58,722.54 | CON | MASON | FINSH |  |
| EC1670 |  | Unit Finishes Building North - Floor 2 |  | 224.2d | 2012-06-22 | 2013-05-09 | EC1630 SS+5d | 2012-06-22 | 2013-05-10 | 361.3d | 0d | Finishes & Fit-out Subcontractor [98.18 h]; Rough Carpenter [98.18 h]; Finish Carpenter [98.18 h]; Millwork Subcontractor [98.18 h]; Floor and Carpet Layer [98.18 h]; Plumber [98.18 h]; Electrician [98.18 h]; HVAC [98.18 h]; FF&E Specialties [98.18 h]; Painter [32.4 h]; Drywall Subcontractor [98.18 h] | 58,722.54 | CON | MASON | FINSH |  |
| EC1700 |  | Unit Finishes Building South - Floor 2 |  | 224.2d | 2012-06-29 | 2013-05-16 | EC1670 SS+5d | 2012-06-29 | 2013-05-17 | 361.3d | 0d | Finishes & Fit-out Subcontractor [98.18 h]; Rough Carpenter [98.18 h]; Finish Carpenter [98.18 h]; Millwork Subcontractor [98.18 h]; Floor and Carpet Layer [98.18 h]; Plumber [98.18 h]; Electrician [98.18 h]; HVAC [98.18 h]; FF&E Specialties [98.18 h]; Painter [32.4 h]; Drywall Subcontractor [98.18 h] | 58,722.54 | CON | MASON | FINSH |  |
| EC1790 |  | Unit Finishes Building North - Floor 3 |  | 224.2d | 2012-07-09 | 2013-05-23 | EC1700 SS+5d, EC1820 FF+40d | 2012-07-09 | 2013-05-24 | 361.3d | 0d | Finishes & Fit-out Subcontractor [98.18 h]; Rough Carpenter [98.18 h]; Finish Carpenter [98.18 h]; Millwork Subcontractor [98.18 h]; Floor and Carpet Layer [98.18 h]; Plumber [98.18 h]; Electrician [98.18 h]; HVAC [98.18 h]; FF&E Specialties [98.18 h]; Painter [32.4 h]; Drywall Subcontractor [98.18 h] | 58,722.54 | CON | MASON | FINSH |  |
| EC1850 |  | Unit Finishes Building South - Floor 3 |  | 224.2d | 2012-07-16 | 2013-05-31 | EC1790 SS+5d | 2012-07-16 | 2013-06-03 | 361.3d | 0d | Finishes & Fit-out Subcontractor [98.18 h]; Rough Carpenter [98.18 h]; Finish Carpenter [98.18 h]; Millwork Subcontractor [98.18 h]; Floor and Carpet Layer [98.18 h]; Plumber [98.18 h]; Electrician [98.18 h]; HVAC [98.18 h]; FF&E Specialties [98.18 h]; Painter [32.4 h]; Drywall Subcontractor [98.18 h] | 58,722.54 | CON | MASON | FINSH |  |
| EC1910 |  | Unit Finishes Building North - Floor 4 |  | 226.9d | 2012-07-23 | 2013-06-12 | EC1850 SS+5d |  |  | 361.3d | 0d | Finishes & Fit-out Subcontractor [98.18 h]; Rough Carpenter [98.18 h]; Finish Carpenter [98.18 h]; Millwork Subcontractor [98.18 h]; Floor and Carpet Layer [98.18 h]; Plumber [98.18 h]; Electrician [98.18 h]; HVAC [98.18 h]; FF&E Specialties [98.18 h]; Painter [32.4 h]; Drywall Subcontractor [98.18 h] | 58,722.54 | CON | MASON | FINSH |  |
| EC1950 |  | Unit Finishes Building South - Floor 4 |  | 226.9d | 2012-07-30 | 2013-06-19 | EC1910 SS+5d |  |  | 361.3d | 0d | Finishes & Fit-out Subcontractor [98.18 h]; Rough Carpenter [98.18 h]; Finish Carpenter [98.18 h]; Millwork Subcontractor [98.18 h]; Floor and Carpet Layer [98.18 h]; Plumber [98.18 h]; Electrician [98.18 h]; HVAC [98.18 h]; FF&E Specialties [98.18 h]; Painter [32.4 h]; Drywall Subcontractor [98.18 h] | 58,722.54 | CON | MASON | FINSH |  |
| EC1820 |  | Building 2 Elevators Complete |  | 78.42d | 2012-08-22 | 2012-12-12 | EC1440 FF+15d, EC1780, EC1550 SS |  |  | 435.8d | 74.5d | Conveying Subcontractor [432 h]; Electrician [432 h] | 75,600 | ENG | MASON | FINSH |  |
| EC2240 |  | Tenant Finishes for Clubhouse Areas |  | 143.22d | 2013-04-19 | 2013-06-26 | EC1630 FS-10d | 2013-04-19 | 2013-11-11 | 394.1d | 32.8d | Finishes & Fit-out Subcontractor [270 h]; Floor and Carpet Layer [270 h]; Plumber [270 h]; Electrician [270 h]; HVAC [270 h]; FF&E Specialties [270 h]; Painter [90 h]; Drywall Subcontractor [270 h] | 112,410 | CON | HARIS | FINSH |  |
| EC2370 |  | Final Inspections and Punchlist |  | 100.53d | 2013-06-19 | 2013-08-13 | EC2240 FF, EC1700, EC1550, EC1670, EC1790, EC1850, EC1630, EC1910, EC1950 | 2013-06-19 | 2013-11-11 | 361.3d |  | Finishes & Fit-out Subcontractor [81 h]; Floor and Carpet Layer [81 h]; Plumber [81 h]; Electrician [81 h]; HVAC [81 h]; FF&E Specialties [81 h]; Painter [27 h]; Drywall Subcontractor [81 h] | 63,801 | CON | MASON | FINSH |  |
|  | 5 | **Pool & Courtyard** |  |  | 2013-01-08 | 2013-10-14 |  |  |  |  |  |  |  |  |  |  |  |
| EC2080 |  | Pool & Deck |  | 159.3d | 2013-01-08 | 2013-08-22 | EC2110 FS-10d, EC1540 |  |  | 0d |  | Pool Installation Subcontractor [756 h] | 79,380 | CON | HARIS | FINSH |  |
| EC2270 |  | Pergola and Amenities |  | 56.83d | 2013-07-25 | 2013-10-14 | EC2080 FS-20d |  |  | 0d |  | Pool Installation Subcontractor [453.6 h] | 47,628 | ENG | MILLS | FINSH |  |
|  | 2 | **Building 2** |  |  | 2011-06-29 | 2013-11-26 |  |  |  |  |  |  |  |  |  |  |  |
| EC2420 |  | Complete Building 2 | milestone | 0d | 2013-11-26 | 2013-11-26 | EC2070, EC2410, EC2150, EC2200, EC2120, EC2030, EC2210, EC2330, EC2170, EC2340 |  |  | 286.9d |  |  |  | CON | MILLS | FINSH | Key MS |
|  | 1 | **Structure** |  |  | 2011-06-29 | 2012-06-14 |  |  |  |  |  |  |  |  |  |  |  |
| EC1150 |  | Building Slab Incl. UG Utils |  | 54.12d | 2011-06-29 | 2011-09-14 | EC1090 SS+20d, EC1080 | 2011-06-29 | 2011-09-15 | 141.8d | 0d | Concrete Foundation Subcontractor [432 h]; Project Managers [432 h] | 129,600 | CON | MILLS | FOUND |  |
| EC1220 |  | First Floor Masonry Structure |  | 13.62d | 2011-09-15 | 2011-10-04 | EC1150 |  |  | 141.8d | 0d | Laborer-Construction [108 h] | 7,560 | CON | MILLS | FOUND |  |
| EC1230 |  | Second Floor Slab & Collar Beam |  | 27.12d | 2011-10-04 | 2011-11-10 | EC1220 |  |  | 141.8d | 0d | Laborer-Construction [216 h] | 15,120 | CON | MILLS | FOUND |  |
| EC1260 |  | Second Floor Masonry Structure |  | 13.5d | 2011-11-10 | 2011-11-30 | EC1230 |  |  | 141.8d | 0d | Laborer-Construction [108 h] | 3,780 | CON | MILLS | FOUND |  |
| EC1290 |  | Third Floor Slab & Collar Beam |  | 27d | 2011-12-01 | 2012-01-10 | EC1260 |  |  | 141.8d | 0d | Laborer-Construction [216 h] | 7,560 | CON | MILLS | FOUND |  |
| EC1320 |  | Third Floor Masonry Structure |  | 13.5d | 2012-01-11 | 2012-01-30 | EC1290 |  |  | 141.8d | 0d | Laborer-Construction [108 h] | 3,780 | CON | MILLS | FOUND |  |
| EC1330 |  | Fourth Floor Slab & Collar Beam |  | 27d | 2012-01-30 | 2012-03-07 | EC1320 |  |  | 141.8d | 0d | Laborer-Construction [216 h] | 7,560 | CON | MILLS | FOUND |  |
| EC1380 |  | Fourth Floor Masonry Structure |  | 13.5d | 2012-03-07 | 2012-03-26 | EC1330 |  |  | 141.8d | 0d | Laborer-Construction [108 h] | 3,780 | CON | MILLS | FOUND |  |
| EC1480 |  | Roof Slab |  | 24.43d | 2012-03-27 | 2012-04-30 | EC1380 |  |  | 141.8d | 0d | Laborer-Construction [194.4 h] | 13,608 | CON | MILLS | FOUND |  |
| EC1620 |  | Stair and Elevator Masonry Structure |  | 5.53d | 2012-04-30 | 2012-05-07 | EC1480 |  |  | 141.8d | 0d | Laborer-Construction [43.2 h] | 3,024 | CON | MILLS | FOUND |  |
| EC1640 |  | Roof Slab/Collar Beam |  | 27.12d | 2012-05-07 | 2012-06-14 | EC1620 |  |  | 141.8d | 0d | Laborer-Construction [216 h] | 15,120 | CON | MILLS | FOUND |  |

Notes:
- EC1670: Steps: Install Plumbing Risers; Sprinkler Rough In; Layout and Top Rack; Electrical Rough In; Interior Rough and Finishes; HVAC Duct Rough In; HVAC Rough Inspection; Frame Walls & Soffits & Prehang; Install Plumbing In Walls; Electrical Wiring; Plumbing Rough Inspection; Electrical Rough Inspection; Framing Inspection; Install Insulation & Drywall One Side; Install Drywall 2nd Side; Finish Drywall (Bead, Tape, Knockdown Texture); Cut Plugs & Switches; Install Interior Door Frames; Interior Trim & Millwork; Paint; Install Cabinet Carcasss; Tile Kitchen, Foyer & Baths; Install Kit Plumbing Fixtures; Install Bath Mirrors & Enclosures; Install Bath Harware & Accessories; Finish Kitchen & Bath Plumbing; Paint 2nd Coat; Finish Plumbing Inspection; Install HVAC Unit & Startup; Carpet Units; Install Interior Doors; Install Security Finishes; Touch Up Drywall; Install Appliances; Touch Up Paint; Punchlist

| ID | WBS | Activity | Type | Duration | Start | Finish | Predecessors | Planned start | Planned finish | Total float | Free float | Resources | Cost | Department | Responsibility | Phase | Key Milestones |
| --- | --- | --- | --- | --- | --- | --- | --- | --- | --- | --- | --- | --- | --- | --- | --- | --- | --- |
|  | 2 | **Roof** |  |  | 2012-06-14 | 2012-10-04 |  |  |  |  |  |  |  |  |  |  |  |
| EC1710 |  | Place Roof Trusses and Sheathing |  | 27.12d | 2012-06-14 | 2012-07-24 | EC1640 |  |  | 141.8d | 0d | Roofing Subcontractor [216 h]; Specialty Metal Fabricator Subcontractor [216 h] | 79,920 | CON | MILLS | ROUGH |  |
| EC1720 |  | Place Mechanical Equipment Supports |  | 27.12d | 2012-06-14 | 2012-07-24 | EC1640 |  |  | 155.3d | 0d | Roofing Subcontractor [216 h] | 32,400 | CON | MILLS | ROUGH |  |
| EC1860 |  | Built-Up Asphalt Roofing |  | 37.92d | 2012-07-24 | 2012-09-17 | EC1720 |  |  | 155.3d | 8.5d | Roofing Subcontractor [302.4 h] | 45,360 | CON | MILLS | ROUGH |  |
| EC1870 |  | Felt and Tile Roofing |  | 51.42d | 2012-07-24 | 2012-10-04 | EC1710 | 2012-07-24 | 2012-10-05 | 141.8d | 0d | Roofing Subcontractor [410.4 h] | 61,560 | CON | MILLS | ROUGH |  |
| EC2020 |  | Roof Complete | milestone | 0d | 2012-10-04 | 2012-10-04 | EC1150 SF, EC1870, EC1860 | 2012-10-05 | 2012-10-05 | 141.8d | 0d |  |  | CON | MILLS | ROUGH | Key MS |
|  | 3 | **Envelope** |  |  | 2012-06-14 | 2013-07-03 |  |  |  |  |  |  |  |  |  |  |  |
| EC1730 |  | Install Exterior Windows and Sliding Glass Doors Floor 1 |  | 27.12d | 2012-06-14 | 2012-07-24 | EC1640 |  |  | 286.9d | 0d | Thermal Protection Subcontractor [216 h]; Glass & Glazing Subcontractor [216 h] | 89,424 | CON | MILLS | CLOSE |  |
| EC1740 |  | Mobilize Scaffolding |  | 13.62d | 2012-06-14 | 2012-07-05 | EC1640 |  |  | 319.2d | 9.5d | Thermal Protection Subcontractor [108 h] | 25,920 | CON | HARIS | CLOSE |  |
| EC1800 |  | Install Exterior Windows and Sliding Glass Doors Floor 2 |  | 24.43d | 2012-07-17 | 2012-08-20 | EC1730 FS-5d | 2012-07-17 | 2012-08-21 | 286.9d | 0d | Thermal Protection Subcontractor [194.4 h]; Glass & Glazing Subcontractor [194.4 h] | 80,481.6 | CON | MILLS | CLOSE |  |
| EC1830 |  | Install Backing & Cauld Windows Floor1 |  | 13.62d | 2012-07-18 | 2012-08-07 | EC1740, EC1730 FS-4d |  |  | 309.7d | 5.8d | Thermal Protection Subcontractor [108 h] | 25,920 | CON | MASON | CLOSE |  |
| EC1880 |  | Install Exterior Windows and Sliding Glass Doors Floor 3 |  | 24.43d | 2012-08-14 | 2012-09-18 | EC1800 FS-5d |  |  | 286.9d | 0d | Thermal Protection Subcontractor [194.4 h]; Glass & Glazing Subcontractor [194.4 h] | 80,481.6 | CON | MILLS | CLOSE |  |
| EC1890 |  | Install Backing & Cauld Windows Floor 2 |  | 10.93d | 2012-08-15 | 2012-08-29 | EC1800 FS-4d, EC1830 |  |  | 303.9d | 8.5d | Thermal Protection Subcontractor [86.4 h] | 20,736 | CON | MASON | CLOSE |  |
| EC1920 |  | Install Exterior Windows and Sliding Glass Doors Floor 4 |  | 27.12d | 2012-09-11 | 2012-10-18 | EC1880 FS-5d |  |  | 286.9d | 0d | Thermal Protection Subcontractor [216 h]; Glass & Glazing Subcontractor [216 h] | 89,424 | CON | MILLS | CLOSE |  |
| EC1930 |  | Install Backing & Cauld Windows Floor 3 |  | 13.62d | 2012-09-12 | 2012-10-01 | EC1890, EC1880 FS-4d |  |  | 295.4d | 8.5d | Thermal Protection Subcontractor [108 h] | 25,920 | CON | MILLS | CLOSE |  |
| EC1960 |  | Install Backing & Cauld Windows Floor 4 |  | 13.62d | 2012-10-12 | 2012-10-31 | EC1930, EC1920 FS-4d |  |  | 286.9d | 0d | Thermal Protection Subcontractor [108 h] | 25,920 | CON | MILLS | CLOSE |  |
| EC1940 |  | Stucco Bands |  | 13.62d | 2012-10-17 | 2012-11-06 | EC1890, EC1960 FS-10d |  |  | 286.9d | 0d | Thermal Protection Subcontractor [108 h] | 25,920 | CON | MILLS | CLOSE |  |
| EC1970 |  | Stucco Grey |  | 27d | 2012-11-06 | 2012-12-14 | EC1940 |  |  | 286.9d | 0d | Thermal Protection Subcontractor [216 h] | 25,920 | CON | MILLS | CLOSE |  |
| EC2050 |  | Stucco Finish Coat |  | 27d | 2012-12-14 | 2013-01-24 | EC1970 |  |  | 286.9d | 0d | Thermal Protection Subcontractor [216 h] | 25,920 | CON | MILLS | CLOSE |  |
| EC2130 |  | Caulk |  | 13.5d | 2013-01-24 | 2013-02-12 | EC2050 |  |  | 286.9d | 0d | Thermal Protection Subcontractor [108 h] | 12,960 | CON | MILLS | CLOSE |  |
| EC2160 |  | Stucco Band Trim |  | 27d | 2013-02-12 | 2013-03-21 | EC2130 |  |  | 286.9d | 0d | Thermal Protection Subcontractor [216 h] | 25,920 | CON | MILLS | CLOSE |  |
| EC2220 |  | Paint Exterior |  | 54.12d | 2013-03-28 | 2013-06-13 | EC2160 FS+5d |  |  | 286.9d | 0d | Thermal Protection Subcontractor [432 h] | 103,680 | CON | MILLS | CLOSE |  |
| EC2230 |  | Install Railings |  | 40.62d | 2013-03-28 | 2013-05-24 | EC2220 SS |  |  | 327.4d | 27d | Thermal Protection Subcontractor [324 h] | 77,760 | CON | MILLS | CLOSE |  |
| EC2300 |  | Demobilize Scaffolding |  | 13.62d | 2013-06-13 | 2013-07-03 | EC2220 |  |  | 286.9d | 0d | Thermal Protection Subcontractor [108 h] | 25,920 | CON | MILLS | CLOSE |  |
| EC2320 |  | Fountain/Water Feature | milestone | 0d | 2013-07-03 | 2013-07-03 | EC2300, EC2230 |  |  | 300.4d | 0d |  |  | ENG | MASON | CLOSE | Key MS |

| ID | WBS | Activity | Type | Duration | Start | Finish | Predecessors | Planned start | Planned finish | Total float | Free float | Constraint | Resources | Cost | Department | Responsibility | Phase | Key Milestones |
| --- | --- | --- | --- | --- | --- | --- | --- | --- | --- | --- | --- | --- | --- | --- | --- | --- | --- | --- |
|  | 4 | **Interior Finishes** |  |  | 2012-09-28 | 2013-11-04 |  |  |  |  |  |  |  |  |  |  |  |  |
| EC2000 |  | Unit Finishes Building North - Floor 1 |  | 226.93d | 2012-09-28 | 2013-08-19 | EC1860, EC1870 FS-5d |  |  | 303.1d | 0d |  | Finishes & Fit-out Subcontractor [108 h]; Rough Carpenter [108 h]; Finish Carpenter [108 h]; Millwork Subcontractor [108 h]; Drywall Subcontractor [108 h]; Floor and Carpet Layer [108 h]; Painter [36 h]; Plumber [108 h]; HVAC [108 h]; Electrician [108 h] | 117,576 | CON | MASON | FINSH |  |
| EC2030 |  | Unit Finishes Building South - Floor 1 |  | 226.93d | 2012-10-05 | 2013-08-26 | EC2000 SS+5d |  |  | 303.1d | 0d |  | Finishes & Fit-out Subcontractor [108 h]; Rough Carpenter [108 h]; Finish Carpenter [108 h]; Millwork Subcontractor [108 h]; Drywall Subcontractor [108 h]; Floor and Carpet Layer [108 h]; Painter [36 h]; Plumber [108 h]; HVAC [108 h]; Electrician [108 h] | 117,576 | CON | MASON | FINSH |  |
| EC2040 |  | Building 1 Elevators Complete |  | 78.42d | 2012-10-05 | 2013-01-28 | EC2000 SS, EC1750 FF+15d, EC2020 |  |  | 421.2d | 118.1d |  | Conveying Subcontractor [432 h]; Electrician [432 h] | 151,200 | CON | HARIS | FINSH |  |
| EC2070 |  | Unit Finishes Building North - Floor 2 |  | 221.53d | 2012-10-12 | 2013-08-26 | EC2030 SS+5d |  |  | 303.1d | 0d |  | Finishes & Fit-out Subcontractor [108 h]; Rough Carpenter [108 h]; Finish Carpenter [108 h]; Millwork Subcontractor [108 h]; Drywall Subcontractor [108 h]; Floor and Carpet Layer [108 h]; Painter [36 h]; Plumber [108 h]; HVAC [108 h]; Electrician [108 h] | 117,576 | CON | MASON | FINSH |  |
| EC2120 |  | Unit Finishes Building South - Floor 2 |  | 221.53d | 2012-10-19 | 2013-09-03 | EC2070 SS+5d |  |  | 303.1d | 0d |  | Finishes & Fit-out Subcontractor [108 h]; Rough Carpenter [108 h]; Finish Carpenter [108 h]; Millwork Subcontractor [108 h]; Drywall Subcontractor [108 h]; Floor and Carpet Layer [108 h]; Painter [36 h]; Plumber [108 h]; HVAC [108 h]; Electrician [108 h] | 117,576 | CON | MASON | FINSH |  |
| EC2150 |  | Unit Finishes Building North - Floor 3 |  | 221.53d | 2012-10-26 | 2013-09-10 | EC2120 SS+5d, EC2040 FF+40d |  |  | 303.1d | 0d |  | Finishes & Fit-out Subcontractor [108 h]; Rough Carpenter [108 h]; Finish Carpenter [108 h]; Millwork Subcontractor [108 h]; Drywall Subcontractor [108 h]; Floor and Carpet Layer [108 h]; Painter [36 h]; Plumber [108 h]; HVAC [108 h]; Electrician [108 h] | 117,576 | CON | MASON | FINSH |  |
| EC2170 |  | Unit Finishes Building South - Floor 3 |  | 221.53d | 2012-11-02 | 2013-09-17 | EC2150 SS+5d |  |  | 303.1d | 0d |  | Finishes & Fit-out Subcontractor [108 h]; Rough Carpenter [108 h]; Finish Carpenter [108 h]; Millwork Subcontractor [108 h]; Drywall Subcontractor [108 h]; Floor and Carpet Layer [108 h]; Painter [36 h]; Plumber [108 h]; HVAC [108 h]; Electrician [108 h] | 117,576 | CON | MASON | FINSH |  |
| EC2200 |  | Unit Finishes Building North - Floor 4 |  | 218.7d | 2012-11-09 | 2013-09-19 | EC2170 SS+5d |  |  | 303.1d | 0d |  | Finishes & Fit-out Subcontractor [108 h]; Rough Carpenter [108 h]; Finish Carpenter [108 h]; Millwork Subcontractor [108 h]; Drywall Subcontractor [108 h]; Floor and Carpet Layer [108 h]; Painter [36 h]; Plumber [108 h]; HVAC [108 h]; Electrician [108 h] | 58,788 | CON | MASON | FINSH |  |
| EC2210 |  | Unit Finishes Building South - Floor 4 |  | 218.7d | 2012-11-16 | 2013-09-26 | EC2200 SS+5d |  |  | 303.1d | 0d |  | Finishes & Fit-out Subcontractor [108 h]; Rough Carpenter [108 h]; Finish Carpenter [108 h]; Millwork Subcontractor [108 h]; Drywall Subcontractor [108 h]; Floor and Carpet Layer [108 h]; Painter [36 h]; Plumber [108 h]; HVAC [108 h]; Electrician [108 h] | 58,788 | CON | MASON | FINSH |  |
| EC2410 |  | Final Inspections and Punchlist |  | 81.12d | 2013-09-26 | 2013-11-04 | EC2030, EC2150, EC2210, EC2000, EC2070, EC2120, EC2170, EC2200 | 2013-09-26 | 2014-01-21 | 303.1d | 16.2d |  | Finishes & Fit-out Subcontractor [81 h]; Drywall Subcontractor [81 h]; Floor and Carpet Layer [81 h]; Painter [27 h]; Plumber [81 h]; HVAC [81 h]; Electrician [81 h] | 58,698 | ENG | MASON | FINSH |  |
|  | 5 | **Courtyard** |  |  | 2013-07-03 | 2013-11-26 |  |  |  |  |  |  |  |  |  |  |  |  |
| EC2330 |  | Courtyard Walks and Amenities |  | 102.72d | 2013-07-03 | 2013-11-26 | EC2300 | 2013-07-03 | 2013-11-27 | 286.9d | 0d |  | Landscaping Subcontractor [810 h] | 64,800 | ENG | MILLS | FINSH |  |
|  | 5 | **Garage 1** |  |  | 2012-02-28 | 2013-10-29 |  |  |  |  |  |  |  |  |  |  |  |  |
| EC1420 |  | Start Garage | milestone | 0d | 2012-02-28 | 2012-02-28 |  | 2012-03-06 | 2012-03-06 | 146.8d | 0d | as late as possible |  |  | CON | MILLS | DESGN | Key MS |
| EC1430 |  | Shop Drawings, Review & Approval |  | 83.7d | 2012-02-28 | 2012-06-21 | EC1420 | 2012-02-24 | 2012-06-21 | 141.8d | 0d | as late as possible | Concrete Foundation Subcontractor [339.74 h]; Project Managers [351.46 h] | 69,120 | CON | MILLS | DESGN |  |
| EC1810 |  | Fab & Delivery |  | 81.12d | 2012-06-21 | 2012-10-11 | EC1430 | 2012-06-19 | 2012-10-12 | 141.8d | 0d | as late as possible | Concrete Foundation Subcontractor [254.81 h]; Project Managers [263.59 h] | 77,320.68 | CON | MILLS | PROCR |  |
| EC2090 |  | Erect Precast Structure |  | 108.12d | 2012-10-12 | 2013-03-15 | EC2020 FS+5d, EC1810 | 2012-10-12 | 2013-03-18 | 141.8d | 0d |  | Concrete Foundation Subcontractor [396.42 h]; Project Managers [251.58 h] | 104,442.35 | CON | MILLS | STRUC |  |
| EC2280 |  | Entry Feature/Sign Wall |  | 81.12d | 2013-03-18 | 2013-07-10 | EC2090 | 2013-03-18 | 2013-07-11 | 307.6d | 0d |  | Concrete Foundation Subcontractor [135 h]; Fire Suppression Subcontractor [135 h]; Electrician [135 h]; Project Managers [135 h] | 89,100 | ENG | MASON | DESGN |  |
| EC2310 |  | Entry Feature/Sign Wall |  | 81.12d | 2013-06-12 | 2013-10-04 | EC2280 FS-20d | 2013-06-12 | 2013-10-07 | 307.6d | 0d |  | Concrete Foundation Subcontractor [432 h]; Project Managers [432 h] | 129,600 | CON | MASON | CLOSE |  |
| EC2380 |  | Entry Feature/Sign Wall |  | 16.32d | 2013-10-07 | 2013-10-29 | EC2310 |  |  | 307.6d | 0d |  | Concrete Foundation Subcontractor [86.4 h]; Project Managers [129.6 h] | 30,240 | ENG | MASON | FINSH |  |
| EC2390 |  | Entry Feature/Sign Wall | milestone | 0d | 2013-10-29 | 2013-10-29 | EC2400 |  |  | 307.6d |  |  |  |  | ENG | MASON | FINSH | Key MS |
| EC2400 |  | Entry Feature/Sign Wall | milestone | 0d | 2013-10-29 | 2013-10-29 | EC2310, EC2380 |  |  | 307.6d | 0d |  |  |  | ENG | MASON | FINSH | Key MS |
|  | 6 | **Garage 2** |  |  | 2011-06-01 | 2013-04-12 |  |  |  |  |  |  |  |  |  |  |  |  |
| EC1020 |  | Start Garage | milestone | 0d | 2011-06-01 | 2011-06-01 |  |  |  | 446d | 0d | as late as possible |  |  | ENG | MASON | DESGN | Key MS |
| EC1030 |  | Shop Drawings, Review and Approval |  | 81.12d | 2011-06-01 | 2011-09-21 | EC1020 | 2011-06-01 | 2011-09-26 | 446d | 0d | as late as possible | Concrete Foundation Subcontractor [339.74 h]; Project Managers [351.46 h] | 103,094.24 | ENG | MASON | DESGN |  |
| EC1180 |  | Fab & Delivery |  | 83.83d | 2011-09-21 | 2012-01-17 | EC1030 | 2011-09-21 | 2012-01-20 | 446d | 0d | as late as possible | Concrete Foundation Subcontractor [259.2 h]; Project Managers [259.2 h] | 77,760 | ENG | MASON | PROCR |  |
| EC1280 |  | Erect Precast Structure |  | 108d | 2012-01-17 | 2012-06-18 | EC1180 |  |  | 446d | 0d |  | Concrete Foundation Subcontractor [311.38 h]; Project Managers [336.62 h] | 79,106.49 | ENG | MASON | STRUC |  |
| EC1590 |  | Fire Protection and Lighting |  | 81.12d | 2012-06-18 | 2012-10-11 | EC1280 |  |  | 446d | 0d |  | Concrete Foundation Subcontractor [133.85 h]; Fire Suppression Subcontractor [133.85 h]; Electrician [133.85 h]; Project Managers [138.46 h] | 88,800 | ENG | MASON | DESGN |  |
| EC1680 |  | Finishes and Striping |  | 97.33d | 2012-09-13 | 2013-01-28 | EC1590 FS-20d | 2012-09-13 | 2013-01-31 | 446d | 0d |  | Concrete Foundation Subcontractor [432 h]; Project Managers [432 h] | 129,600 | ENG | MASON | FINSH |  |
| EC2060 |  | Punch List Garage |  | 56.7d | 2013-01-28 | 2013-04-12 | EC1680 | 2013-01-28 | 2013-04-17 | 446d | 0d |  | Concrete Foundation Subcontractor [108 h]; Project Managers [108 h] | 27,000 | ENG | MASON | FINSH |  |
| EC2180 |  | Complete Garage 2 | milestone | 0d | 2013-04-12 | 2013-04-12 | EC2190 |  |  | 446d |  |  |  |  | ENG | MASON | FINSH | Key MS |
| EC2190 |  | Complete Garage | milestone | 0d | 2013-04-12 | 2013-04-12 | EC1680, EC2060 |  |  | 446d | 0d |  |  |  | ENG | MASON | FINSH | Key MS |

Notes:
- EC2090: Anticipated Problems: jdfpje dkdl;sm / Steps: Masonry; Colar Beam; Roof Trusses; Widows & Doors; Wall Finishes; Roof Membrane & Tiles; Plumbing; Electrical; HVAC; Lockup; FF&E; Tile Flooring

| ID | WBS | Activity | Duration | Start | Finish | Predecessors | Planned start | Planned finish | Total float | Free float | Resources | Cost | Department | Responsibility | Phase |
| --- | --- | --- | --- | --- | --- | --- | --- | --- | --- | --- | --- | --- | --- | --- | --- |
|  | 7 | **Roads, Utilities & Pavers** |  | 2011-06-01 | 2013-11-07 |  |  |  |  |  |  |  |  |  |  |
| EC1000 |  | Curbs & Paving | 81.12d | 2011-06-01 | 2011-09-23 |  | 2011-06-01 | 2011-09-26 | 707.6d | 0d | Paving & Roadways Subcontractor [648 h] | 168,480 | ENG | EVANS | CLOSE |
| EC1040 |  | Site Cleanup | 81.12d | 2011-06-01 | 2011-09-23 |  | 2011-06-01 | 2011-09-26 | 841.8d |  | Electrician [648 h] | 123,120 | ENG | HARIS | DESGN |
| EC1050 |  | Site Cleanup | 78.42d | 2011-06-01 | 2011-09-21 |  |  |  | 844.5d |  | Electrician [626.4 h] | 119,016 | ENG | HARIS | DESGN |
| EC1100 |  | Storm Drainage Site Work | 81.12d | 2011-06-01 | 2011-09-23 | EC1080 | 2011-06-01 | 2011-09-26 | 40.5d | 0d | Utilities Subcontractor [648 h] | 136,080 | CON | EVANS | STRUC |
| EC1110 |  | Site Electrical Work & Temp Power | 13.62d | 2011-06-01 | 2011-06-20 | EC1100 SS |  |  | 40.5d |  | Electrician [108 h] | 20,520 | CON | EVANS | STRUC |
| EC1130 |  | Curbs & Paving | 75.72d | 2011-06-15 | 2011-09-30 | EC1000 SS+10d |  |  | 707.6d | 0d | Landscaping Subcontractor [604.8 h] | 48,384 | ENG | EVANS | CLOSE |
| EC1200 |  | Curbs & Paving | 75.72d | 2011-09-30 | 2012-01-19 | EC1130 |  |  | 707.6d | 0d | Landscaping Subcontractor [475.2 h] | 38,016 | ENG | EVANS | CLOSE |
| EC1270 |  | Curbs & Paving | 54d | 2012-01-19 | 2012-04-04 | EC1000, EC1200, EC1130 |  |  | 707.6d |  | Paving & Roadways Subcontractor [432 h] | 56,160 | CON | EVANS | FINSH |
| EC1440 |  | Electric to Building 2 Power Vault | 102.7d | 2012-05-01 | 2012-09-26 | EC1100, EC1350 |  |  | 474.8d | 39d | Electrician [820.8 h] | 155,952 | ENG | MASON | DESGN |
| EC1750 |  | Electric to Building 1 Power Vault | 78.42d | 2012-06-14 | 2012-10-04 | EC1640 | 2012-06-14 | 2012-10-05 | 484.5d | 63.3d | Electrician [626.4 h] | 119,016 | ENG | MASON | DESGN |
| EC1610 |  | Electric to Building 2 Power Vault | 64.92d | 2012-06-18 | 2012-09-19 | EC1280 |  |  | 590.7d |  | Paving & Roadways Subcontractor [518.4 h] | 134,784 | ENG | EVANS | DESGN |
| EC2250 |  | Fountain/Water Feature | 129.72d | 2013-03-12 | 2013-09-12 | EC2090 FS-4d |  |  | 340.2d |  | Pool Installation Subcontractor [1036.8 h] | 217,728 | ENG | MILLS | DESGN |
| EC2260 |  | Entry Feature/Sign Wall | 116.22d | 2013-03-18 | 2013-08-29 | EC2140, EC2090 |  |  | 349.7d |  | FF&E Specialties [928.8 h] | 100,310.4 | ENG | MILLS | DESGN |
| EC2290 |  | Curbs & Paving | 81.12d | 2013-03-18 | 2013-07-10 | EC2140, EC2090 | 2013-03-18 | 2013-07-11 | 369.8d |  | Paving & Roadways Subcontractor [648 h] | 168,480 | CON | EVANS | CLOSE |
| EC2340 |  | Fountain/Water Feature | 89.22d | 2013-07-03 | 2013-11-07 | EC2320 |  |  | 300.4d | 13.5d | Paving & Roadways Subcontractor [712.8 h] | 185,328 | ENG | MASON | DESGN |
|  | 8 | **Landscape & Irrigation** |  | 2012-01-05 | 2015-01-05 |  |  |  |  |  |  |  |  |  |  |
| EC1600 |  | Curbs & Paving | 54d | 2012-01-05 | 2012-03-20 | EC1130 FS+5d, EC1000 SS+40d, EC1000 FS+70d |  |  | 717.8d |  | Landscaping Subcontractor [432 h] | 17,280 | CON | EVANS | FINSH |
| EC2360 |  | Landscape & Irrigation | 324.12d | 2013-10-04 | 2015-01-05 | EC2140, EC2290 FF+15d, EC2270 FS-6d, EC2090 |  |  | 0d |  | Landscaping Subcontractor [204.32 h]; Project Managers [875.68 h] | 103,913.51 | ENG | MILLS | ROUGH |

## Activity codes

| Code | Value | Meaning |
| --- | --- | --- |
| Department | CON | Construction Department |
| Department | ENG | Engineering Department |
| Key Milestones | Key MS | Key Milestones |
| Phase | CLOSE | Close-In Phase |
| Phase | DESGN | Design and Engineering Phase |
| Phase | FINSH | Finishes and Closeout Phase |
| Phase | FOUND | Foundation Construction Phase |
| Phase | PROCR | Procurement Phase |
| Phase | ROUGH | Rough-In Phase |
| Phase | STRUC | Structural Phase |
| Responsibility | EVANS | Tim Evans |
| Responsibility | FOLEY | Meg Foley |
| Responsibility | HARIS | Linda Haris |
| Responsibility | MASON | Andy Mason |
| Responsibility | MILLS | Tom Mills |
| Responsibility | NOLAN | Joe Nolan |

## Issues

| Issue | Status | Raised | Activity | Notes |
| --- | --- | --- | --- | --- |
| Unit Finishes Experiencing Productivity Delays | IS_Open | 2005-01-17 | EC1550 |  |
| Forecast Overrun | IS_Open | 2005-01-19 | EC1550 | Jeff: / I noticed that the forecast for Autumn Breezes shows a $512,000 cost overrun. I dug into it a little bit and found the problem area is in Building 1 Interior Finishes . I remember you telling me that we were having some problems with that subcontractor's productivity. Is this still the case? We are only 6 months into this project and I don't want this problem to grow. Can you fill me in on what is happening and you and I can work together to resolve it. / Thanks for your help and hard work! / Bruce / V.P. of Construction |
| Finish Date Variance (days) is -6d on WBS: Harbour Pointe.1.2 | IS_Open | 2007-07-01 |  |  |
| Finish Date Variance (days) is -36d on WBS: Harbour Pointe.5 | IS_Open | 2007-07-01 |  |  |
| Building 2 Subject To Delay | IS_Open | 2007-04-09 |  | This is an issue connected with productivity delays on Unit / Finishes in Building 1. Building 2 first floor finishes are to be completed by / the same subcontractor that is experience delays now. Recommend official / correspondence to Finshes Subcontractor and consider augmenting crews in / Building 2 to pick-up delay. |
| Finish Date Variance (days) is -21d on WBS: Harbour Pointe.2.4 | IS_Open | 2007-07-01 |  |  |
| Finish Date Variance (days) is -21d on WBS: Harbour Pointe.2.5 | IS_Open | 2007-07-01 |  |  |
| Finish Date Variance (days) is -21d on WBS: Harbour Pointe.2.3 | IS_Open | 2007-07-01 |  |  |
| Finish Date Variance (days) is -26d on WBS: Harbour Pointe.8 | IS_Open | 2007-07-01 |  |  |

# Harbour Pointe Assisted Living Center

Schedule from Primavera P6, 2010-09-01 to 2014-09-24, data date 2011-05-01, costs in USD, A marks actual dates.
Recently past strucutral and traffic inspection. No weather delays in the / past month allowed us to pull in finish date by a week. We successfully / accomplsihed some work that had risk identified. The risks did not occur / and we can now release 100k in contingency funds. / Owner is happy with progress and completed a walk through during the / month. They do anticipate a few changes, primarily around the curbing and / the reception area.

## Calendars

- Trades - 5 Day Workweek: Mon-Fri 08:00-12:00, 13:00-17:00; Sat-Sun off. Exceptions (off unless hours are given): 2010-09-06, 2010-11-25, 2010-12-24, 2010-12-31, 2011-05-30, 2011-07-04, 2011-09-05, 2011-11-24, 2011-12-26, 2012-01-02, 2012-05-28, 2012-07-04, 2012-09-03, 2012-11-22, 2012-12-25, 2013-01-01, 2013-05-27, 2013-07-04, 2013-09-02, 2013-11-28, 2013-12-25.

## Resources

| Resource | Group | Rate |
| --- | --- | --- |
| Thermal Protection Subcontractor | labor | 120 |
| Painter | labor | 70 |
| Finishes & Fit-out Subcontractor | labor | 55 |
| Floor and Carpet Layer | labor | 45 |
| Plumber | labor | 55 |
| Electrician | labor | 95 |
| HVAC | labor | 44 |
| FF&E Specialties | labor | 54 |
| Drywall Subcontractor | labor | 45 |
| Conveying Subcontractor | labor | 80 |
| Rough Carpenter | labor | 45 |
| Finish Carpenter | labor | 67 |
| Millwork Subcontractor | labor | 70 |
| Pool Installation Subcontractor | labor | 105 |
| Concrete Foundation Subcontractor | labor | 100 |
| Laborer-Construction | labor | 35 |
| Roofing Subcontractor | labor | 75 |
| Specialty Metal Fabricator Subcontractor | labor | 110 |
| Project Managers | labor | 50 |
| Fire Suppression Subcontractor | labor | 85 |
| Glass & Glazing Subcontractor | labor | 87 |
| Landscaping Subcontractor | labor | 40 |
| Utilities Subcontractor | labor | 105 |
| Paving & Roadways Subcontractor | labor | 130 |

## Schedule

| ID | WBS | Activity | Type | Duration | Start | Finish | Predecessors | Complete | Remaining | Planned start | Planned finish | Total float | Free float | Resources | Cost | Actual cost | Key Milestones | Department | Responsibility | Phase |
| --- | --- | --- | --- | --- | --- | --- | --- | --- | --- | --- | --- | --- | --- | --- | --- | --- | --- | --- | --- | --- |
| EC1010 |  | Building Pad Delivered by Owner | milestone | 0d | 2010-09-01 A | 2010-09-01 A |  | 100% |  |  |  |  |  |  |  |  | Key MS | ENG | FOLEY | DESGN |
| EC2430 |  | Substantial Completion - All TCO | milestone | 0d | 2014-09-24 | 2014-09-24 | EC1600, EC1200, EC1270, EC1130, EC2440, EC2390, EC2420, EC2180 |  |  |  |  | 0d |  |  |  |  | Key MS | CON | MILLS | FINSH |
|  | 1 | **Building 1** |  |  | 2010-09-01 | 2014-09-24 |  |  |  |  |  |  |  |  |  |  |  |  |  |  |
| EC2440 |  | Complete Building 1 | milestone | 0d | 2014-09-24 | 2014-09-24 | EC1780, EC1950, EC2250 FF, EC1910, EC2370, EC2140, EC1630, EC1670, EC1850, EC2400, EC2360, EC1700, EC1790, EC2270, EC2260, EC2240, EC1990, EC2080, EC2290, EC1550 |  |  |  |  | 0d |  |  |  |  | Key MS | CON | MILLS | FINSH |
|  | 1 | **Structure** |  |  | 2010-09-01 | 2011-09-21 |  |  |  |  |  |  |  |  |  |  |  |  |  |  |
| EC1090 |  | Building Pad Including UG Utils |  | 60d | 2010-09-01 A | 2010-11-23 A | EC1110 FF | 100% |  | 2010-09-01 | 2010-11-26 |  |  | Concrete Foundation Subcontractor [480 h] | 48,000 | 49,500 |  | CON | NOLAN | FOUND |
| EC1140 |  | First Floor Masonry Structure |  | 15d | 2010-11-24 A | 2010-12-13 A | EC1090 | 100% |  | 2010-11-24 | 2010-12-15 |  |  | Laborer-Construction [120 h] | 4,200 | 4,410 |  | CON | NOLAN | FOUND |
| EC1170 |  | Second Floor Slab & Collar Beam |  | 30d | 2010-12-15 A | 2011-01-31 A | EC1140 | 100% |  | 2010-12-15 | 2011-01-27 |  |  | Laborer-Construction [240 h] | 8,400 | 10,850 |  | CON | NOLAN | FOUND |
| EC1190 |  | Second Floor Masonry Structure |  | 15d | 2011-01-26 A | 2011-02-22 A | EC1170 | 100% |  | 2011-01-26 | 2011-02-15 |  |  | Laborer-Construction [120 h] | 4,200 | 5,005 |  | ENG | HARIS | FOUND |
| EC1210 |  | Third Floor Slab & Collar Beam |  | 30d | 2011-02-23 A | 2011-04-07 A | EC1190 | 100% |  | 2011-02-22 | 2011-04-04 |  |  | Laborer-Construction [240 h] | 8,400 | 9,275 |  | ENG | NOLAN | FOUND |
| EC1240 |  | Third Floor Masonry Structure |  | 15d | 2011-04-12 A | 2011-05-05 | EC1210 | 90% | 3.33d | 2011-04-14 | 2011-05-05 | 0d |  | Laborer-Construction [120 h] | 4,200 | 3,535 |  | ENG | FOLEY | FOUND |
| EC1250 |  | Fourth Floor Slab & Collar Beam |  | 30d | 2011-05-05 | 2011-06-17 | EC1240 |  |  |  |  | 0d |  | Laborer-Construction [240 h] | 8,400 |  |  | ENG | FOLEY | FOUND |
| EC1300 |  | Fourth Floor Masonry Structure |  | 15d | 2011-06-17 | 2011-07-11 | EC1250 |  |  |  |  | 0d |  | Laborer-Construction [120 h] | 4,200 |  |  | ENG | FOLEY | FOUND |
| EC1310 |  | Roof Slab |  | 30d | 2011-07-11 | 2011-08-22 | EC1300 |  |  |  |  | 0d |  | Laborer-Construction [240 h] | 8,400 |  |  | CON | FOLEY | FOUND |
| EC1340 |  | Stair and Elevator Masonry Structure |  | 6d | 2011-08-22 | 2011-08-30 | EC1310 |  |  |  |  | 0d |  | Laborer-Construction [48 h] | 1,680 |  |  | CON | EVANS | FOUND |
| EC1350 |  | Roof Slab/Collar Beam |  | 15d | 2011-08-30 | 2011-09-21 | EC1340 |  |  |  |  | 0d |  | Laborer-Construction [120 h] | 4,200 |  |  | CON | EVANS | FOUND |
|  | 2 | **Roof** |  |  | 2011-09-21 | 2012-01-25 |  |  |  |  |  |  |  |  |  |  |  |  |  |  |
| EC1390 |  | Place Roof Trusses and Sheathing |  | 30d | 2011-09-21 | 2011-11-02 | EC1350 |  |  |  |  | 110d | 0d | Roofing Subcontractor [240 h]; Specialty Metal Fabricator Subcontractor [240 h] | 44,400 |  |  | CON | EVANS | STRUC |
| EC1400 |  | Place Mechanical Equipment Supports |  | 30d | 2011-09-21 | 2011-11-02 | EC1350 |  |  |  |  | 338d | 0d | Roofing Subcontractor [240 h] | 18,000 |  |  | CON | EVANS | STRUC |
| EC1530 |  | Built-Up Asphalt Roofing |  | 42d | 2011-11-02 | 2012-01-04 | EC1400 |  |  |  |  | 338d | 0d | Roofing Subcontractor [336 h] | 25,200 |  |  | ENG | EVANS | STRUC |
| EC1540 |  | Felt and Tile Roofing |  | 57d | 2011-11-02 | 2012-01-25 | EC1390 |  |  |  |  | 110d | 0d | Roofing Subcontractor [456 h] | 34,200 |  |  | ENG | EVANS | STRUC |
| EC1780 |  | Roof Complete | milestone | 0d | 2012-01-25 | 2012-01-25 | EC1540, EC1530, EC1010 |  |  |  |  | 497d | 0d |  |  |  | Key MS | CON | EVANS | STRUC |
|  | 3 | **Envelope** |  |  | 2011-08-30 | 2012-08-03 |  |  |  |  |  |  |  |  |  |  |  |  |  |  |
| EC1360 |  | Mobilize Scaffolding |  | 15d | 2011-08-30 | 2011-09-21 | EC1350 SS |  |  |  |  | 44d | 20d | Thermal Protection Subcontractor [120 h] | 14,400 |  |  | CON | EVANS | CLOSE |
| EC1410 |  | Install Exterior Windows and Sliding Glass Doors Floor 1 |  | 24d | 2011-09-21 | 2011-10-25 | EC1350 |  |  |  |  | 0d |  | Thermal Protection Subcontractor [192 h] | 23,040 |  |  | CON | EVANS | CLOSE |
| EC1470 |  | Install Exterior Windows and Sliding Glass Doors Floor 2 |  | 24d | 2011-10-18 | 2011-11-21 | EC1410 FS-5d |  |  |  |  | 0d |  | Thermal Protection Subcontractor [192 h] | 23,040 |  |  | ENG | EVANS | CLOSE |
| EC1490 |  | Install Backing & Cauld Windows Floor1 |  | 12d | 2011-10-19 | 2011-11-04 | EC1360, EC1410 FS-4d |  |  |  |  | 24d | 7d | Thermal Protection Subcontractor [96 h] | 11,520 |  |  | CON | EVANS | CLOSE |
| EC1500 |  | Install Exterior Windows and Sliding Glass Doors Floor 3 |  | 21d | 2011-11-14 | 2011-12-14 | EC1470 FS-5d |  |  |  |  | 0d |  | Thermal Protection Subcontractor [168 h] | 20,160 |  |  | ENG | EVANS | CLOSE |
| EC1510 |  | Install Backing & Cauld Windows Floor 2 |  | 12d | 2011-11-15 | 2011-12-02 | EC1470 FS-4d, EC1490 |  |  |  |  | 17d | 4d | Thermal Protection Subcontractor [96 h] | 11,520 |  |  | CON | EVANS | CLOSE |
| EC1520 |  | Install Exterior Windows and Sliding Glass Doors Floor 4 |  | 27d | 2011-12-07 | 2012-01-17 | EC1500 FS-5d |  |  |  |  | 0d |  | Thermal Protection Subcontractor [216 h] | 25,920 |  |  | ENG | EVANS | CLOSE |
| EC1570 |  | Install Backing & Cauld Windows Floor 3 |  | 9d | 2011-12-08 | 2011-12-21 | EC1500 FS-4d, EC1510 |  |  |  |  | 13d |  | Thermal Protection Subcontractor [72 h] | 8,640 |  |  | CON | EVANS | CLOSE |
| EC1650 |  | Install Backing & Cauld Windows Floor 4 |  | 12d | 2012-01-11 | 2012-01-27 | EC1520 FS-4d, EC1570 |  |  |  |  | 0d |  | Thermal Protection Subcontractor [96 h] | 11,520 |  |  | CON | EVANS | CLOSE |
| EC1580 |  | Stucco Bands |  | 12d | 2012-01-13 | 2012-01-31 | EC1510, EC1650 FS-10d |  |  |  |  | 0d |  | Thermal Protection Subcontractor [96 h] | 11,520 |  |  | ENG | EVANS | CLOSE |
| EC1660 |  | Stucco Grey |  | 24d | 2012-01-31 | 2012-03-05 | EC1580 |  |  |  |  | 0d |  | Thermal Protection Subcontractor [192 h] | 23,040 |  |  | CON | EVANS | CLOSE |
| EC1690 |  | Stucco Finish Coat |  | 30d | 2012-03-05 | 2012-04-16 | EC1660 |  |  |  |  | 0d |  | Thermal Protection Subcontractor [240 h] | 28,800 |  |  | CON | EVANS | CLOSE |
| EC1840 |  | Caulk |  | 12d | 2012-04-16 | 2012-05-02 | EC1690 |  |  |  |  | 0d |  | Thermal Protection Subcontractor [96 h] | 11,520 |  |  | CON | HARIS | CLOSE |
| EC1900 |  | Stucco Band Trim |  | 15d | 2012-05-02 | 2012-05-23 | EC1840 |  |  |  |  | 0d |  | Thermal Protection Subcontractor [120 h] | 14,400 |  |  | CON | HARIS | CLOSE |
| EC1980 |  | Paint Exterior |  | 15d | 2012-05-31 | 2012-06-21 | EC1900 FS+5d |  |  |  |  | 0d |  | Painter [120 h] | 8,400 |  |  | CON | HARIS | CLOSE |
| EC1990 |  | Install Railings |  | 45d | 2012-05-31 | 2012-08-03 | EC1980 SS |  |  |  |  | 189d | 0d | Thermal Protection Subcontractor [360 h] | 43,200 |  |  | CON | HARIS | CLOSE |
| EC2110 |  | Demobilize Scaffolding |  | 15d | 2012-06-21 | 2012-07-13 | EC1980 |  |  |  |  | 0d |  | Thermal Protection Subcontractor [120 h] | 14,400 |  |  | CON | HARIS | CLOSE |
| EC2140 |  | Shell Complete | milestone | 0d | 2012-08-03 | 2012-08-03 | EC2110, EC1990 |  |  |  |  | 189d | 14.64d |  |  |  | Key MS | CON | HARIS | CLOSE |

| ID | WBS | Activity | Type | Duration | Start | Finish | Predecessors | Complete | Remaining | Planned start | Planned finish | Total float | Free float | Resources | Cost | Actual cost | Department | Responsibility | Phase | Key Milestones |
| --- | --- | --- | --- | --- | --- | --- | --- | --- | --- | --- | --- | --- | --- | --- | --- | --- | --- | --- | --- | --- |
|  | 4 | **Interior Finishes** |  |  | 2011-11-02 | 2013-06-03 |  |  |  |  |  |  |  |  |  |  |  |  |  |  |
| EC1550 |  | Unit Finishes Building North - Floor 1 |  | 246d | 2011-11-02 | 2012-10-19 | EC1540 SS, EC1530 SS |  |  |  |  | 338d | 0d | Finishes & Fit-out Subcontractor [109.09 h]; Rough Carpenter [109.09 h]; Finish Carpenter [109.09 h]; Millwork Subcontractor [109.09 h]; Floor and Carpet Layer [109.09 h]; Plumber [109.09 h]; Electrician [109.09 h]; HVAC [109.09 h]; FF&E Specialties [109.09 h]; Painter [36 h]; Drywall Subcontractor [109.09 h] | 65,247.27 |  | ENG | EVANS | FINSH |  |
| EC1630 |  | Unit Finishes Building South - Floor 1 |  | 249d | 2011-11-09 | 2012-10-31 | EC1550 SS+5d |  |  |  |  | 338d | 0d | Finishes & Fit-out Subcontractor [109.09 h]; Rough Carpenter [109.09 h]; Finish Carpenter [109.09 h]; Millwork Subcontractor [109.09 h]; Floor and Carpet Layer [109.09 h]; Plumber [109.09 h]; Electrician [109.09 h]; HVAC [109.09 h]; FF&E Specialties [109.09 h]; Painter [36 h]; Drywall Subcontractor [109.09 h] | 65,247.27 |  | CON | EVANS | FINSH |  |
| EC1670 |  | Unit Finishes Building North - Floor 2 |  | 249d | 2011-11-16 | 2012-11-07 | EC1630 SS+5d |  |  |  |  | 412d | 0d | Finishes & Fit-out Subcontractor [109.09 h]; Rough Carpenter [109.09 h]; Finish Carpenter [109.09 h]; Millwork Subcontractor [109.09 h]; Floor and Carpet Layer [109.09 h]; Plumber [109.09 h]; Electrician [109.09 h]; HVAC [109.09 h]; FF&E Specialties [109.09 h]; Painter [36 h]; Drywall Subcontractor [109.09 h] | 65,247.27 |  | CON | EVANS | FINSH |  |
| EC1700 |  | Unit Finishes Building South - Floor 2 |  | 249d | 2011-11-23 | 2012-11-14 | EC1670 SS+5d |  |  |  |  | 412d | 0d | Finishes & Fit-out Subcontractor [109.09 h]; Rough Carpenter [109.09 h]; Finish Carpenter [109.09 h]; Millwork Subcontractor [109.09 h]; Floor and Carpet Layer [109.09 h]; Plumber [109.09 h]; Electrician [109.09 h]; HVAC [109.09 h]; FF&E Specialties [109.09 h]; Painter [36 h]; Drywall Subcontractor [109.09 h] | 65,247.27 |  | CON | EVANS | FINSH |  |
| EC1790 |  | Unit Finishes Building North - Floor 3 |  | 249d | 2011-12-01 | 2012-11-21 | EC1700 SS+5d, EC1820 FF+40d |  |  |  |  | 412d | 0d | Finishes & Fit-out Subcontractor [109.09 h]; Rough Carpenter [109.09 h]; Finish Carpenter [109.09 h]; Millwork Subcontractor [109.09 h]; Floor and Carpet Layer [109.09 h]; Plumber [109.09 h]; Electrician [109.09 h]; HVAC [109.09 h]; FF&E Specialties [109.09 h]; Painter [36 h]; Drywall Subcontractor [109.09 h] | 65,247.27 |  | CON | EVANS | FINSH |  |
| EC1850 |  | Unit Finishes Building South - Floor 3 |  | 249d | 2011-12-08 | 2012-11-29 | EC1790 SS+5d |  |  |  |  | 412d | 0d | Finishes & Fit-out Subcontractor [109.09 h]; Rough Carpenter [109.09 h]; Finish Carpenter [109.09 h]; Millwork Subcontractor [109.09 h]; Floor and Carpet Layer [109.09 h]; Plumber [109.09 h]; Electrician [109.09 h]; HVAC [109.09 h]; FF&E Specialties [109.09 h]; Painter [36 h]; Drywall Subcontractor [109.09 h] | 65,247.27 |  | CON | HARIS | FINSH |  |
| EC1910 |  | Unit Finishes Building North - Floor 4 |  | 252d | 2011-12-15 | 2012-12-11 | EC1850 SS+5d |  |  |  |  | 412d | 0d | Finishes & Fit-out Subcontractor [109.09 h]; Rough Carpenter [109.09 h]; Finish Carpenter [109.09 h]; Millwork Subcontractor [109.09 h]; Floor and Carpet Layer [109.09 h]; Plumber [109.09 h]; Electrician [109.09 h]; HVAC [109.09 h]; FF&E Specialties [109.09 h]; Painter [36 h]; Drywall Subcontractor [109.09 h] | 65,247.27 |  | CON | HARIS | FINSH |  |
| EC1950 |  | Unit Finishes Building South - Floor 4 |  | 252d | 2011-12-22 | 2012-12-18 | EC1910 SS+5d |  |  |  |  | 412d | 74d | Finishes & Fit-out Subcontractor [109.09 h]; Rough Carpenter [109.09 h]; Finish Carpenter [109.09 h]; Millwork Subcontractor [109.09 h]; Floor and Carpet Layer [109.09 h]; Plumber [109.09 h]; Electrician [109.09 h]; HVAC [109.09 h]; FF&E Specialties [109.09 h]; Painter [36 h]; Drywall Subcontractor [109.09 h] | 65,247.27 |  | CON | HARIS | FINSH |  |
| EC1820 |  | Building 2 Elevators Complete |  | 87d | 2012-01-25 | 2012-05-25 | EC1550 SS, EC1440 FF+15d, EC1780 |  |  |  |  | 497d | 85d | Conveying Subcontractor [480 h]; Electrician [480 h] | 84,000 |  | CON | HARIS | FINSH |  |
| EC2240 |  | Tenant Finishes for Clubhouse Areas |  | 159d | 2012-10-17 | 2013-06-03 | EC1630 FS-10d |  |  |  |  | 338d | 0d | Finishes & Fit-out Subcontractor [300 h]; Floor and Carpet Layer [300 h]; Plumber [300 h]; Electrician [300 h]; HVAC [300 h]; FF&E Specialties [300 h]; Painter [100 h]; Drywall Subcontractor [300 h] | 124,900 |  | CON | MILLS | FINSH |  |
| EC2370 |  | Final Inspections and Punchlist |  | 42d | 2013-04-03 | 2013-06-03 | EC2240 FF, EC1630, EC1550, EC1790, EC1670, EC1850, EC1700, EC1910, EC1950 |  |  |  |  | 338d |  | Finishes & Fit-out Subcontractor [90 h]; Floor and Carpet Layer [90 h]; Plumber [90 h]; Electrician [90 h]; HVAC [90 h]; FF&E Specialties [90 h]; Painter [30 h]; Drywall Subcontractor [90 h] | 39,570 |  | CON | MILLS | FINSH |  |
|  | 5 | **Pool & Courtyard** |  |  | 2012-06-28 | 2013-05-09 |  |  |  |  |  |  |  |  |  |  |  |  |  |  |
| EC2080 |  | Pool & Deck |  | 177d | 2012-06-28 | 2013-03-11 | EC2110 FS-10d, EC1540 |  |  |  |  | 0d |  | Pool Installation Subcontractor [840 h] | 88,200 |  | CON | HARIS | FINSH |  |
| EC2270 |  | Pergola and Amenities |  | 63d | 2013-02-11 | 2013-05-09 | EC2080 FS-20d |  |  |  |  | 0d |  | Pool Installation Subcontractor [504 h] | 52,920 |  | ENG | MILLS | FINSH |  |
|  | 2 | **Building 2** |  |  | 2010-09-29 | 2013-07-31 |  |  |  |  |  |  |  |  |  |  |  |  |  |  |
| EC2420 |  | Complete Building 2 | milestone | 0d | 2013-07-31 | 2013-07-31 | EC2340, EC2150, EC2200, EC2330, EC2030, EC2070, EC2120, EC2170, EC2210, EC2410 |  |  | 2013-08-01 | 2013-08-01 | 296.36d |  |  |  |  | CON | MILLS | FINSH | Key MS |
|  | 1 | **Structure** |  |  | 2010-09-29 | 2011-10-25 |  |  |  |  |  |  |  |  |  |  |  |  |  |  |
| EC1150 |  | Building Slab Incl. UG Utils |  | 60d | 2010-09-29 A | 2010-12-27 A | EC1090 SS+20d | 100% |  | 2010-09-29 | 2010-12-23 |  |  | Concrete Foundation Subcontractor [480 h]; Project Managers [480 h] | 72,000 | 72,750 | CON | NOLAN | FOUND |  |
| EC1220 |  | First Floor Masonry Structure |  | 15d | 2010-12-22 A | 2011-01-18 A | EC1150 | 100% |  | 2010-12-22 | 2011-01-13 |  |  | Laborer-Construction [120 h] | 4,200 | 5,600 | ENG | NOLAN | FOUND |  |
| EC1230 |  | Second Floor Slab & Collar Beam |  | 30d | 2011-01-12 A | 2011-02-25 A | EC1220 | 100% |  | 2011-01-12 | 2011-02-22 |  |  | Laborer-Construction [240 h] | 8,400 | 9,170 | ENG | NOLAN | FOUND |  |
| EC1260 |  | Second Floor Masonry Structure |  | 15d | 2011-02-23 A | 2011-03-22 A | EC1230 | 100% |  | 2011-03-01 | 2011-03-21 |  |  | Laborer-Construction [120 h] | 4,200 | 4,375 | ENG | NOLAN | FOUND |  |
| EC1290 |  | Third Floor Slab & Collar Beam |  | 30d | 2011-03-22 A | 2011-05-02 | EC1260 | 92% | 0.98d | 2011-03-22 | 2011-05-03 | 174.36d | 0d | Laborer-Construction [240 h] | 8,400 | 7,525 | ENG | FOLEY | FOUND |  |
| EC1320 |  | Third Floor Masonry Structure |  | 15d | 2011-05-02 | 2011-05-23 | EC1290 |  |  | 2011-05-03 | 2011-05-23 | 174.36d | 0d | Laborer-Construction [120 h] | 8,400 |  | CON | FOLEY | FOUND |  |
| EC1330 |  | Fourth Floor Slab & Collar Beam |  | 30d | 2011-05-23 | 2011-07-06 | EC1320 |  |  | 2011-05-24 | 2011-07-06 | 174.36d | 0d | Laborer-Construction [240 h] | 16,800 |  | CON | FOLEY | FOUND |  |
| EC1380 |  | Fourth Floor Masonry Structure |  | 15d | 2011-07-06 | 2011-07-27 | EC1330 |  |  | 2011-07-07 | 2011-07-27 | 174.36d | 0d | Laborer-Construction [120 h] | 8,400 |  | CON | EVANS | FOUND |  |
| EC1480 |  | Roof Slab |  | 27d | 2011-07-27 | 2011-09-02 | EC1380 |  |  | 2011-07-28 | 2011-09-02 | 174.36d | 0d | Laborer-Construction [216 h] | 15,120 |  | ENG | EVANS | FOUND |  |
| EC1620 |  | Stair and Elevator Masonry Structure |  | 6d | 2011-09-02 | 2011-09-13 | EC1480 |  |  | 2011-09-06 | 2011-09-13 | 174.36d | 0d | Laborer-Construction [48 h] | 3,360 |  | CON | EVANS | FOUND |  |
| EC1640 |  | Roof Slab/Collar Beam |  | 30d | 2011-09-13 | 2011-10-25 | EC1620 |  |  | 2011-09-14 | 2011-10-25 | 174.36d | 0d | Laborer-Construction [240 h] | 16,800 |  | CON | EVANS | FOUND |  |

Notes:
- EC1670: Steps: Install Plumbing Risers; Sprinkler Rough In; Layout and Top Rack; Electrical Rough In; Interior Rough and Finishes; HVAC Duct Rough In; HVAC Rough Inspection; Frame Walls & Soffits & Prehang; Install Plumbing In Walls; Electrical Wiring; Plumbing Rough Inspection; Electrical Rough Inspection; Framing Inspection; Install Insulation & Drywall One Side; Install Drywall 2nd Side; Finish Drywall (Bead, Tape, Knockdown Texture); Cut Plugs & Switches; Install Interior Door Frames; Interior Trim & Millwork; Paint; Install Cabinet Carcasss; Tile Kitchen, Foyer & Baths; Install Kit Plumbing Fixtures; Install Bath Mirrors & Enclosures; Install Bath Harware & Accessories; Finish Kitchen & Bath Plumbing; Paint 2nd Coat; Finish Plumbing Inspection; Install HVAC Unit & Startup; Carpet Units; Install Interior Doors; Install Security Finishes; Touch Up Drywall; Install Appliances; Touch Up Paint; Punchlist

| ID | WBS | Activity | Type | Duration | Start | Finish | Predecessors | Planned start | Planned finish | Total float | Free float | Resources | Cost | Department | Responsibility | Phase | Key Milestones |
| --- | --- | --- | --- | --- | --- | --- | --- | --- | --- | --- | --- | --- | --- | --- | --- | --- | --- |
|  | 2 | **Roof** |  |  | 2011-10-25 | 2012-02-28 |  |  |  |  |  |  |  |  |  |  |  |
| EC1710 |  | Place Roof Trusses and Sheathing |  | 30d | 2011-10-25 | 2011-12-07 | EC1640 | 2011-10-26 | 2011-12-07 | 174.36d | 0d | Roofing Subcontractor [240 h]; Specialty Metal Fabricator Subcontractor [240 h] | 88,800 | CON | EVANS | ROUGH |  |
| EC1720 |  | Place Mechanical Equipment Supports |  | 30d | 2011-10-25 | 2011-12-07 | EC1640 | 2011-10-26 | 2011-12-07 | 189.36d | 0d | Roofing Subcontractor [240 h] | 36,000 | CON | EVANS | ROUGH |  |
| EC1860 |  | Built-Up Asphalt Roofing |  | 42d | 2011-12-07 | 2012-02-07 | EC1720 |  |  | 189.36d | 10d | Roofing Subcontractor [336 h] | 25,200 | CON | HARIS | ROUGH |  |
| EC1870 |  | Felt and Tile Roofing |  | 57d | 2011-12-07 | 2012-02-28 | EC1710 |  |  | 174.36d | 0d | Roofing Subcontractor [456 h] | 34,200 | CON | HARIS | ROUGH |  |
| EC2020 |  | Roof Complete | milestone | 0d | 2012-02-28 | 2012-02-28 | EC1870, EC1150 SF, EC1860 |  |  | 174.36d | 0d |  |  | CON | HARIS | ROUGH | Key MS |
|  | 3 | **Envelope** |  |  | 2011-10-25 | 2012-12-28 |  |  |  |  |  |  |  |  |  |  |  |
| EC1730 |  | Install Exterior Windows and Sliding Glass Doors Floor 1 |  | 30d | 2011-10-25 | 2011-12-07 | EC1640 | 2011-10-26 | 2011-12-07 | 332.36d | 0d | Thermal Protection Subcontractor [240 h]; Glass & Glazing Subcontractor [240 h] | 99,360 | CON | EVANS | CLOSE |  |
| EC1740 |  | Mobilize Scaffolding |  | 15d | 2011-10-25 | 2011-11-15 | EC1640 | 2011-10-26 | 2011-11-15 | 370.36d | 11d | Thermal Protection Subcontractor [120 h] | 28,800 | CON | EVANS | CLOSE |  |
| EC1800 |  | Install Exterior Windows and Sliding Glass Doors Floor 2 |  | 27d | 2011-11-30 | 2012-01-10 | EC1730 FS-5d |  |  | 332.36d | 0d | Thermal Protection Subcontractor [216 h]; Glass & Glazing Subcontractor [216 h] | 44,712 | CON | EVANS | CLOSE |  |
| EC1830 |  | Install Backing & Cauld Windows Floor1 |  | 15d | 2011-12-01 | 2011-12-22 | EC1730 FS-4d, EC1740 |  |  | 359.36d | 7d | Thermal Protection Subcontractor [120 h] | 14,400 | CON | HARIS | CLOSE |  |
| EC1880 |  | Install Exterior Windows and Sliding Glass Doors Floor 3 |  | 27d | 2012-01-03 | 2012-02-09 | EC1800 FS-5d |  |  | 332.36d | 0d | Thermal Protection Subcontractor [216 h]; Glass & Glazing Subcontractor [216 h] | 44,712 | CON | HARIS | CLOSE |  |
| EC1890 |  | Install Backing & Cauld Windows Floor 2 |  | 12d | 2012-01-04 | 2012-01-20 | EC1800 FS-4d, EC1830 |  |  | 352.36d | 10d | Thermal Protection Subcontractor [96 h] | 11,520 | CON | HARIS | CLOSE |  |
| EC1920 |  | Install Exterior Windows and Sliding Glass Doors Floor 4 |  | 30d | 2012-02-02 | 2012-03-15 | EC1880 FS-5d |  |  | 332.36d | 0d | Thermal Protection Subcontractor [240 h]; Glass & Glazing Subcontractor [240 h] | 49,680 | CON | HARIS | CLOSE |  |
| EC1930 |  | Install Backing & Cauld Windows Floor 3 |  | 15d | 2012-02-03 | 2012-02-24 | EC1890, EC1880 FS-4d |  |  | 342.36d | 10d | Thermal Protection Subcontractor [120 h] | 14,400 | CON | HARIS | CLOSE |  |
| EC1960 |  | Install Backing & Cauld Windows Floor 4 |  | 15d | 2012-03-09 | 2012-03-30 | EC1920 FS-4d, EC1930 |  |  | 332.36d | 0d | Thermal Protection Subcontractor [120 h] | 14,400 | CON | HARIS | CLOSE |  |
| EC1940 |  | Stucco Bands |  | 15d | 2012-03-16 | 2012-04-06 | EC1890, EC1960 FS-10d | 2012-03-19 | 2012-04-06 | 332.36d | 0d | Thermal Protection Subcontractor [120 h] | 28,800 | CON | HARIS | CLOSE |  |
| EC1970 |  | Stucco Grey |  | 30d | 2012-04-06 | 2012-05-18 | EC1940 | 2012-04-09 | 2012-05-18 | 332.36d | 0d | Thermal Protection Subcontractor [240 h] | 57,600 | CON | HARIS | CLOSE |  |
| EC2050 |  | Stucco Finish Coat |  | 30d | 2012-05-18 | 2012-07-02 | EC1970 | 2012-05-21 | 2012-07-02 | 332.36d | 0d | Thermal Protection Subcontractor [240 h] | 57,600 | CON | HARIS | CLOSE |  |
| EC2130 |  | Caulk |  | 15d | 2012-07-02 | 2012-07-24 | EC2050 | 2012-07-03 | 2012-07-24 | 332.36d | 0d | Thermal Protection Subcontractor [120 h] | 28,800 | CON | HARIS | CLOSE |  |
| EC2160 |  | Stucco Band Trim |  | 30d | 2012-07-24 | 2012-09-05 | EC2130 | 2012-07-25 | 2012-09-05 | 332.36d | 0d | Thermal Protection Subcontractor [240 h] | 57,600 | CON | HARIS | CLOSE |  |
| EC2220 |  | Paint Exterior |  | 60d | 2012-09-12 | 2012-12-06 | EC2160 FS+5d | 2012-09-13 | 2012-12-06 | 332.36d | 0d | Thermal Protection Subcontractor [480 h] | 115,200 | CON | MILLS | CLOSE |  |
| EC2230 |  | Install Railings |  | 45d | 2012-09-12 | 2012-11-14 | EC2220 SS | 2012-09-13 | 2012-11-14 | 377.36d | 30d | Thermal Protection Subcontractor [360 h] | 86,400 | CON | MILLS | CLOSE |  |
| EC2300 |  | Demobilize Scaffolding |  | 15d | 2012-12-06 | 2012-12-28 | EC2220 |  |  | 332.36d | 0d | Thermal Protection Subcontractor [120 h] | 14,400 | CON | MILLS | CLOSE |  |
| EC2320 |  | Shell Complete | milestone | 0d | 2012-12-28 | 2012-12-28 | EC2300, EC2230 |  |  | 347.36d | 0d |  |  | CON | MILLS | CLOSE | Key MS |

| ID | WBS | Activity | Type | Duration | Start | Finish | Predecessors | Complete | Remaining | Planned start | Planned finish | Total float | Free float | Constraint | Resources | Cost | Actual cost | Department | Responsibility | Phase | Key Milestones |
| --- | --- | --- | --- | --- | --- | --- | --- | --- | --- | --- | --- | --- | --- | --- | --- | --- | --- | --- | --- | --- | --- |
|  | 4 | **Interior Finishes** |  |  | 2012-02-21 | 2013-07-31 |  |  |  |  |  |  |  |  |  |  |  |  |  |  |  |
| EC2000 |  | Unit Finishes Building North - Floor 1 |  | 252d | 2012-02-21 | 2013-02-15 | EC1860, EC1870 FS-5d |  |  |  |  | 296.36d | 0d |  | Finishes & Fit-out Subcontractor [120 h]; Rough Carpenter [120 h]; Finish Carpenter [120 h]; Millwork Subcontractor [120 h]; Drywall Subcontractor [120 h]; Floor and Carpet Layer [120 h]; Painter [40 h]; Plumber [120 h]; HVAC [120 h]; Electrician [120 h] | 65,320 |  | CON | HARIS | FINSH |  |
| EC2030 |  | Unit Finishes Building South - Floor 1 |  | 252d | 2012-02-28 | 2013-02-22 | EC2000 SS+5d |  |  |  |  | 296.36d | 0d |  | Finishes & Fit-out Subcontractor [120 h]; Rough Carpenter [120 h]; Finish Carpenter [120 h]; Millwork Subcontractor [120 h]; Drywall Subcontractor [120 h]; Floor and Carpet Layer [120 h]; Painter [40 h]; Plumber [120 h]; HVAC [120 h]; Electrician [120 h] | 65,320 |  | CON | HARIS | FINSH |  |
| EC2040 |  | Building 1 Elevators Complete |  | 87d | 2012-02-28 | 2012-06-29 | EC2020, EC1750 FF+15d, EC2000 SS |  |  |  |  | 430.36d | 134d |  | Conveying Subcontractor [480 h]; Electrician [480 h] | 84,000 |  | CON | HARIS | FINSH |  |
| EC2070 |  | Unit Finishes Building North - Floor 2 |  | 246d | 2012-03-06 | 2013-02-21 | EC2030 SS+5d |  |  |  |  | 296.36d | 0d |  | Finishes & Fit-out Subcontractor [120 h]; Rough Carpenter [120 h]; Finish Carpenter [120 h]; Millwork Subcontractor [120 h]; Drywall Subcontractor [120 h]; Floor and Carpet Layer [120 h]; Painter [40 h]; Plumber [120 h]; HVAC [120 h]; Electrician [120 h] | 65,320 |  | CON | HARIS | FINSH |  |
| EC2120 |  | Unit Finishes Building South - Floor 2 |  | 246d | 2012-03-13 | 2013-02-28 | EC2070 SS+5d |  |  | 2012-03-14 | 2013-02-28 | 296.36d | 0d |  | Finishes & Fit-out Subcontractor [120 h]; Rough Carpenter [120 h]; Finish Carpenter [120 h]; Millwork Subcontractor [120 h]; Drywall Subcontractor [120 h]; Floor and Carpet Layer [120 h]; Painter [40 h]; Plumber [120 h]; HVAC [120 h]; Electrician [120 h] | 130,640 |  | CON | HARIS | FINSH |  |
| EC2150 |  | Unit Finishes Building North - Floor 3 |  | 246d | 2012-03-20 | 2013-03-07 | EC2040 FF+40d, EC2120 SS+5d |  |  | 2012-03-21 | 2013-03-07 | 296.36d | 0d |  | Finishes & Fit-out Subcontractor [120 h]; Rough Carpenter [120 h]; Finish Carpenter [120 h]; Millwork Subcontractor [120 h]; Drywall Subcontractor [120 h]; Floor and Carpet Layer [120 h]; Painter [40 h]; Plumber [120 h]; HVAC [120 h]; Electrician [120 h] | 130,640 |  | CON | HARIS | FINSH |  |
| EC2170 |  | Unit Finishes Building South - Floor 3 |  | 276d | 2012-03-27 | 2013-03-14 | EC2150 SS+5d |  |  | 2012-03-28 | 2013-04-25 | 296.36d | 0d |  | Finishes & Fit-out Subcontractor [120 h]; Rough Carpenter [120 h]; Finish Carpenter [120 h]; Millwork Subcontractor [120 h]; Drywall Subcontractor [120 h]; Floor and Carpet Layer [120 h]; Painter [40 h]; Plumber [120 h]; HVAC [120 h]; Electrician [120 h] | 130,640 |  | CON | HARIS | FINSH |  |
| EC2200 |  | Unit Finishes Building North - Floor 4 |  | 273d | 2012-04-03 | 2013-03-18 | EC2170 SS+5d |  |  | 2012-04-04 | 2013-04-29 | 296.36d | 0d |  | Finishes & Fit-out Subcontractor [120 h]; Rough Carpenter [120 h]; Finish Carpenter [120 h]; Millwork Subcontractor [120 h]; Drywall Subcontractor [120 h]; Floor and Carpet Layer [120 h]; Painter [40 h]; Plumber [120 h]; HVAC [120 h]; Electrician [120 h] | 130,640 |  | CON | MILLS | FINSH |  |
| EC2210 |  | Unit Finishes Building South - Floor 4 |  | 243d | 2012-04-10 | 2013-03-25 | EC2200 SS+5d |  |  | 2012-04-11 | 2013-03-25 | 296.36d | 0d |  | Finishes & Fit-out Subcontractor [120 h]; Rough Carpenter [120 h]; Finish Carpenter [120 h]; Millwork Subcontractor [120 h]; Drywall Subcontractor [120 h]; Floor and Carpet Layer [120 h]; Painter [40 h]; Plumber [120 h]; HVAC [120 h]; Electrician [120 h] | 130,640 |  | CON | MILLS | FINSH |  |
| EC2410 |  | Final Inspections and Punchlist |  | 115d | 2013-03-25 | 2013-07-31 | EC2210, EC2030, EC2120, EC2170, EC2000, EC2150, EC2070, EC2200 |  |  | 2013-03-26 | 2013-09-05 | 296.36d | 0d |  | Finishes & Fit-out Subcontractor [90 h]; Drywall Subcontractor [90 h]; Floor and Carpet Layer [90 h]; Painter [30 h]; Plumber [90 h]; HVAC [90 h]; Electrician [90 h] | 65,220 |  | CON | MILLS | FINSH |  |
|  | 5 | **Courtyard** |  |  | 2012-12-28 | 2013-06-10 |  |  |  |  |  |  |  |  |  |  |  |  |  |  |  |
| EC2330 |  | Courtyard Walks and Amenities |  | 114d | 2012-12-28 | 2013-06-10 | EC2300 |  |  |  |  | 332.36d | 36d |  | Landscaping Subcontractor [900 h] | 36,000 |  | CON | MILLS | DESGN |  |
|  | 5 | **Garage 1** |  |  | 2011-06-24 | 2013-04-26 |  |  |  |  |  |  |  |  |  |  |  |  |  |  |  |
| EC1420 |  | Start Garage | milestone | 0d | 2011-06-24 | 2011-06-24 |  |  |  | 2011-06-27 | 2011-06-27 | 174.36d | 0d | as late as possible |  |  |  | CON | EVANS | DESGN | Key MS |
| EC1430 |  | Shop Drawings, Review & Approval |  | 90d | 2011-06-24 | 2011-10-27 | EC1420 |  |  | 2011-06-22 | 2011-10-27 | 174.36d | 0d | as late as possible | Concrete Foundation Subcontractor [377.49 h]; Project Managers [390.51 h] | 114,549.15 |  | ENG | EVANS | DESGN |  |
| EC1810 |  | Fab & Delivery |  | 90d | 2011-10-27 | 2012-03-06 | EC1430 |  |  | 2011-10-28 | 2012-03-06 | 174.36d | 0d | as late as possible | Concrete Foundation Subcontractor [283.12 h]; Project Managers [292.88 h] | 85,911.86 |  | ENG | HARIS | PROCR |  |
| EC2090 |  | Erect Precast Structure |  | 120d | 2012-03-06 | 2012-08-23 | EC1810, EC2020 FS+5d |  |  |  |  | 174.36d | 0d |  | Concrete Foundation Subcontractor [440.47 h]; Project Managers [279.53 h] | 58,023.53 |  | CON | HARIS | STRUC |  |
| EC2280 |  | Fire Protection and Lighting |  | 90d | 2012-08-23 | 2013-01-02 | EC2090 |  |  | 2012-08-24 | 2013-01-02 | 362.36d | 0d |  | Concrete Foundation Subcontractor [150 h]; Fire Suppression Subcontractor [150 h]; Electrician [150 h]; Project Managers [150 h] | 99,000 |  | ENG | MILLS | DESGN |  |
| EC2310 |  | Finishes, Barrier Cables & Striping |  | 90d | 2012-12-03 | 2013-04-10 | EC2280 FS-20d |  |  |  |  | 362.36d | 0d |  | Concrete Foundation Subcontractor [480 h]; Project Managers [480 h] | 72,000 |  | CON | MILLS | FINSH |  |
| EC2380 |  | Punchlist Garage |  | 18d | 2013-04-10 | 2013-04-26 | EC2310 |  |  | 2013-04-11 | 2013-05-06 | 362.36d | 0d |  | Concrete Foundation Subcontractor [96 h]; Project Managers [144 h] | 33,600 |  | CON | MILLS | FINSH |  |
| EC2390 |  | Complete Garage 1 | milestone | 0d | 2013-04-26 | 2013-04-26 | EC2400 |  |  | 2013-04-29 | 2013-04-29 | 362.36d |  |  |  |  |  | CON | MILLS | FINSH | Key MS |
| EC2400 |  | Complete Garage | milestone | 0d | 2013-04-26 | 2013-04-26 | EC2380, EC2310 |  |  | 2013-04-29 | 2013-04-29 | 362.36d | 0d |  |  |  |  | CON | MILLS | FINSH | Key MS |
|  | 6 | **Garage 2** |  |  | 2010-09-01 | 2012-09-26 |  |  |  |  |  |  |  |  |  |  |  |  |  |  |  |
| EC1020 |  | Start Garage | milestone | 0d | 2010-09-01 A | 2010-09-01 A |  | 100% |  |  |  |  |  | as late as possible |  |  |  | ENG | FOLEY | DESGN | Key MS |
| EC1030 |  | Shop Drawings, Review and Approval |  | 90d | 2010-09-01 A | 2011-01-12 A | EC1020 | 100% |  | 2010-09-01 | 2011-01-11 |  |  | as late as possible | Concrete Foundation Subcontractor [377.49 h]; Project Managers [390.51 h] | 57,274.58 | 59,661.02 | ENG | FOLEY | DESGN |  |
| EC1180 |  | Fab & Delivery |  | 90d | 2011-01-12 A | 2011-05-10 | EC1030 | 82% | 6.43d | 2011-01-05 | 2011-05-10 | 511.9d | 0d | as late as possible | Concrete Foundation Subcontractor [288 h]; Project Managers [288 h] | 43,200 | 41,250 | ENG | EVANS | PROCR |  |
| EC1280 |  | Erect Precast Structure |  | 120d | 2011-05-10 | 2011-10-28 | EC1180 |  |  |  |  | 511.9d | 0d |  | Concrete Foundation Subcontractor [345.97 h]; Project Managers [374.03 h] | 106,597.4 |  | ENG | FOLEY | STRUC |  |
| EC1590 |  | Fire Protection and Lighting |  | 90d | 2011-10-28 | 2012-03-02 | EC1280 |  |  | 2011-10-28 | 2012-03-07 | 511.9d | 0d |  | Concrete Foundation Subcontractor [148.72 h]; Fire Suppression Subcontractor [148.72 h]; Electrician [148.72 h]; Project Managers [153.85 h] | 98,666.67 |  | ENG | EVANS | DESGN |  |
| EC1680 |  | Finishes and Striping |  | 108d | 2012-02-03 | 2012-07-02 | EC1590 FS-20d |  |  | 2012-02-03 | 2012-07-06 | 511.9d | 0d |  | Concrete Foundation Subcontractor [480 h]; Project Managers [480 h] | 120,000 |  | CON | EVANS | FINSH |  |
| EC2060 |  | Punch List Garage |  | 69d | 2012-07-02 | 2012-09-26 | EC1680 |  |  | 2012-06-19 | 2012-09-26 | 511.9d | 0d |  | Concrete Foundation Subcontractor [120 h]; Project Managers [120 h] | 36,000 |  | CON | HARIS | FINSH |  |
| EC2180 |  | Complete Garage 2 | milestone | 0d | 2012-09-26 | 2012-09-26 | EC2190 |  |  |  |  | 511.9d |  |  |  |  |  | CON | HARIS | FINSH | Key MS |
| EC2190 |  | Complete Garage | milestone | 0d | 2012-09-26 | 2012-09-26 | EC1680, EC2060 |  |  |  |  | 511.9d | 0d |  |  |  |  | CON | HARIS | FINSH | Key MS |

Notes:
- EC2090: Anticipated Problems: jdfpje dkdl;sm / Steps: Masonry; Colar Beam; Roof Trusses; Widows & Doors; Wall Finishes; Roof Membrane & Tiles; Plumbing; Electrical; HVAC; Lockup; FF&E; Tile Flooring

| ID | WBS | Activity | Duration | Start | Finish | Predecessors | Complete | Remaining | Planned start | Planned finish | Total float | Free float | Resources | Cost | Actual cost | Department | Responsibility | Phase |
| --- | --- | --- | --- | --- | --- | --- | --- | --- | --- | --- | --- | --- | --- | --- | --- | --- | --- | --- |
|  | 7 | **Roads, Utilities & Pavers** |  | 2010-09-01 | 2013-05-17 |  |  |  |  |  |  |  |  |  |  |  |  |  |
| EC1000 |  | Curbing | 90d | 2010-09-01 A | 2010-12-30 A |  | 100% |  | 2010-09-01 | 2011-01-11 |  |  | Paving & Roadways Subcontractor [720 h] | 93,600 | 91,520 | ENG | FOLEY | FOUND |
| EC1040 |  | Electric to Building 4 Power Vault | 90d | 2010-09-01 A | 2011-01-10 A |  | 100% |  | 2010-09-01 | 2011-01-11 |  |  | Electrician [720 h] | 68,400 | 71,250 | ENG | FOLEY | DESGN |
| EC1050 |  | Electric to Building 3 Power Vault | 87d | 2010-09-01 A | 2010-12-30 A |  | 100% |  | 2010-09-01 | 2011-01-06 |  |  | Electrician [696 h] | 66,120 | 64,600 | ENG | FOLEY | DESGN |
| EC1100 |  | Storm Drainage Site Work | 90d | 2010-09-01 A | 2010-12-29 A |  | 100% |  | 2010-09-01 | 2011-01-11 |  |  | Utilities Subcontractor [720 h] | 75,600 | 74,550 | CON | FOLEY | ROUGH |
| EC1110 |  | Site Electrical Work & Temp Power | 15d | 2010-09-01 A | 2010-09-21 A | EC1100 SS | 100% |  | 2010-09-01 | 2010-09-23 |  |  | Electrician [120 h] | 11,400 | 11,400 | ENG | FOLEY | ROUGH |
| EC1130 |  | Walkways | 84d | 2010-09-15 A | 2011-02-04 A | EC1000 SS+10d | 100% |  | 2010-09-15 | 2011-01-14 |  |  | Landscaping Subcontractor [672 h] | 26,880 | 28,800 | ENG | NOLAN | ROUGH |
| EC1200 |  | Roadway Pavers | 84d | 2011-01-11 A | 2011-05-06 | EC1130 | 84% | 4.96d |  |  | 805.37d | 0d | Landscaping Subcontractor [528 h] | 21,120 | 21,120 | ENG | HARIS | CLOSE |
| EC1270 |  | Finish Paving, Striping and Signs | 60d | 2011-05-06 | 2011-08-02 | EC1130, EC1200, EC1000 |  |  | 2011-05-09 | 2011-08-02 | 805.37d |  | Paving & Roadways Subcontractor [480 h] | 124,800 |  | ENG | FOLEY | FINSH |
| EC1440 |  | Electric to Building 2 Power Vault | 114d | 2011-09-21 | 2012-03-02 | EC1350, EC1100 |  |  |  |  | 542d | 45d | Electrician [912 h] | 86,640 |  | ENG | EVANS | DESGN |
| EC1750 |  | Electric to Building 1 Power Vault | 87d | 2011-10-25 | 2012-02-28 | EC1640 |  |  | 2011-10-26 | 2012-02-28 | 502.36d | 72d | Electrician [696 h] | 132,240 |  | CON | EVANS | DESGN |
| EC1610 |  | Curbs & Paving | 72d | 2011-10-28 | 2012-02-10 | EC1280 |  |  |  |  | 671.9d |  | Paving & Roadways Subcontractor [576 h] | 149,760 |  | ENG | EVANS | CLOSE |
| EC2250 |  | Fountain/Water Feature | 144d | 2012-08-17 | 2013-03-13 | EC2090 FS-4d |  |  | 2012-08-20 | 2013-03-13 | 394.36d |  | Pool Installation Subcontractor [1152 h] | 241,920 |  | ENG | MILLS | DESGN |
| EC2260 |  | Entry Feature/Sign Wall | 129d | 2012-08-23 | 2013-02-26 | EC2140, EC2090 |  |  | 2012-08-24 | 2013-02-26 | 405.36d |  | FF&E Specialties [1032 h] | 111,456 |  | ENG | MILLS | DESGN |
| EC2290 |  | Curbs & Paving | 90d | 2012-08-23 | 2013-01-02 | EC2090, EC2140 |  |  | 2012-08-24 | 2013-01-02 | 429.36d |  | Paving & Roadways Subcontractor [720 h] | 187,200 |  | CON | MILLS | DESGN |
| EC2340 |  | Curbs & Paving | 99d | 2012-12-28 | 2013-05-17 | EC2320 |  |  |  |  | 347.36d | 51d | Paving & Roadways Subcontractor [792 h] | 102,960 |  | CON | MILLS | DESGN |
|  | 8 | **Landscape & Irrigation** |  | 2011-04-08 | 2014-09-24 |  |  |  |  |  |  |  |  |  |  |  |  |  |
| EC1600 |  | Site Cleanup | 60d | 2011-04-08 A | 2011-07-01 | EC1000 SS+40d, EC1130 FS+5d, EC1000 FS+70d | 20% | 44d | 2011-04-08 | 2011-07-05 | 826.33d |  | Landscaping Subcontractor [480 h] | 19,200 | 4,800 | ENG | HARIS | FINSH |
| EC2360 |  | Landscape & Irrigation | 360d | 2013-05-01 | 2014-09-24 | EC2090, EC2140, EC2270 FS-6d, EC2290 FF+15d |  |  |  |  | 0d |  | Landscaping Subcontractor [227.03 h]; Project Managers [972.97 h] | 57,729.73 |  | ENG | MILLS | ROUGH |

## Activity codes

| Code | Value | Meaning |
| --- | --- | --- |
| Department | CON | Construction Department |
| Department | ENG | Engineering Department |
| Key Milestones | Key MS | Key Milestones |
| Phase | CLOSE | Close-In Phase |
| Phase | DESGN | Design and Engineering Phase |
| Phase | FINSH | Finishes and Closeout Phase |
| Phase | FOUND | Foundation Construction Phase |
| Phase | PROCR | Procurement Phase |
| Phase | ROUGH | Rough-In Phase |
| Phase | STRUC | Structural Phase |
| Responsibility | EVANS | Tim Evans |
| Responsibility | FOLEY | Meg Foley |
| Responsibility | HARIS | Linda Haris |
| Responsibility | MILLS | Tom Mills |
| Responsibility | NOLAN | Joe Nolan |

## Risks

| ID | Risk | Status | Cause | Effect | Description | Response |
| --- | --- | --- | --- | --- | --- | --- |
| R001 | Concrete supply constrained | RS_Active | Many large scale construction projects are competing for demand. | Concrete will be harder to source and prices will be significantly higher than estimated. | Concrete supply is constrained raising prices. | Contract with alternative suppliers |
| R002 | Site access restricted for 2 weeks | RS_Open | Permits not issues in time, issues with permits that are issues, additional restrictions issued on permits. | Access to site restricted to resources required for allowed work. Delays intial start of project, possible delays later is permitting issues are not resolved. | Site access restricted due to permitting issues. | Refile permits to prevent possible issues |
| R012 | Weather delay due to hurricane | RS_Propose |  | Timing of the hurricane will affect the impact it will have on the job site. Worse case, foundations and exterior are not complete and will experience significant delays due to flooding and saturated soils. If the buildings are weather tight, impact will be less, but still possible to have site damage and flooding. Dewatering systems may be required to avoid groundwater swell and foundation impact. Water containment systems are required. |  |  |
| R004 | Poor ground conditions | RS_Open | Geological survey is out of date. | The ground conditions may have problems such as obstructions, running sand and water. | Ground conditions are not as expected and vary from the site survey. |  |
| R005 | Failed electrical inspection | RS_Reject | Recent code changes have gone into effect and enforcement is more stringent. | Delays due to rework and re-inspection. | Electrical may not pass inspection. |  |
| R010 | Interior design changes | RS_Propose |  |  |  |  |
| R007 | Contractor financial instability | RS_Reject |  |  |  |  |
| R009 | Permit delay | RS_Impact | Incomplete and improper paperwork were submitted. | New permits must be filed, possible fines for work that was started without permits. | Job permits are delayed. |  |
| R011 | Window manufacturing delay | RS_Propose | Raw material shortage at window manufacturing facility. | Delayed manufacturing will cause delayed shipment, and delayed window installation. | Window manufacturing and shipment might be delayed. |  |
| R006 | Weather delay due to unusually wet weather | RS_Active |  | Wet weather may slow site prep, foundation work, exterior finishes and landscaping. | Higher than usual amounts of rainfall have already occurred and the wet weather is expected to continue. |  |
| R003 | New roof coating cuts roof install time | RS_Open |  |  |  |  |

## Issues

| Issue | Status | Raised | Activity | Notes |
| --- | --- | --- | --- | --- |
| Unit Finishes Experiencing Productivity Delays | IS_Open | 2011-04-20 | EC1550 | Delay with completing units due to lack of finishing materials (spackle, tape). Scheduled to arrive on site in 1 week. |
| Forecast Overrun | IS_Open | 2011-03-10 | EC1550 | Jeff: / I noticed that the forecast for Autumn Breezes shows a $512,000 cost overrun. I dug into it a little bit and found the problem area is in Building 1 Interior Finishes . I remember you telling me that we were having some problems with that subcontractor's productivity. Is this still the case? We are only 6 months into this project and I don't want this problem to grow. Can you fill me in on what is happening and you and I can work together to resolve it. / Thanks for your help and hard work! / V.P. of Construction |
| Finish Date Variance (days) is -6d on WBS: Harbour Pointe.1.2 | IS_Open | 2007-07-01 |  |  |
| Building 2 Subject To Delay | IS_Open | 2007-04-09 |  | This is an issue connected with productivity delays on Unit / Finishes in Building 1. Building 2 first floor finishes are to be completed by / the same subcontractor that is experience delays now. Recommend official / correspondence to Finshes Subcontractor and consider augmenting crews in / Building 2 to pick-up delay. |
| Finish Date Variance (days) is -21d on WBS: Harbour Pointe.2.4 | IS_Open | 2007-07-01 |  |  |

# City Center Office Building Addition

Schedule from Primavera P6, 2010-11-01 to 2013-07-03, data date 2011-05-01, costs in USD, A marks actual dates.

## Calendars

- Trades - 5 Day Workweek: Mon-Fri 08:00-12:00, 13:00-17:00; Sat-Sun off. Exceptions (off unless hours are given): 2010-11-25, 2010-12-24, 2010-12-31, 2011-05-30, 2011-07-04, 2011-09-05, 2011-11-24, 2011-12-26, 2012-01-02, 2012-05-28, 2012-07-04, 2012-09-03, 2012-11-22, 2012-12-25, 2013-01-01, 2013-05-27.

## Resources

| Resource | Group | Rate |
| --- | --- | --- |
| Paul Kim | labor | 60 |
| Project Controls | labor | 55 |
| Excavator | labor | 70 |
| Plumber | labor | 55 |
| Electrician | labor | 95 |
| Ironworker | labor | 55 |
| Rough Carpenter | labor | 45 |
| Operator | labor | 60 |
| Laborer-Construction | labor | 35 |
| Finish Carpenter | labor | 67 |
| HVAC | labor | 44 |
| Elevator Installer | labor | 105 |
| Floor and Carpet Layer | labor | 45 |
| Painter | labor | 70 |

## Schedule

| ID | WBS | Activity | Type | Duration | Start | Finish | Predecessors | Complete | Planned start | Planned finish | Total float | Free float | Resources | Cost | Actual cost | Department | Responsibility | Phase | Key Milestones |
| --- | --- | --- | --- | --- | --- | --- | --- | --- | --- | --- | --- | --- | --- | --- | --- | --- | --- | --- | --- |
|  | D&E | **Design and Engineering** |  |  | 2010-11-01 | 2011-04-06 |  |  |  |  |  |  |  |  |  |  |  |  |  |
| EC1000 |  | Design Building Addition |  | 55.2d | 2010-11-01 A | 2011-01-19 A | EC1010 | 100% | 2010-11-01 | 2011-01-20 |  |  | Paul Kim [441.6 h] | 52,992 | 89,100 | ENG | MILLS | DESGN |  |
| EC1010 |  | Start Office Building Addition Project | milestone | 0d | 2010-11-01 A | 2010-11-01 A |  | 100% |  |  |  |  |  |  |  | ENG | FOLEY | DESGN | Key MS |
| EC1030 |  | Review and Approve Designs |  | 21.6d | 2011-01-17 A | 2011-02-17 A | EC1000 | 100% | 2011-01-17 | 2011-02-15 |  |  | Paul Kim [172.8 h] | 10,368 | 11,820 | ENG | MILLS | DESGN |  |
| EC1050 |  | Assemble Technical Data for Heat Pump |  | 7.2d | 2011-02-16 A | 2011-02-25 A | EC1030 | 100% | 2011-03-01 | 2011-03-10 |  |  | Paul Kim [57.6 h] | 3,456 | 3,900 | ENG | MILLS | DESGN |  |
| EC1160 |  | Review Technical Data on Heat Pumps |  | 27d | 2011-02-24 A | 2011-04-06 A | EC1050 | 100% | 2011-02-24 | 2011-04-04 |  |  | Paul Kim [216 h] | 12,960 | 12,300 | ENG | MILLS | DESGN |  |
|  | Found | **Foundation** |  |  | 2011-02-23 | 2011-09-19 |  |  |  |  |  |  |  |  |  |  |  |  |  |
| EC1100 |  | Site Preparation |  | 43.2d | 2011-02-23 A | 2011-04-18 A | EC1090 SS | 100% | 2011-02-23 | 2011-04-25 |  |  | Excavator [345.6 h] | 24,192 | 21,350 | CON | FOLEY | FOUND |  |
| EC1090 |  | Begin Building Construction | milestone | 0d | 2011-02-28 A | 2011-02-28 A | EC1030, EC1090 (other project) SS | 100% | 2011-03-01 | 2011-03-01 |  |  |  |  |  | CON | FOLEY | FOUND | Key MS |
| EC1230 |  | Excavation |  | 24.12d | 2011-05-02 | 2011-06-02 | EC1100 |  | 2011-05-02 | 2011-06-06 | 126.91d | 0d | Excavator [192 h] | 26,880 |  | CON | FOLEY | FOUND |  |
| EC1320 |  | Install Underground Water Lines |  | 12.12d | 2011-06-03 | 2011-06-20 | EC1230 |  | 2011-06-03 | 2011-06-21 | 126.91d | 0d | Plumber [96 h] | 10,560 |  | CON | FOLEY | FOUND |  |
| EC1330 |  | Install Underground Electric Conduit |  | 12.12d | 2011-06-03 | 2011-06-20 | EC1230 |  | 2011-06-03 | 2011-06-21 | 126.91d | 0d | Electrician [96 h] | 18,240 |  | CON | FOLEY | FOUND |  |
| EC1340 |  | Form/Pour Concrete Footings |  | 24.12d | 2011-06-21 | 2011-07-22 | EC1320, EC1330 |  | 2011-06-21 | 2011-07-26 | 126.91d | 0d | Ironworker [192 h]; Rough Carpenter [192 h]; Operator [192 h] | 62,240 |  | CON | FOLEY | FOUND |  |
| EC1350 |  | Concrete Foundation Walls |  | 24.12d | 2011-07-25 | 2011-08-25 | EC1340 |  | 2011-07-25 | 2011-08-26 | 126.91d | 0d | Ironworker [192 h]; Laborer-Construction [192 h]; Rough Carpenter [192 h] | 52,640 |  | CON | FOLEY | FOUND |  |
| EC1360 |  | Form and Pour Slab |  | 12.12d | 2011-08-26 | 2011-09-12 | EC1350, EC1380 (other project) |  | 2011-08-26 | 2011-09-14 | 126.91d | 0d | Finish Carpenter [96 h]; Ironworker [96 h]; Rough Carpenter [96 h]; Laborer-Construction [96 h] | 39,184 |  | CON | FOLEY | FOUND |  |
| EC1370 |  | Backfill and Compact Walls |  | 4.88d | 2011-09-13 | 2011-09-19 | EC1360 |  |  |  | 126.91d | 0d | Excavator [38.4 h]; Finish Carpenter [38.4 h] | 10,521.6 |  | CON | FOLEY | FOUND |  |
| EC1380 |  | Foundation Phase Complete | milestone | 0d | 2011-09-19 | 2011-09-19 | EC1370 |  |  |  | 177.91d | 0.8d |  |  |  | CON | FOLEY | FOUND | Key MS |
|  | Structure | **Structure** |  |  | 2011-09-19 | 2012-04-20 |  |  |  |  |  |  |  |  |  |  |  |  |  |
| EC1390 |  | Erect Structural Frame |  | 48.05d | 2011-09-19 | 2011-11-24 | EC1370 |  | 2011-09-19 | 2011-11-25 | 126.91d | 0d | Ironworker [384 h] | 43,840 |  | CON | FOLEY | STRUC |  |
| EC1410 |  | Begin Structural Phase | milestone | 0d | 2011-11-24 | 2011-11-24 | EC1390 |  | 2011-11-25 | 2011-11-25 | 418.31d |  |  |  |  | CON | FOLEY | STRUC | Key MS |
| EC1420 |  | Floor Decking |  | 33.6d | 2011-11-24 | 2012-01-11 | EC1390 |  | 2011-11-25 | 2012-01-13 | 126.91d | 0d | Ironworker [268.8 h] | 45,472 |  | CON | FOLEY | STRUC |  |
| EC1430 |  | Concrete First Floor |  | 36d | 2012-01-11 | 2012-03-01 | EC1420 |  |  |  | 126.91d | 0d | Ironworker [144 h]; Laborer-Construction [144 h]; Rough Carpenter [144 h]; Finish Carpenter [144 h] | 30,288 |  | CON | FOLEY | STRUC |  |
| EC1460 |  | Erect Stairwell and Elevator Walls |  | 24d | 2012-03-01 | 2012-04-04 | EC1430 |  |  |  | 138.91d | 0d | Laborer-Construction [192 h] | 6,720 |  | CON | FOLEY | STRUC |  |
| EC1470 |  | Concrete Basement Slab |  | 24d | 2012-03-01 | 2012-04-04 | EC1430 |  |  |  | 138.91d | 12d | Ironworker [192 h]; Laborer-Construction [192 h]; Rough Carpenter [192 h]; Finish Carpenter [192 h] | 47,104 |  | CON | FOLEY | STRUC |  |
| EC1480 |  | Concrete Second Floor |  | 36d | 2012-03-01 | 2012-04-20 | EC1430, EC1540 (other project) |  |  |  | 126.91d | 0d | Ironworker [144 h]; Laborer-Construction [144 h]; Rough Carpenter [144 h]; Finish Carpenter [144 h] | 30,288 |  | CON | FOLEY | STRUC |  |
| EC1540 |  | Structure Complete | milestone | 0d | 2012-04-20 | 2012-04-20 | EC1460, EC1470, EC1480 |  |  |  | 126.91d | 0d |  |  |  | CON | FOLEY | STRUC | Key MS |

Notes:
- EC1320: Anticipated Problems: Grading and soil conditions will slow / this operation. Check estimate. Also, Plumber availability is / limited for this work.
- EC1340: Expenses: Crane 800
- EC1350: Expenses: Crane 800
- EC1360: Expenses: Crane 400
- EC1390: Expenses: Crane 1600
- EC1420: Expenses: Crane 1120
- EC1430: Expenses: Crane 1200
- EC1470: Expenses: Crane 1600
- EC1480: Expenses: Crane 1200

| ID | WBS | Activity | Type | Duration | Start | Finish | Predecessors | Complete | Remaining | Planned start | Planned finish | Total float | Free float | Resources | Cost | Actual cost | Key Milestones | Department | Responsibility | Phase |
| --- | --- | --- | --- | --- | --- | --- | --- | --- | --- | --- | --- | --- | --- | --- | --- | --- | --- | --- | --- | --- |
|  | Mechanicals | **Mechanical/Electrical Systems** |  |  | 2011-04-14 | 2013-06-26 |  |  |  |  |  |  |  |  |  |  |  |  |  |  |
| EC1490 |  | Rough-In Phase Begins | milestone | 0d | 2012-03-12 | 2012-03-12 | EC1440 |  |  |  |  | 233.71d | 17d |  |  |  | Key MS | CON | NOLAN | ROUGH |
| EC1690 |  | Rough In Complete | milestone | 0d | 2013-02-05 | 2013-02-05 | EC1520, EC1680 |  |  |  |  | 0d |  |  |  |  | Key MS | CON | NOLAN | ROUGH |
|  | Lifts | **Elevator** |  |  | 2012-04-04 | 2013-02-12 |  |  |  |  |  |  |  |  |  |  |  |  |  |  |
| EC1520 |  | Install Elevator Rails and Equipment |  | 2.5d | 2012-04-04 | 2012-04-06 | EC1460, EC1490 |  |  |  |  | 216.71d |  | Elevator Installer [19.2 h] | 4,032 |  |  | CON | NOLAN | ROUGH |
| EC1710 |  | Install Elevator Cab and Finishes |  | 4.8d | 2013-02-05 | 2013-02-12 | EC1620, EC1690 |  |  |  |  | 91.2d |  | Elevator Installer [38.4 h] | 4,032 |  |  | CON | NOLAN | FINSH |
|  | HVAC | **HVAC** |  |  | 2011-04-14 | 2013-06-26 |  |  |  |  |  |  |  |  |  |  |  |  |  |  |
| EC1190 |  | Prepare and Solicit Bids for Heat Pump |  | 14.53d | 2011-04-14 A | 2011-05-03 | EC1160 | 92% | 2.15d | 2011-04-13 | 2011-05-04 | 0d |  | Project Controls [57.6 h] | 6,336 | 8,243.12 |  | PCH | NOLAN | PROCR |
| EC1240 |  | Review Bids for Heat Pump |  | 9.72d | 2011-05-03 | 2011-05-17 | EC1190 |  |  | 2011-05-04 | 2011-05-17 | 0d |  | Project Controls [38.4 h] | 4,224 |  |  | PCH | NOLAN | PROCR |
| EC1270 |  | Award Contract for Heat Pump |  | 6d | 2011-05-17 | 2011-05-25 | EC1240 |  |  |  |  | 0d |  |  |  |  |  | PCH | NOLAN | PROCR |
| EC1290 |  | Fabricate and Deliver Heat Pump and Controls |  | 422.4d | 2011-05-25 | 2013-01-04 | EC1270 |  |  | 2011-05-25 | 2013-01-23 | 0d |  | Project Controls [1689.6 h] | 185,856 |  |  | PCH | NOLAN | PROCR |
| EC1500 |  | Install HVAC Ducts |  | 24d | 2012-03-12 | 2012-04-13 | EC1440 |  |  |  |  | 185.71d | 45.8d | HVAC [192 h] | 16,896 |  |  | CON | NOLAN | ROUGH |
| EC1630 |  | Insulate Ducts |  | 4.92d | 2012-06-18 | 2012-06-22 | EC1620, EC1500 |  |  | 2012-06-18 | 2012-06-25 | 139.91d |  | HVAC [38.4 h] | 3,379.2 |  |  | CON | NOLAN | ROUGH |
| EC1650 |  | Set Heat Pump |  | 12d | 2013-01-04 | 2013-01-22 | EC1290, EC1620, EC1630 |  |  |  |  | 0d |  | Operator [96 h] | 5,760 |  |  | CON | NOLAN | ROUGH |
| EC1670 |  | Relocate HVAC Chiller |  | 7.2d | 2013-01-22 | 2013-02-01 | EC1650 |  |  |  |  | 0d |  | Operator [19.2 h]; Electrician [57.6 h]; HVAC [57.6 h] | 9,158.4 |  |  | CON | NOLAN | FINSH |
| EC1680 |  | Startup and Test HVAC |  | 2.4d | 2013-02-01 | 2013-02-05 | EC1660, EC1670, EC1490 |  |  |  |  | 0d |  | Operator [19.2 h] | 1,152 |  |  | CON | NOLAN | ROUGH |
| EC1770 |  | Install AC Grills and Registers |  | 5d | 2013-04-08 | 2013-04-15 | EC1740 SS+8d |  |  |  |  | 23d |  |  |  |  |  | CON | NOLAN | FINSH |
| EC1830 |  | Test and Balance HVAC Equipment |  | 2.44d | 2013-06-21 | 2013-06-26 | EC1820 |  |  |  |  | 0d |  | Operator [19.2 h] | 2,304 |  |  | CON | NOLAN | FINSH |
|  | Systems | **Plumbing and Electrical** |  |  | 2012-01-20 | 2013-01-23 |  |  |  |  |  |  |  |  |  |  |  |  |  |  |
| EC1440 |  | Set Mechanical and Electrical Equipment |  | 36d | 2012-01-20 | 2012-03-12 | EC1430 SS+7d |  |  |  |  | 185.71d | 0d | Operator [288 h] | 17,280 |  |  | CON | NOLAN | ROUGH |
| EC1510 |  | Rough-In Plumbing/Piping |  | 2.55d | 2012-08-24 | 2012-08-29 | EC1500 SS+4d, EC1660 (other project) |  |  |  |  | 72.34d | 0d | Plumber [19.2 h]; Mechanical Engineer [19.2 h] | 10,952 |  |  | CON | NOLAN | ROUGH |
| EC1640 |  | Install Wiring and Cable |  | 36.12d | 2012-08-31 | 2012-10-22 | EC1620, EC1510 SS+5d |  |  | 2012-08-31 | 2012-10-23 | 72.34d | 66.14d | Electrician [288 h] | 54,720 |  |  | CON | NOLAN | ROUGH |
| EC1660 |  | Connect Equipment |  | 1d | 2013-01-22 | 2013-01-23 | EC1650, EC1640 |  |  |  |  | 6.2d |  |  |  |  |  | CON | NOLAN | ROUGH |
|  | Ex-Finish | **Exterior Finishes** |  |  | 2011-02-17 | 2012-06-18 |  |  |  |  |  |  |  |  |  |  |  |  |  |  |
| EC1590 |  | Close-In Phase Begins | milestone | 0d | 2012-05-15 | 2012-05-15 | EC1550 |  |  |  |  | 295.91d |  |  |  |  | Key MS | CON | NOLAN | CLOSE |
| EC1620 |  | Building Enclosed | milestone | 0d | 2012-06-18 | 2012-06-18 | EC1600, EC1580 |  |  |  |  | 126.91d | 0d |  |  |  | Key MS | CON | NOLAN | CLOSE |

Notes:
- EC1510: Expenses: Piping Material 5000

| ID | WBS | Activity | Type | Duration | Start | Finish | Predecessors | Complete | Remaining | Planned start | Planned finish | Total float | Free float | Resources | Cost | Actual cost | Key Milestones | Department | Responsibility | Phase |
| --- | --- | --- | --- | --- | --- | --- | --- | --- | --- | --- | --- | --- | --- | --- | --- | --- | --- | --- | --- | --- |
|  | Brick | **Brick** |  |  | 2011-02-17 | 2012-05-15 |  |  |  |  |  |  |  |  |  |  |  |  |  |  |
| EC1040 |  | Assemble Brick Samples | milestone | 0d | 2011-02-17 A | 2011-02-17 A | EC1030 | 100% |  | 2011-03-01 | 2011-03-01 |  |  |  |  |  | Key MS | PCH | NOLAN | PROCR |
| EC1070 |  | Review and Approve Brick Samples |  | 30d | 2011-02-28 A | 2011-04-13 A | EC1040 | 100% |  | 2011-02-24 | 2011-04-06 |  |  | Paul Kim [240 h] | 14,400 | 15,900 |  | ENG | NOLAN | PROCR |
| EC1180 |  | Prepare and Solicit Bids for Brick Exterior |  | 14.53d | 2011-03-18 A | 2011-04-13 A | EC1070 | 100% |  | 2011-03-18 | 2011-04-08 |  |  | Project Controls [57.6 h] | 6,336 | 11,385 |  | PCH | NOLAN | PROCR |
| EC1220 |  | Review Bids for Brick |  | 14.53d | 2011-04-08 A | 2011-04-28 A | EC1180 | 100% |  |  |  |  |  | Project Controls [57.6 h] | 6,336 | 10,560 |  | PCH | NOLAN | PROCR |
| EC1260 |  | Award Contract for Brick |  | 4.83d | 2011-04-21 A | 2011-05-05 | EC1220 | 8% | 3.5d | 2011-04-28 | 2011-05-05 | 376.96d | 0d | Project Controls [19.2 h] | 2,112 | 330 |  | PCH | NOLAN | PROCR |
| EC1280 |  | Deliver Brick |  | 1d | 2011-05-05 | 2011-05-06 | EC1260 |  |  |  |  | 376.96d | 250.05d |  |  |  |  | PCH | NOLAN | PROCR |
| EC1550 |  | Brick Exterior Walls |  | 16.93d | 2012-04-20 | 2012-05-15 | EC1280, EC1540 |  |  |  |  | 126.91d | 0d | Laborer-Construction [134.4 h] | 16,128 |  |  | CON | NOLAN | CLOSE |
|  | Roof | **Roof** |  |  | 2012-05-15 | 2012-06-18 |  |  |  |  |  |  |  |  |  |  |  |  |  |  |
| EC1600 |  | Insulation and Built-up Roofing |  | 24.12d | 2012-05-15 | 2012-06-18 | EC1550, EC1580 FF |  |  | 2012-05-15 | 2012-06-19 | 126.91d | 0d | Laborer-Construction [192 h] | 14,240 |  |  | CON | NOLAN | CLOSE |
|  | Win | **Doors and Windows** |  |  | 2012-04-27 | 2012-05-08 |  |  |  |  |  |  |  |  |  |  |  |  |  |  |
| EC1560 |  | Install Door and Window Frames |  | 2.5d | 2012-04-27 | 2012-05-01 | EC1550 SS+5d |  |  |  |  | 155.51d | 0d | Finish Carpenter [19.2 h] | 2,572.8 |  |  | CON | NOLAN | CLOSE |
| EC1580 |  | Install Exterior Doors and Windows |  | 4.97d | 2012-05-01 | 2012-05-08 | EC1560 |  |  |  |  | 155.51d | 28.6d | Finish Carpenter [38.4 h] | 5,145.6 |  |  | CON | NOLAN | CLOSE |
|  | Int-Finish | **Interior Finishes** |  |  | 2011-02-25 | 2013-07-03 |  |  |  |  |  |  |  |  |  |  |  |  |  |  |
| EC1700 |  | Drywall in Offices |  | 36d | 2013-02-05 | 2013-03-27 | EC1620, EC1690 |  |  |  |  | 0d |  | Finish Carpenter [288 h] | 19,296 |  |  | CON | HARIS | FINSH |
| EC1820 |  | Touch-up and Clean-up |  | 2.4d | 2013-06-19 | 2013-06-21 | EC1800, EC1810, EC1710, EC1720 |  |  | 2013-06-19 | 2013-06-24 | 0d |  | Finish Carpenter [19.2 h]; Laborer-Construction [19.2 h]; Painter [6.4 h] | 2,406.4 |  |  | CON | HARIS | FINSH |
| EC1840 |  | Finishes Complete | milestone | 0d | 2013-06-26 | 2013-06-26 | EC1830 |  |  |  |  | 0d |  |  |  |  | Key MS | CON | HARIS | FINSH |
| EC1850 |  | Punch List |  | 4.8d | 2013-06-26 | 2013-07-03 | EC1840 |  |  |  |  | 0d |  | Painter [12.8 h]; Finish Carpenter [38.4 h]; Laborer-Construction [38.4 h] | 4,812.8 |  |  | CON | HARIS | FINSH |
| EC1860 |  | Building Addition Complete | milestone | 0d | 2013-07-03 | 2013-07-03 | EC1850 |  |  |  |  | 0d |  |  |  |  | Key MS | CON | HARIS | FINSH |
|  | Fixtures | **Plumbing and Lighting Fixtures** |  |  | 2013-04-08 | 2013-06-10 |  |  |  |  |  |  |  |  |  |  |  |  |  |  |
| EC1760 |  | Install Lighting Fixtures |  | 7.2d | 2013-04-08 | 2013-04-17 | EC1740 SS+8d |  |  |  |  | 20.8d |  | Electrician [57.6 h]; Electrical Engineer [57.6 h] | 11,232 |  |  | CON | HARIS | FINSH |
| EC1810 |  | Install Plumbing Fixtures |  | 4.8d | 2013-06-03 | 2013-06-10 | EC1790 |  |  |  |  | 7.2d |  | Plumber [38.4 h] | 2,112 |  |  | CON | HARIS | FINSH |
|  | Coverings | **Floor and Carpeting** |  |  | 2011-02-25 | 2013-06-03 |  |  |  |  |  |  |  |  |  |  |  |  |  |  |
| EC1060 |  | Assemble and Submit Flooring Samples | milestone | 0d | 2011-02-25 A | 2011-02-25 A | EC1030 | 100% |  | 2011-03-01 | 2011-03-01 |  |  |  |  |  | Key MS | PCH | HARIS | PROCR |
| EC1080 |  | Review and Approve Flooring |  | 28d | 2011-02-25 A | 2011-04-11 A | EC1060 | 100% |  | 2011-02-24 | 2011-04-04 |  |  | Paul Kim [224 h] | 13,440 | 14,760 |  | ENG | HARIS | PROCR |
| EC1170 |  | Prepare and Solicit Bids for Flooring |  | 24.12d | 2011-04-04 A | 2011-05-06 | EC1080 | 95% | 5.08d |  |  | 231.08d | 0d | Project Controls [96 h] | 10,560 | 12,375 |  | PCH | HARIS | PROCR |
| EC1250 |  | Review Bids for Flooring |  | 14.6d | 2011-05-06 | 2011-05-27 | EC1170 |  |  |  |  | 231.08d | 0d | Project Controls [57.6 h] | 6,336 |  |  | PCH | HARIS | PROCR |
| EC1300 |  | Award Contract for Flooring |  | 4.92d | 2011-05-27 | 2011-06-03 | EC1250, EC1080 (other project) |  |  | 2011-05-27 | 2011-06-06 | 231.08d | 0d | Project Controls [19.2 h] | 2,112 |  |  | PCH | HARIS | PROCR |
| EC1310 |  | Fabricate and Deliver Flooring |  | 278.52d | 2011-06-03 | 2012-06-27 | EC1300 |  |  | 2011-06-03 | 2012-07-06 | 231.08d |  | Project Controls [1113.6 h] | 122,496 |  |  | PCH | HARIS | PROCR |
| EC1790 |  | Install Floor and Carpeting |  | 12d | 2013-05-16 | 2013-06-03 | EC1310, EC1740, EC1760, EC1770 |  |  | 2013-05-16 | 2013-06-04 | 0d |  | Floor and Carpet Layer [96 h] | 4,320 |  |  | CON | HARIS | FINSH |

Notes:
- EC1550: Expenses: Crane 6720
- EC1600: Expenses: Crane 800
- EC1820: Corrective Actions: Room 100 / Paint on Door knob / one suspended ceiling panel broken / Wrong color carpet, color should be "gun metal gray" / Room 101 / No paint on back wall, needs to be painted / Room 204 / No shelves installed yet / Room B-7 / Crack in sink, needs to be replaced / Partitions not painted, should be / pink

| ID | WBS | Activity | Duration | Start | Finish | Predecessors | Total float | Resources | Cost | Department | Responsibility | Phase |
| --- | --- | --- | --- | --- | --- | --- | --- | --- | --- | --- | --- | --- |
|  | Carp | **Carpentry** |  | 2013-03-27 | 2013-06-19 |  |  |  |  |  |  |  |
| EC1740 |  | Install Ceiling Grid | 36d | 2013-03-27 | 2013-05-16 | EC1700 | 0d | Finish Carpenter [288 h] | 28,456 | CON | HARIS | FINSH |
| EC1800 |  | Finish Carpentry and Millwork | 12d | 2013-06-03 | 2013-06-19 | EC1790, EC1800 (other project) | 0d | Finish Carpenter [96 h] | 6,432 | CON | HARIS | FINSH |
|  | Paint | **Paint** |  | 2013-02-14 | 2013-03-04 |  |  |  |  |  |  |  |
| EC1720 |  | Paint Building Interior | 12d | 2013-02-14 | 2013-03-04 | EC1700 SS+7d | 77d | Painter [96 h] | 6,720 | CON | HARIS | FINSH |

Notes:
- EC1740: Expenses: Ceiling Tile 6620; Ceiling TIle Spec Change 2540

## Activity codes

| Code | Value | Meaning |
| --- | --- | --- |
| Department | CON | Construction Department |
| Department | ENG | Engineering Department |
| Department | PCH | Purchasing Department |
| Key Milestones | Key MS | Key Milestones |
| Phase | CLOSE | Close-In Phase |
| Phase | DESGN | Design and Engineering Phase |
| Phase | FINSH | Finishes and Closeout Phase |
| Phase | FOUND | Foundation Construction Phase |
| Phase | PROCR | Procurement Phase |
| Phase | ROUGH | Rough-In Phase |
| Phase | STRUC | Structural Phase |
| Responsibility | FOLEY | Meg Foley |
| Responsibility | HARIS | Linda Haris |
| Responsibility | MILLS | Tom Mills |
| Responsibility | NOLAN | Joe Nolan |

# Nesbid Building Expansion

Schedule from Primavera P6, 2011-07-01 to 2013-10-17, data date 2011-07-01, costs in USD.

## Calendars

- Trades - 5 Day Workweek: Mon-Fri 08:00-12:00, 13:00-17:00; Sat-Sun off. Exceptions (off unless hours are given): 2011-07-04, 2011-09-05, 2011-11-24, 2011-12-26, 2012-01-02, 2012-05-28, 2012-07-04, 2012-09-03, 2012-11-22, 2012-12-25, 2013-01-01, 2013-05-27, 2013-07-04, 2013-09-02.

## Resources

| Resource | Group | Rate |
| --- | --- | --- |
| Project Controls | labor | 55 |
| HVAC | labor | 44 |
| Operator | labor | 60 |
| Electrician | labor | 95 |
| Elevator Installer | labor | 105 |
| Plumber | labor | 55 |
| Finish Carpenter | labor | 67 |
| Laborer-Construction | labor | 35 |
| Paul Kim | labor | 60 |
| Painter | labor | 70 |
| Floor and Carpet Layer | labor | 45 |
| Excavator | labor | 70 |
| Ironworker | labor | 55 |
| Rough Carpenter | labor | 45 |

## Schedule

| ID | WBS | Activity | Type | Duration | Start | Finish | Predecessors | Planned start | Planned finish | Total float | Free float | Resources | Cost | Department | Responsibility | Phase | Key Milestones |
| --- | --- | --- | --- | --- | --- | --- | --- | --- | --- | --- | --- | --- | --- | --- | --- | --- | --- |
|  | D&E | **Design and Engineering** |  |  | 2011-07-01 | 2011-10-25 |  |  |  |  |  |  |  |  |  |  |  |
| EC1000 |  | Design Building Addition |  | 41.4d | 2011-07-01 | 2011-08-30 | EC1010 |  |  | 68.31d | 0d | Paul Kim [331.2 h] | 19,872 | ENG | MILLS | DESGN |  |
| EC1010 |  | Start Office Building Addition Project | milestone | 0d | 2011-07-01 | 2011-07-01 |  |  |  | 68.31d | 0d |  |  | ENG | EVANS | STRUC | Key MS |
| EC1030 |  | Review and Approve Designs |  | 16.2d | 2011-08-30 | 2011-09-22 | EC1000 |  |  | 68.31d | 0d | Paul Kim [129.6 h] |  | ENG | MILLS | DESGN |  |
| EC1050 |  | Assemble Technical Data for Heat Pump |  | 5.4d | 2011-09-22 | 2011-09-29 | EC1030 | 2011-09-22 | 2011-09-30 | 68.31d | 0d | Paul Kim [43.2 h] | 2,592 | ENG | MILLS | DESGN |  |
| EC1160 |  | Review Technical Data on Heat Pumps |  | 18d | 2011-09-30 | 2011-10-25 | EC1050 | 2011-09-30 | 2011-10-26 | 68.31d | 0d | Paul Kim [144 h] | 8,640 | ENG | MILLS | DESGN |  |
|  | Found | **Foundation** |  |  | 2011-09-22 | 2012-02-24 |  |  |  |  |  |  |  |  |  |  |  |
| EC1090 |  | Begin Building Construction | milestone | 0d | 2011-09-22 | 2011-09-22 | EC1030, EC1380 (other project) |  |  | 165.11d | 0d |  |  | CON | FOLEY | FOUND | Key MS |
| EC1100 |  | Site Preparation |  | 32.4d | 2011-09-22 | 2011-11-07 | EC1090 SS | 2011-09-22 | 2011-11-08 | 165.11d | 0d | Excavator [259.2 h] | 18,144 | CON | FOLEY | FOUND |  |
| EC1230 |  | Excavation |  | 18d | 2011-11-08 | 2011-12-02 | EC1100 |  |  | 165.11d | 0d | Excavator [144 h] | 10,080 | CON | FOLEY | FOUND |  |
| EC1320 |  | Install Underground Water Lines |  | 9d | 2011-12-05 | 2011-12-15 | EC1230 |  |  | 165.11d | 0d | Plumber [72 h] | 3,960 | CON | FOLEY | FOUND |  |
| EC1330 |  | Install Underground Electric Conduit |  | 9d | 2011-12-05 | 2011-12-15 | EC1230 |  |  | 165.11d | 0d | Electrician [72 h] | 6,840 | CON | FOLEY | FOUND |  |
| EC1340 |  | Form/Pour Concrete Footings |  | 18d | 2011-12-16 | 2012-01-12 | EC1320, EC1330 |  |  | 165.11d | 0d | Ironworker [144 h]; Rough Carpenter [144 h]; Operator [144 h] | 23,840 | CON | FOLEY | FOUND |  |
| EC1350 |  | Concrete Foundation Walls |  | 18d | 2012-01-13 | 2012-02-07 | EC1340 |  |  | 165.11d | 0d | Ironworker [144 h]; Laborer-Construction [144 h]; Rough Carpenter [144 h] | 20,240 | CON | FOLEY | FOUND |  |
| EC1360 |  | Form and Pour Slab |  | 9d | 2012-02-08 | 2012-02-20 | EC1350 |  |  | 165.11d | 0d | Finish Carpenter [72 h]; Ironworker [72 h]; Rough Carpenter [72 h]; Laborer-Construction [72 h] | 14,944 | CON | FOLEY | FOUND |  |
| EC1370 |  | Backfill and Compact Walls |  | 3.6d | 2012-02-21 | 2012-02-24 | EC1360 |  |  | 165.11d | 0d | Excavator [28.8 h]; Finish Carpenter [28.8 h] | 3,945.6 | CON | FOLEY | FOUND |  |
| EC1380 |  | Foundation Phase Complete | milestone | 0d | 2012-02-24 | 2012-02-24 | EC1370 |  |  | 419.91d |  |  |  | CON | FOLEY | FOUND | Key MS |
|  | Structure | **Structure** |  |  | 2012-02-24 | 2012-08-13 |  |  |  |  |  |  |  |  |  |  |  |
| EC1390 |  | Erect Structural Frame |  | 36d | 2012-02-24 | 2012-04-16 | EC1370, EC1360 (other project) |  |  | 165.11d | 0d | Ironworker [288 h] | 17,440 | CON | FOLEY | STRUC |  |
| EC1410 |  | Begin Structural Phase | milestone | 0d | 2012-04-16 | 2012-04-16 | EC1390 |  |  | 383.91d |  |  |  | CON | FOLEY | STRUC | Key MS |
| EC1420 |  | Floor Decking |  | 25.2d | 2012-04-20 | 2012-05-25 | EC1390, EC1540 (other project) |  |  | 161.31d | 0d | Ironworker [201.6 h] | 12,208 | CON | FOLEY | STRUC |  |
| EC1430 |  | Concrete First Floor |  | 27d | 2012-05-25 | 2012-07-05 | EC1420 |  |  | 161.31d | 0d | Ironworker [108 h]; Laborer-Construction [108 h]; Rough Carpenter [108 h]; Finish Carpenter [108 h] | 23,016 | CON | FOLEY | STRUC |  |
| EC1460 |  | Erect Stairwell and Elevator Walls |  | 18d | 2012-07-05 | 2012-07-31 | EC1430 |  |  | 170.31d | 9d | Laborer-Construction [144 h] | 5,040 | CON | FOLEY | STRUC |  |
| EC1470 |  | Concrete Basement Slab |  | 18d | 2012-07-05 | 2012-07-31 | EC1430 |  |  | 170.31d | 9d | Ironworker [144 h]; Laborer-Construction [144 h]; Rough Carpenter [144 h]; Finish Carpenter [144 h] | 35,728 | CON | FOLEY | STRUC |  |
| EC1480 |  | Concrete Second Floor |  | 27d | 2012-07-05 | 2012-08-13 | EC1430 |  |  | 161.31d | 0d | Ironworker [108 h]; Laborer-Construction [108 h]; Rough Carpenter [108 h]; Finish Carpenter [108 h] | 23,016 | CON | FOLEY | STRUC |  |
| EC1540 |  | Structure Complete | milestone | 0d | 2012-08-13 | 2012-08-13 | EC1460, EC1480, EC1470 |  |  | 161.31d | 0d |  |  | CON | FOLEY | STRUC | Key MS |

Notes:
- EC1320: Anticipated Problems: Grading and soil conditions will slow / this operation. Check estimate. Also, Plumber availability is / limited for this work.
- EC1340: Expenses: Crane 800
- EC1350: Expenses: Crane 800
- EC1360: Steps: N Pile Caps (done); S Pile Caps (done); Grade Beam Form; Grade Beam Rebar; Grade Beam Pour, Cure & Strip / Expenses: Crane 400
- EC1390: Expenses: Crane 1600
- EC1420: Expenses: Crane 1120
- EC1430: Expenses: Crane 1200
- EC1470: Expenses: Crane 1600
- EC1480: Expenses: Crane 1200

| ID | WBS | Activity | Type | Duration | Start | Finish | Predecessors | Planned start | Planned finish | Total float | Free float | Resources | Cost | Key Milestones | Department | Responsibility | Phase |
| --- | --- | --- | --- | --- | --- | --- | --- | --- | --- | --- | --- | --- | --- | --- | --- | --- | --- |
|  | Mechanicals | **Mechanical/Electrical Systems** |  |  | 2011-10-26 | 2013-10-11 |  |  |  |  |  |  |  |  |  |  |  |
| EC1490 |  | Rough-In Phase Begins | milestone | 0d | 2012-08-29 | 2012-08-29 | EC1440, EC1510 (other project) |  |  | 208.34d | 0d |  |  | Key MS | CON | NOLAN | ROUGH |
| EC1690 |  | Rough In Complete | milestone | 0d | 2013-03-20 | 2013-03-20 | EC1520, EC1680 | 2013-03-21 | 2013-03-21 | 68.31d | 0d |  |  | Key MS | CON | NOLAN | ROUGH |
|  | Lifts | **Elevator** |  |  | 2012-08-29 | 2013-03-26 |  |  |  |  |  |  |  |  |  |  |  |
| EC1520 |  | Install Elevator Rails and Equipment |  | 1.8d | 2012-08-29 | 2012-08-30 | EC1490, EC1460 | 2012-08-29 | 2012-08-31 | 208.34d | 140.03d | Elevator Installer [14.4 h] | 1,512 |  | CON | NOLAN | ROUGH |
| EC1710 |  | Install Elevator Cab and Finishes |  | 3.6d | 2013-03-21 | 2013-03-26 | EC1690, EC1620 |  |  | 136.71d |  | Elevator Installer [28.8 h] | 3,024 |  | CON | NOLAN | FINSH |
|  | HVAC | **HVAC** |  |  | 2011-10-26 | 2013-10-11 |  |  |  |  |  |  |  |  |  |  |  |
| EC1190 |  | Prepare and Solicit Bids for Heat Pump |  | 10.8d | 2011-10-26 | 2011-11-09 | EC1160 |  |  | 68.31d | 0d | Project Controls [43.2 h] | 2,376 |  | PCH | NOLAN | PROCR |
| EC1240 |  | Review Bids for Heat Pump |  | 7.2d | 2011-11-09 | 2011-11-18 | EC1190 |  |  | 68.31d | 0d | Project Controls [28.8 h] | 1,584 |  | PCH | NOLAN | PROCR |
| EC1270 |  | Award Contract for Heat Pump |  | 6d | 2011-11-21 | 2011-11-29 | EC1240 |  |  | 68.31d | 0d |  |  |  | PCH | NOLAN | PROCR |
| EC1290 |  | Fabricate and Deliver Heat Pump and Controls |  | 316.8d | 2011-11-30 | 2013-02-26 | EC1270 |  |  | 68.31d | 0d | Project Controls [1267.2 h] | 69,696 |  | PCH | NOLAN | PROCR |
| EC1500 |  | Install HVAC Ducts |  | 18d | 2012-07-16 | 2012-08-09 | EC1440 |  |  | 202.91d | 0d | HVAC [144 h] | 6,336 |  | CON | NOLAN | ROUGH |
| EC1630 |  | Insulate Ducts |  | 3.6d | 2012-09-26 | 2012-10-01 | EC1500, EC1620 |  |  | 171.31d | 103d | HVAC [28.8 h] | 1,267.2 |  | CON | NOLAN | ROUGH |
| EC1650 |  | Set Heat Pump |  | 9d | 2013-02-26 | 2013-03-11 | EC1630, EC1620, EC1290 |  |  | 68.31d | 0d | Operator [72 h] | 4,320 |  | CON | NOLAN | ROUGH |
| EC1670 |  | Relocate HVAC Chiller |  | 5.4d | 2013-03-11 | 2013-03-19 | EC1650 |  |  | 68.31d | 0d | Electrician [43.2 h]; HVAC [43.2 h]; Operator [14.4 h] | 6,868.8 |  | CON | NOLAN | FINSH |
| EC1680 |  | Startup and Test HVAC |  | 1.8d | 2013-03-19 | 2013-03-20 | EC1660, EC1670, EC1490 | 2013-03-19 | 2013-03-21 | 68.31d | 0d | Operator [14.4 h] | 864 |  | CON | NOLAN | ROUGH |
| EC1770 |  | Install AC Grills and Registers |  | 5d | 2013-08-15 | 2013-08-22 | EC1740 SS+8d |  |  | 14d |  |  |  |  | CON | NOLAN | FINSH |
| EC1830 |  | Test and Balance HVAC Equipment |  | 1.8d | 2013-10-10 | 2013-10-11 | EC1820 | 2013-10-10 | 2013-10-14 | 0d |  | Operator [14.4 h] | 864 |  | CON | NOLAN | FINSH |
|  | Systems | **Plumbing and Electrical** |  |  | 2012-06-06 | 2013-03-12 |  |  |  |  |  |  |  |  |  |  |  |
| EC1440 |  | Set Mechanical and Electrical Equipment |  | 27d | 2012-06-06 | 2012-07-16 | EC1430 SS+7d |  |  | 202.91d | 0d | Operator [216 h] | 12,960 |  | CON | NOLAN | ROUGH |
| EC1510 |  | Rough-In Plumbing/Piping |  | 1.8d | 2012-07-20 | 2012-07-24 | EC1500 SS+4d |  |  | 202.91d | 41.6d | Mechanical Engineer [14.4 h]; Plumber [14.4 h] | 7,232 |  | CON | NOLAN | ROUGH |
| EC1640 |  | Install Wiring and Cable |  | 27d | 2012-09-26 | 2012-11-02 | EC1510 SS+5d, EC1620 |  |  | 161.31d | 88.6d | Electrician [216 h] | 20,520 |  | CON | NOLAN | ROUGH |
| EC1660 |  | Connect Equipment |  | 1d | 2013-03-11 | 2013-03-12 | EC1640, EC1650 |  |  | 72.71d | 4.4d |  |  |  | CON | NOLAN | ROUGH |
|  | Ex-Finish | **Exterior Finishes** |  |  | 2011-09-22 | 2012-09-26 |  |  |  |  |  |  |  |  |  |  |  |
| EC1590 |  | Close-In Phase Begins | milestone | 0d | 2012-08-30 | 2012-08-30 | EC1550 |  |  | 288.31d |  |  |  | Key MS | CON | NOLAN | CLOSE |
| EC1620 |  | Building Enclosed | milestone | 0d | 2012-09-26 | 2012-09-26 | EC1580, EC1600 |  |  | 161.31d | 0d |  |  | Key MS | CON | NOLAN | CLOSE |

Notes:
- EC1510: Expenses: Piping Material 5000

| ID | WBS | Activity | Type | Duration | Start | Finish | Predecessors | Planned start | Planned finish | Total float | Free float | Resources | Cost | Key Milestones | Department | Responsibility | Phase |
| --- | --- | --- | --- | --- | --- | --- | --- | --- | --- | --- | --- | --- | --- | --- | --- | --- | --- |
|  | Brick | **Brick** |  |  | 2011-09-22 | 2012-08-30 |  |  |  |  |  |  |  |  |  |  |  |
| EC1040 |  | Assemble Brick Samples | milestone | 0d | 2011-09-22 | 2011-09-22 | EC1030 |  |  | 344.11d | 0d |  |  | Key MS | PCH | NOLAN | PROCR |
| EC1070 |  | Review and Approve Brick Samples |  | 18d | 2011-09-22 | 2011-10-18 | EC1040 |  |  | 344.11d | 0d | Paul Kim [144 h] | 8,640 |  | ENG | NOLAN | PROCR |
| EC1180 |  | Prepare and Solicit Bids for Brick Exterior |  | 10.8d | 2011-10-18 | 2011-11-02 | EC1070 |  |  | 344.11d | 0d | Project Controls [43.2 h] | 2,376 |  | PCH | NOLAN | PROCR |
| EC1220 |  | Review Bids for Brick |  | 10.8d | 2011-11-02 | 2011-11-17 | EC1180 |  |  | 344.11d | 0d | Project Controls [43.2 h] | 2,376 |  | PCH | NOLAN | PROCR |
| EC1260 |  | Award Contract for Brick |  | 3.6d | 2011-11-17 | 2011-11-22 | EC1220 |  |  | 344.11d | 0d | Project Controls [14.4 h] | 792 |  | PCH | NOLAN | PROCR |
| EC1280 |  | Deliver Brick |  | 1d | 2011-11-22 | 2011-11-23 | EC1260 |  |  | 344.11d | 182.8d |  |  |  | PCH | NOLAN | PROCR |
| EC1550 |  | Brick Exterior Walls |  | 12.6d | 2012-08-13 | 2012-08-30 | EC1280, EC1540 |  |  | 161.31d | 0d | Laborer-Construction [100.8 h] | 10,248 |  | CON | NOLAN | CLOSE |
|  | Roof | **Roof** |  |  | 2012-08-30 | 2012-09-26 |  |  |  |  |  |  |  |  |  |  |  |
| EC1600 |  | Insulation and Built-up Roofing |  | 18d | 2012-08-30 | 2012-09-26 | EC1580 FF, EC1550 |  |  | 161.31d | 0d | Laborer-Construction [144 h] | 5,840 |  | CON | NOLAN | CLOSE |
|  | Win | **Doors and Windows** |  |  | 2012-08-20 | 2012-08-27 |  |  |  |  |  |  |  |  |  |  |  |
| EC1560 |  | Install Door and Window Frames |  | 1.8d | 2012-08-20 | 2012-08-22 | EC1550 SS+5d |  |  | 181.51d | 0d | Finish Carpenter [14.4 h] | 964.8 |  | CON | NOLAN | CLOSE |
| EC1580 |  | Install Exterior Doors and Windows |  | 3.6d | 2012-08-22 | 2012-08-27 | EC1560 | 2012-08-22 | 2012-08-28 | 181.51d | 20.2d | Finish Carpenter [28.8 h] | 1,929.6 |  | CON | NOLAN | CLOSE |
|  | Int-Finish | **Interior Finishes** |  |  | 2011-09-22 | 2013-10-17 |  |  |  |  |  |  |  |  |  |  |  |
| EC1700 |  | Drywall in Offices |  | 27d | 2013-06-26 | 2013-08-05 | EC1690, EC1620, EC1840 (other project) |  |  | 0d |  | Finish Carpenter [216 h] | 14,472 |  | CON | HARIS | FINSH |
| EC1820 |  | Touch-up and Clean-up |  | 1.8d | 2013-10-08 | 2013-10-10 | EC1800, EC1710, EC1810, EC1720 |  |  | 0d |  | Finish Carpenter [14.4 h]; Laborer-Construction [14.4 h]; Painter [4.8 h] | 1,804.8 |  | CON | HARIS | FINSH |
| EC1840 |  | Finishes Complete | milestone | 0d | 2013-10-11 | 2013-10-11 | EC1830 |  |  | 0d |  |  |  | Key MS | CON | HARIS | FINSH |
| EC1850 |  | Punch List |  | 3.6d | 2013-10-11 | 2013-10-17 | EC1840 | 2013-10-14 | 2013-10-17 | 0d |  | Painter [9.6 h]; Finish Carpenter [28.8 h]; Laborer-Construction [28.8 h] | 3,609.6 |  | CON | HARIS | FINSH |
| EC1860 |  | Building Addition Complete | milestone | 0d | 2013-10-17 | 2013-10-17 | EC1850 |  |  | 0d |  |  |  | Key MS | CON | HARIS | FINSH |
|  | Fixtures | **Plumbing and Lighting Fixtures** |  |  | 2013-08-15 | 2013-09-30 |  |  |  |  |  |  |  |  |  |  |  |
| EC1760 |  | Install Lighting Fixtures |  | 5.4d | 2013-08-15 | 2013-08-22 | EC1740 SS+8d |  |  | 13.6d |  | Electrical Engineer [43.2 h]; Electrician [43.2 h] | 8,424 |  | CON | HARIS | FINSH |
| EC1810 |  | Install Plumbing Fixtures |  | 3.6d | 2013-09-25 | 2013-09-30 | EC1790 | 2013-09-25 | 2013-10-01 | 5.4d |  | Plumber [28.8 h] | 1,584 |  | CON | HARIS | FINSH |
|  | Coverings | **Floor and Carpeting** |  |  | 2011-09-22 | 2013-09-25 |  |  |  |  |  |  |  |  |  |  |  |
| EC1060 |  | Assemble and Submit Flooring Samples | milestone | 0d | 2011-09-22 | 2011-09-22 | EC1030 |  |  | 243.51d | 0d |  |  | Key MS | PCH | HARIS | PROCR |
| EC1080 |  | Review and Approve Flooring |  | 18d | 2011-09-22 | 2011-10-18 | EC1060 |  |  | 243.51d | 0d | Paul Kim [144 h] | 8,640 |  | ENG | HARIS | PROCR |
| EC1170 |  | Prepare and Solicit Bids for Flooring |  | 18d | 2011-10-18 | 2011-11-11 | EC1080 |  |  | 243.51d | 0d | Project Controls [72 h] | 3,960 |  | PCH | HARIS | PROCR |
| EC1250 |  | Review Bids for Flooring |  | 10.8d | 2011-11-11 | 2011-11-29 | EC1170 |  |  | 243.51d | 0d | Project Controls [43.2 h] | 2,376 |  | PCH | HARIS | PROCR |
| EC1300 |  | Award Contract for Flooring |  | 3.6d | 2011-11-29 | 2011-12-02 | EC1250, EC1300 (other project) |  |  | 243.51d | 0d | Project Controls [14.4 h] | 792 |  | PCH | HARIS | PROCR |
| EC1310 |  | Fabricate and Deliver Flooring |  | 208.8d | 2011-12-05 | 2012-09-27 | EC1300 |  |  | 243.51d |  | Project Controls [835.2 h] | 45,936 |  | PCH | HARIS | PROCR |
| EC1790 |  | Install Floor and Carpeting |  | 9d | 2013-09-12 | 2013-09-25 | EC1740, EC1310, EC1760, EC1770 |  |  | 0d |  | Floor and Carpet Layer [72 h] | 3,240 |  | CON | HARIS | FINSH |

Notes:
- EC1550: Expenses: Crane 6720
- EC1600: Expenses: Crane 800
- EC1820: Corrective Actions: Room 100 / Paint on Door knob / one suspended ceiling panel broken / Wrong color carpet, color should be "gun metal gray" / Room 101 / No paint on back wall, needs to be painted / Room 204 / No shelves installed yet / Room B-7 / Crack in sink, needs to be replaced / Partitions not painted, should be / pink

| ID | WBS | Activity | Duration | Start | Finish | Predecessors | Total float | Resources | Cost | Department | Responsibility | Phase |
| --- | --- | --- | --- | --- | --- | --- | --- | --- | --- | --- | --- | --- |
|  | Carp | **Carpentry** |  | 2013-08-05 | 2013-10-08 |  |  |  |  |  |  |  |
| EC1740 |  | Install Ceiling Grid | 27d | 2013-08-05 | 2013-09-12 | EC1700 | 0d | Finish Carpenter [216 h] | 23,632 | CON | HARIS | FINSH |
| EC1800 |  | Finish Carpentry and Millwork | 9d | 2013-09-25 | 2013-10-08 | EC1790 | 0d | Finish Carpenter [72 h] | 4,824 | CON | HARIS | FINSH |
|  | Paint | **Paint** |  | 2013-07-08 | 2013-07-19 |  |  |  |  |  |  |  |
| EC1720 |  | Paint Building Interior | 9d | 2013-07-08 | 2013-07-19 | EC1700 SS+7d | 56d | Painter [72 h] | 5,040 | CON | HARIS | FINSH |

Notes:
- EC1740: Expenses: Ceiling Tile 6620; Ceiling TIle Spec Change 2540

## Activity codes

| Code | Value | Meaning |
| --- | --- | --- |
| Department | CON | Construction Department |
| Department | ENG | Engineering Department |
| Department | PCH | Purchasing Department |
| Key Milestones | Key MS | Key Milestones |
| Phase | CLOSE | Close-In Phase |
| Phase | DESGN | Design and Engineering Phase |
| Phase | FINSH | Finishes and Closeout Phase |
| Phase | FOUND | Foundation Construction Phase |
| Phase | PROCR | Procurement Phase |
| Phase | ROUGH | Rough-In Phase |
| Phase | STRUC | Structural Phase |
| Responsibility | EVANS | Tim Evans |
| Responsibility | FOLEY | Meg Foley |
| Responsibility | HARIS | Linda Haris |
| Responsibility | MILLS | Tom Mills |
| Responsibility | NOLAN | Joe Nolan |

# Haitang Corporate Park

Schedule from Primavera P6, 2010-09-01 to 2013-01-11, data date 2011-05-01, costs in USD, A marks actual dates.

## Calendars

- Trades - 5 Day Workweek: Mon-Fri 08:00-12:00, 13:00-17:00; Sat-Sun off. Exceptions (off unless hours are given): 2010-09-06, 2010-11-25, 2010-12-24, 2010-12-31, 2011-05-30, 2011-07-04, 2011-09-05, 2011-11-24, 2011-12-26, 2012-01-02, 2012-05-28, 2012-07-04, 2012-09-03, 2012-11-22, 2012-12-25, 2013-01-01.

## Resources

| Resource | Group | Rate |
| --- | --- | --- |
| Project Controls | labor | 55 |
| HVAC | labor | 44 |
| Operator | labor | 60 |
| Electrician | labor | 95 |
| Elevator Installer | labor | 105 |
| Plumber | labor | 55 |
| Finish Carpenter | labor | 67 |
| Laborer-Construction | labor | 35 |
| Paul Kim | labor | 60 |
| Painter | labor | 70 |
| Floor and Carpet Layer | labor | 45 |
| Excavator | labor | 70 |
| Ironworker | labor | 55 |
| Rough Carpenter | labor | 45 |

## Schedule

| ID | WBS | Activity | Type | Duration | Start | Finish | Predecessors | Complete | Remaining | Planned start | Planned finish | Total float | Free float | Resources | Cost | Actual cost | Department | Responsibility | Phase | Key Milestones |
| --- | --- | --- | --- | --- | --- | --- | --- | --- | --- | --- | --- | --- | --- | --- | --- | --- | --- | --- | --- | --- |
|  | D&E | **Design and Engineering** |  |  | 2010-09-01 | 2011-01-07 |  |  |  |  |  |  |  |  |  |  |  |  |  |  |
| EC1000 |  | Design Building Addition |  | 48.3d | 2010-09-01 A | 2010-11-08 A | EC1010 | 100% |  | 2010-09-01 | 2010-11-09 |  |  | Paul Kim [386.4 h] | 23,184 | 23,184 | ENG | MILLS | DESGN |  |
| EC1010 |  | Start Office Building Addition Project | milestone | 0d | 2010-09-01 A | 2010-09-01 A |  | 100% |  |  |  |  |  |  |  |  | ENG | FOLEY | DESGN | Key MS |
| EC1030 |  | Review and Approve Designs |  | 18.9d | 2010-11-08 A | 2010-12-03 A | EC1000 | 100% |  | 2010-11-08 | 2010-12-06 |  |  | Paul Kim [151.2 h] | 9,072 | 9,072 | ENG | MILLS | DESGN |  |
| EC1050 |  | Assemble Technical Data for Heat Pump |  | 6.3d | 2010-12-06 A | 2010-12-15 A | EC1030 | 100% |  | 2010-12-03 | 2010-12-13 |  |  | Paul Kim [50.4 h] | 3,024 | 3,300 | ENG | MILLS | DESGN |  |
| EC1160 |  | Review Technical Data on Heat Pumps |  | 21d | 2010-12-13 A | 2011-01-07 A | EC1050 | 100% |  | 2010-12-13 | 2011-01-13 |  |  | Paul Kim [168 h] | 10,080 | 9,720 | ENG | MILLS | DESGN |  |
|  | Found | **Foundation** |  |  | 2010-12-03 | 2011-06-02 |  |  |  |  |  |  |  |  |  |  |  |  |  |  |
| EC1090 |  | Begin Building Construction | milestone | 0d | 2010-12-03 A | 2010-12-03 A | EC1030 | 100% |  |  |  |  |  |  |  |  | CON | FOLEY | FOUND | Key MS |
| EC1100 |  | Site Preparation |  | 37.8d | 2010-12-03 A | 2011-01-24 A | EC1090 SS | 100% |  | 2010-12-03 | 2011-01-27 |  |  | Excavator [302.4 h] | 21,168 | 20,300 | CON | FOLEY | FOUND |  |
| EC1230 |  | Excavation |  | 21d | 2011-01-26 A | 2011-02-24 A | EC1100 | 100% |  | 2011-01-26 | 2011-02-23 |  |  | Excavator [168 h] | 11,760 | 10,990 | CON | FOLEY | FOUND |  |
| EC1330 |  | Install Underground Electric Conduit |  | 10.5d | 2011-02-17 A | 2011-02-25 A | EC1230 | 100% |  | 2011-03-01 | 2011-03-15 |  |  | Electrician [84 h] | 7,980 | 8,265 | CON | FOLEY | FOUND |  |
| EC1320 |  | Install Underground Water Lines |  | 10.5d | 2011-02-22 A | 2011-02-28 A | EC1230 | 100% |  | 2011-03-01 | 2011-03-15 |  |  | Plumber [84 h] | 4,620 | 5,225 | CON | FOLEY | FOUND |  |
| EC1340 |  | Form/Pour Concrete Footings |  | 21d | 2011-03-11 A | 2011-04-11 A | EC1330, EC1320 | 100% |  | 2011-03-15 | 2011-04-13 |  |  | Ironworker [168 h]; Rough Carpenter [168 h]; Operator [168 h] | 27,680 | 26,400 | CON | FOLEY | FOUND |  |
| EC1350 |  | Concrete Foundation Walls |  | 21d | 2011-04-15 A | 2011-05-12 | EC1340 | 70% | 8.5d | 2011-04-13 | 2011-05-12 | 124.27d | 0d | Ironworker [168 h]; Laborer-Construction [168 h]; Rough Carpenter [168 h] | 23,480 | 14,651.19 | CON | FOLEY | FOUND |  |
| EC1360 |  | Form and Pour Slab |  | 10.5d | 2011-05-12 | 2011-05-26 | EC1350 |  |  | 2011-05-12 | 2011-05-27 | 124.27d | 0d | Finish Carpenter [84 h]; Ironworker [84 h]; Rough Carpenter [84 h]; Laborer-Construction [84 h] | 17,368 |  | CON | FOLEY | FOUND |  |
| EC1370 |  | Backfill and Compact Walls |  | 4.2d | 2011-05-27 | 2011-06-02 | EC1360 |  |  | 2011-05-27 | 2011-06-03 | 124.27d | 0d | Excavator [33.6 h]; Finish Carpenter [33.6 h] | 4,603.2 |  | CON | FOLEY | FOUND |  |
| EC1380 |  | Foundation Phase Complete | milestone | 0d | 2011-06-02 | 2011-06-02 | EC1370 |  |  |  |  | 187.71d | 60.8d |  |  |  | CON | FOLEY | FOUND | Key MS |
|  | Structure | **Structure** |  |  | 2011-06-02 | 2011-12-07 |  |  |  |  |  |  |  |  |  |  |  |  |  |  |
| EC1390 |  | Erect Structural Frame |  | 42d | 2011-06-02 | 2011-08-01 | EC1370 |  |  | 2011-06-02 | 2011-08-02 | 124.27d | 0d | Ironworker [168 h] | 10,840 |  | CON | FOLEY | STRUC |  |
| EC1410 |  | Begin Structural Phase | milestone | 0d | 2011-08-01 | 2011-08-01 | EC1390 |  |  |  |  | 379.37d |  |  |  |  | CON | FOLEY | STRUC | Key MS |
| EC1420 |  | Floor Decking |  | 29.4d | 2011-08-01 | 2011-09-09 | EC1390 |  |  | 2011-08-01 | 2011-09-12 | 124.27d | 0d | Ironworker [235.2 h] | 14,056 |  | CON | FOLEY | STRUC |  |
| EC1430 |  | Concrete First Floor |  | 31.5d | 2011-09-09 | 2011-10-25 | EC1420 |  |  |  |  | 124.27d | 0d | Ironworker [126 h]; Laborer-Construction [126 h]; Rough Carpenter [126 h]; Finish Carpenter [126 h] | 26,652 |  | CON | FOLEY | STRUC |  |
| EC1460 |  | Erect Stairwell and Elevator Walls |  | 21d | 2011-10-25 | 2011-11-23 | EC1430 |  |  |  |  | 134.77d | 0d | Laborer-Construction [168 h] | 5,880 |  | CON | FOLEY | STRUC |  |
| EC1470 |  | Concrete Basement Slab |  | 21d | 2011-10-25 | 2011-11-23 | EC1430 |  |  |  |  | 134.77d | 10.5d | Ironworker [168 h]; Laborer-Construction [168 h]; Rough Carpenter [168 h]; Finish Carpenter [168 h] | 41,416 |  | CON | FOLEY | STRUC |  |
| EC1480 |  | Concrete Second Floor |  | 31.5d | 2011-10-25 | 2011-12-07 | EC1430 |  |  | 2011-10-25 | 2011-12-08 | 124.27d | 0d | Ironworker [126 h]; Laborer-Construction [126 h]; Rough Carpenter [126 h]; Finish Carpenter [126 h] | 26,652 |  | CON | FOLEY | STRUC |  |
| EC1540 |  | Structure Complete | milestone | 0d | 2011-12-07 | 2011-12-07 | EC1470, EC1460, EC1480 |  |  |  |  | 124.27d | 0d |  |  |  | CON | FOLEY | STRUC | Key MS |

Notes:
- EC1320: Anticipated Problems: Grading and soil conditions will slow / this operation. Check estimate. Also, Plumber availability is / limited for this work.
- EC1340: Expenses: Crane 800
- EC1350: Expenses: Crane 800
- EC1360: Expenses: Crane 400
- EC1390: Expenses: Crane 1600
- EC1420: Expenses: Crane 1120
- EC1430: Expenses: Crane 1200
- EC1470: Expenses: Crane 1600
- EC1480: Expenses: Crane 1200

| ID | WBS | Activity | Type | Duration | Start | Finish | Predecessors | Complete | Remaining | Planned start | Planned finish | Total float | Free float | Resources | Cost | Actual cost | Key Milestones | Department | Responsibility | Phase |
| --- | --- | --- | --- | --- | --- | --- | --- | --- | --- | --- | --- | --- | --- | --- | --- | --- | --- | --- | --- | --- |
|  | Mechanicals | **Mechanical/Electrical Systems** |  |  | 2011-01-07 | 2013-01-07 |  |  |  |  |  |  |  |  |  |  |  |  |  |  |
| EC1490 |  | Rough-In Phase Begins | milestone | 0d | 2011-11-03 | 2011-11-03 | EC1440 |  |  |  |  | 216.97d | 14d |  |  |  | Key MS | CON | NOLAN | ROUGH |
| EC1690 |  | Rough In Complete | milestone | 0d | 2012-09-05 | 2012-09-05 | EC1680, EC1520 |  |  |  |  | 0d |  |  |  |  | Key MS | CON | NOLAN | ROUGH |
|  | Lifts | **Elevator** |  |  | 2011-11-23 | 2012-09-11 |  |  |  |  |  |  |  |  |  |  |  |  |  |  |
| EC1520 |  | Install Elevator Rails and Equipment |  | 2.1d | 2011-11-23 | 2011-11-25 | EC1490, EC1460 |  |  | 2011-11-23 | 2011-11-28 | 202.97d |  | Elevator Installer [16.8 h] | 1,764 |  |  | CON | NOLAN | ROUGH |
| EC1710 |  | Install Elevator Cab and Finishes |  | 4.2d | 2012-09-05 | 2012-09-11 | EC1620, EC1690 |  |  |  |  | 79.8d |  | Elevator Installer [33.6 h] | 3,528 |  |  | CON | NOLAN | FINSH |
|  | HVAC | **HVAC** |  |  | 2011-01-07 | 2013-01-07 |  |  |  |  |  |  |  |  |  |  |  |  |  |  |
| EC1190 |  | Prepare and Solicit Bids for Heat Pump |  | 12.6d | 2011-01-07 A | 2011-01-24 A | EC1160 | 100% |  | 2011-01-11 | 2011-01-28 |  |  | Project Controls [50.4 h] | 2,772 | 2,530 |  | PCH | NOLAN | PROCR |
| EC1240 |  | Review Bids for Heat Pump |  | 8.4d | 2011-01-28 A | 2011-02-08 A | EC1190 | 100% |  | 2011-01-28 | 2011-02-09 |  |  | Project Controls [33.6 h] | 1,848 | 1,540 |  | PCH | NOLAN | PROCR |
| EC1290 |  | Fabricate and Deliver Heat Pump and Controls |  | 369.6d | 2011-02-22 A | 2012-08-09 | EC1270 | 14% | 333.27d | 2011-02-15 | 2012-07-26 | 0d |  | Project Controls [1478.4 h] | 81,312 | 11,000 |  | PCH | NOLAN | PROCR |
| EC1270 |  | Award Contract for Heat Pump |  | 6d | 2011-03-02 A | 2011-03-14 A | EC1240 | 100% |  | 2011-03-01 | 2011-03-08 |  |  |  |  |  |  | PCH | NOLAN | PROCR |
| EC1500 |  | Install HVAC Ducts |  | 21d | 2011-11-03 | 2011-12-02 | EC1440 |  |  | 2011-11-03 | 2011-12-05 | 174.97d | 0d | HVAC [168 h] | 7,392 |  |  | CON | NOLAN | ROUGH |
| EC1630 |  | Insulate Ducts |  | 4.2d | 2012-01-26 | 2012-02-01 | EC1500, EC1620 |  |  |  |  | 135.77d |  | HVAC [33.6 h] | 1,478.4 |  |  | CON | NOLAN | ROUGH |
| EC1650 |  | Set Heat Pump |  | 10.5d | 2012-08-09 | 2012-08-23 | EC1290, EC1620, EC1630 |  |  |  |  | 0d |  | Operator [84 h] | 5,040 |  |  | CON | NOLAN | ROUGH |
| EC1670 |  | Relocate HVAC Chiller |  | 6.3d | 2012-08-23 | 2012-09-03 | EC1650 |  |  | 2012-08-23 | 2012-09-04 | 0d |  | Electrician [50.4 h]; HVAC [50.4 h]; Operator [16.8 h] | 8,013.6 |  |  | CON | NOLAN | FINSH |
| EC1680 |  | Startup and Test HVAC |  | 2.1d | 2012-09-03 | 2012-09-05 | EC1490, EC1670, EC1660 |  |  | 2012-09-04 | 2012-09-06 | 0d |  | Operator [16.8 h] | 2,016 |  |  | CON | NOLAN | ROUGH |
| EC1770 |  | Install AC Grills and Registers |  | 5d | 2012-10-30 | 2012-11-06 | EC1740 SS+8d |  |  |  |  | 18.5d |  |  |  |  |  | CON | NOLAN | FINSH |
| EC1830 |  | Test and Balance HVAC Equipment |  | 2.1d | 2013-01-03 | 2013-01-07 | EC1820 |  |  |  |  | 0d |  | Operator [16.8 h] | 1,008 |  |  | CON | NOLAN | FINSH |
|  | Systems | **Plumbing and Electrical** |  |  | 2011-09-20 | 2012-08-24 |  |  |  |  |  |  |  |  |  |  |  |  |  |  |
| EC1440 |  | Set Mechanical and Electrical Equipment |  | 31.5d | 2011-09-20 | 2011-11-03 | EC1430 SS+7d |  |  |  |  | 174.97d | 0d | Operator [252 h] | 15,120 |  |  | CON | NOLAN | ROUGH |
| EC1510 |  | Rough-In Plumbing/Piping |  | 2.1d | 2011-11-09 | 2011-11-11 | EC1500 SS+4d |  |  |  |  | 175.47d | 51.2d | Mechanical Engineer [16.8 h]; Plumber [16.8 h] | 7,604 |  |  | CON | NOLAN | ROUGH |
| EC1640 |  | Install Wiring and Cable |  | 31.5d | 2012-01-26 | 2012-03-09 | EC1620, EC1510 SS+5d |  |  |  |  | 124.27d | 118.97d | Electrician [252 h] | 23,940 |  |  | CON | NOLAN | ROUGH |
| EC1660 |  | Connect Equipment |  | 1d | 2012-08-23 | 2012-08-24 | EC1640, EC1650 |  |  |  |  | 5.3d | 0d |  |  |  |  | CON | NOLAN | ROUGH |
|  | Ex-Finish | **Exterior Finishes** |  |  | 2010-12-03 | 2012-01-26 |  |  |  |  |  |  |  |  |  |  |  |  |  |  |
| EC1590 |  | Close-In Phase Begins | milestone | 0d | 2011-12-28 | 2011-12-28 | EC1550 |  |  |  |  | 272.27d |  |  |  |  | Key MS | CON | NOLAN | CLOSE |
| EC1620 |  | Building Enclosed | milestone | 0d | 2012-01-26 | 2012-01-26 | EC1580, EC1600 |  |  |  |  | 124.27d | 0d |  |  |  | Key MS | CON | NOLAN | CLOSE |

Notes:
- EC1650: Steps: (New step)
- EC1510: Expenses: Piping Material 5000

| ID | WBS | Activity | Type | Duration | Start | Finish | Predecessors | Complete | Remaining | Planned start | Planned finish | Total float | Free float | Resources | Cost | Actual cost | Key Milestones | Department | Responsibility | Phase |
| --- | --- | --- | --- | --- | --- | --- | --- | --- | --- | --- | --- | --- | --- | --- | --- | --- | --- | --- | --- | --- |
|  | Brick | **Brick** |  |  | 2010-12-03 | 2011-12-28 |  |  |  |  |  |  |  |  |  |  |  |  |  |  |
| EC1040 |  | Assemble Brick Samples | milestone | 0d | 2010-12-03 A | 2010-12-03 A | EC1030 | 100% |  |  |  |  |  |  |  |  | Key MS | PCH | NOLAN | PROCR |
| EC1070 |  | Review and Approve Brick Samples |  | 21d | 2010-12-03 A | 2010-12-30 A | EC1040 | 100% |  | 2010-12-03 | 2011-01-05 |  |  | Paul Kim [168 h] | 10,080 | 9,600 |  | ENG | NOLAN | PROCR |
| EC1180 |  | Prepare and Solicit Bids for Brick Exterior |  | 12.6d | 2011-01-05 A | 2011-01-24 A | EC1070 | 100% |  | 2011-01-03 | 2011-01-19 |  |  | Project Controls [50.4 h] | 2,772 | 2,475 |  | PCH | NOLAN | PROCR |
| EC1220 |  | Review Bids for Brick |  | 12.6d | 2011-01-19 A | 2011-02-07 A | EC1180 | 100% |  |  |  |  |  | Project Controls [50.4 h] | 2,772 | 2,475 |  | PCH | NOLAN | PROCR |
| EC1280 |  | Deliver Brick |  | 1d | 2011-02-14 A | 2011-02-16 A | EC1260 | 100% |  | 2011-03-07 | 2011-03-08 |  |  |  |  |  |  | PCH | NOLAN | PROCR |
| EC1260 |  | Award Contract for Brick |  | 4.2d | 2011-02-23 A | 2011-03-08 A | EC1220 | 100% |  | 2011-03-01 | 2011-03-07 |  |  | Project Controls [16.8 h] | 924 | 1,045 |  | PCH | NOLAN | PROCR |
| EC1550 |  | Brick Exterior Walls |  | 14.7d | 2011-12-07 | 2011-12-28 | EC1280, EC1540 |  |  | 2011-12-07 | 2011-12-29 | 124.27d | 0d | Laborer-Construction [117.6 h] | 10,836 |  |  | CON | NOLAN | CLOSE |
|  | Roof | **Roof** |  |  | 2011-12-28 | 2012-01-26 |  |  |  |  |  |  |  |  |  |  |  |  |  |  |
| EC1600 |  | Insulation and Built-up Roofing |  | 21d | 2011-12-28 | 2012-01-26 | EC1580 FF, EC1550 |  |  | 2011-12-28 | 2012-01-27 | 124.27d | 0d | Laborer-Construction [168 h] | 6,680 |  |  | CON | NOLAN | CLOSE |
|  | Win | **Doors and Windows** |  |  | 2011-12-14 | 2011-12-22 |  |  |  |  |  |  |  |  |  |  |  |  |  |  |
| EC1560 |  | Install Door and Window Frames |  | 2.1d | 2011-12-14 | 2011-12-16 | EC1550 SS+5d |  |  |  |  | 148.67d | 0d | Finish Carpenter [16.8 h] | 1,125.6 |  |  | CON | NOLAN | CLOSE |
| EC1580 |  | Install Exterior Doors and Windows |  | 4.2d | 2011-12-16 | 2011-12-22 | EC1560 |  |  |  |  | 148.67d | 24.4d | Finish Carpenter [33.6 h] | 2,251.2 |  |  | CON | NOLAN | CLOSE |
|  | Int-Finish | **Interior Finishes** |  |  | 2010-12-03 | 2013-01-11 |  |  |  |  |  |  |  |  |  |  |  |  |  |  |
| EC1700 |  | Drywall in Offices |  | 31.5d | 2012-09-05 | 2012-10-18 | EC1620, EC1690 |  |  |  |  | 0d |  | Finish Carpenter [252 h] | 16,884 |  |  | CON | HARIS | FINSH |
| EC1820 |  | Touch-up and Clean-up |  | 2.1d | 2013-01-01 | 2013-01-03 | EC1810, EC1800, EC1710, EC1720 |  |  | 2013-01-02 | 2013-01-04 | 0d |  | Finish Carpenter [16.8 h]; Laborer-Construction [16.8 h]; Painter [5.6 h] | 4,211.2 |  |  | CON | HARIS | FINSH |
| EC1840 |  | Finishes Complete | milestone | 0d | 2013-01-07 | 2013-01-07 | EC1830 |  |  |  |  | 0d |  |  |  |  | Key MS | CON | HARIS | FINSH |
| EC1850 |  | Punch List |  | 4.2d | 2013-01-07 | 2013-01-11 | EC1840 |  |  |  |  | 0d |  | Painter [11.2 h]; Finish Carpenter [33.6 h]; Laborer-Construction [33.6 h] | 4,211.2 |  |  | CON | HARIS | FINSH |
| EC1860 |  | Building Addition Complete | milestone | 0d | 2013-01-11 | 2013-01-11 | EC1850 |  |  |  |  | 0d |  |  |  |  | Key MS | CON | HARIS | FINSH |
|  | Fixtures | **Plumbing and Lighting Fixtures** |  |  | 2012-10-30 | 2012-12-21 |  |  |  |  |  |  |  |  |  |  |  |  |  |  |
| EC1760 |  | Install Lighting Fixtures |  | 6.3d | 2012-10-30 | 2012-11-07 | EC1740 SS+8d |  |  | 2012-10-30 | 2012-11-08 | 17.2d |  | Electrical Engineer [50.4 h]; Electrician [50.4 h] | 9,828 |  |  | CON | HARIS | FINSH |
| EC1810 |  | Install Plumbing Fixtures |  | 4.2d | 2012-12-17 | 2012-12-21 | EC1790 |  |  |  |  | 6.3d |  | Plumber [33.6 h] | 1,848 |  |  | CON | HARIS | FINSH |
|  | Coverings | **Floor and Carpeting** |  |  | 2010-12-03 | 2012-12-17 |  |  |  |  |  |  |  |  |  |  |  |  |  |  |
| EC1060 |  | Assemble and Submit Flooring Samples | milestone | 0d | 2010-12-03 A | 2010-12-03 A | EC1030 | 100% |  |  |  |  |  |  |  |  | Key MS | PCH | HARIS | PROCR |
| EC1080 |  | Review and Approve Flooring |  | 21d | 2010-12-03 A | 2011-01-10 A | EC1060 | 100% |  | 2010-12-03 | 2011-01-05 |  |  | Paul Kim [168 h] | 10,080 | 10,800 |  | ENG | HARIS | PROCR |
| EC1170 |  | Prepare and Solicit Bids for Flooring |  | 21d | 2011-01-03 A | 2011-02-08 A | EC1080 | 100% |  | 2011-01-03 | 2011-02-01 |  |  | Project Controls [84 h] | 4,620 | 5,500 |  | PCH | HARIS | PROCR |
| EC1250 |  | Review Bids for Flooring |  | 12.6d | 2011-02-02 A | 2011-02-18 A | EC1170 | 100% |  | 2011-03-01 | 2011-03-17 |  |  | Project Controls [50.4 h] | 2,772 | 2,640 |  | PCH | HARIS | PROCR |
| EC1300 |  | Award Contract for Flooring |  | 4.2d | 2011-02-18 A | 2011-02-25 A | EC1250 | 100% |  | 2011-03-17 | 2011-03-23 |  |  | Project Controls [16.8 h] | 924 | 880 |  | PCH | HARIS | PROCR |
| EC1310 |  | Fabricate and Deliver Flooring |  | 243.6d | 2011-03-01 A | 2012-02-03 | EC1300 | 23% | 199.6d | 2011-03-01 | 2012-02-13 | 215.57d |  | Project Controls [974.4 h] | 53,592 | 10,175 |  | PCH | HARIS | PROCR |
| EC1790 |  | Install Floor and Carpeting |  | 10.5d | 2012-12-03 | 2012-12-17 | EC1760, EC1770, EC1740, EC1310 |  |  |  |  | 0d |  | Floor and Carpet Layer [84 h] | 3,780 |  |  | CON | HARIS | FINSH |

Notes:
- EC1550: Expenses: Crane 6720
- EC1600: Expenses: Crane 800
- EC1820: Corrective Actions: Room 100 / Paint on Door knob / one suspended ceiling panel broken / Wrong color carpet, color should be "gun metal gray" / Room 101 / No paint on back wall, needs to be painted / Room 204 / No shelves installed yet / Room B-7 / Crack in sink, needs to be replaced / Partitions not painted, should be / pink

| ID | WBS | Activity | Duration | Start | Finish | Predecessors | Planned start | Planned finish | Total float | Resources | Cost | Department | Responsibility | Phase |
| --- | --- | --- | --- | --- | --- | --- | --- | --- | --- | --- | --- | --- | --- | --- |
|  | Carp | **Carpentry** |  | 2012-10-18 | 2013-01-01 |  |  |  |  |  |  |  |  |  |
| EC1740 |  | Install Ceiling Grid | 31.5d | 2012-10-18 | 2012-12-03 | EC1700 | 2012-10-18 | 2012-12-04 | 0d | Finish Carpenter [252 h] | 26,044 | CON | HARIS | FINSH |
| EC1800 |  | Finish Carpentry and Millwork | 10.5d | 2012-12-17 | 2013-01-01 | EC1790 | 2012-12-17 | 2013-01-03 | 0d | Finish Carpenter [84 h] | 5,628 | CON | HARIS | FINSH |
|  | Paint | **Paint** |  | 2012-09-14 | 2012-09-28 |  |  |  |  |  |  |  |  |  |
| EC1720 |  | Paint Building Interior | 10.5d | 2012-09-14 | 2012-09-28 | EC1700 SS+7d |  |  | 66.5d | Painter [84 h] | 5,880 | CON | HARIS | FINSH |

Notes:
- EC1740: Expenses: Ceiling Tile 6620; Ceiling TIle Spec Change 2540

## Activity codes

| Code | Value | Meaning |
| --- | --- | --- |
| Department | CON | Construction Department |
| Department | ENG | Engineering Department |
| Department | PCH | Purchasing Department |
| Key Milestones | Key MS | Key Milestones |
| Phase | CLOSE | Close-In Phase |
| Phase | DESGN | Design and Engineering Phase |
| Phase | FINSH | Finishes and Closeout Phase |
| Phase | FOUND | Foundation Construction Phase |
| Phase | PROCR | Procurement Phase |
| Phase | ROUGH | Rough-In Phase |
| Phase | STRUC | Structural Phase |
| Responsibility | FOLEY | Meg Foley |
| Responsibility | HARIS | Linda Haris |
| Responsibility | MILLS | Tom Mills |
| Responsibility | NOLAN | Joe Nolan |

## Issues

| Issue | Status | Raised | Notes |
| --- | --- | --- | --- |
| qsdfsaf | IS_Open | 2010-08-25 | &nbsp;uyiuyi <A href="http://www.google.com">uyiuyiuiu</A> |
